# CR117 - BRIGHT HILL INTERCHANGE STATION AND TUNNEL - Baseline Rev B

Schedule from Primavera P6, 2022-03-30 to 2029-12-31, data date 2022-03-30, costs in USD.

## Calendars

- LTA_7-day work week with no holiday: Mon-Sun 08:00-16:00.

## Resources

| Resource | Group | Rate | Notes |
| --- | --- | --- | --- |
| CR117_Cost Loading | material | 1 | ï»¿ |
| Strutting Team | labor |  |  |
| Excavation Team | labor |  | ï»¿ |
| CR117 WEIGHTAGE | equipment |  |  |
| GW (C&S) | labor |  |  |
| RC Team | labor |  |  |
| Lifting Team | labor |  |  |
| DFE/King Post Team | labor |  |  |
| Tunnel Crew Team | labor |  |  |
| GW (M&E) | labor |  |  |
| SBP Team | labor |  |  |
| Fissure Grouting Team | labor |  |  |
| GW (Archi) | labor |  |  |
| GW (P&S) | labor |  |  |
| D Wall Team | labor |  |  |

## Schedule

| ID | WBS | Activity | Type | Duration | Start | Finish | Predecessors | Total float | Free float | Constraint | Text 1 | Text 2 | Check 2 (Original Duration) | Cr117 BSC Stn | Check | PHASE | KEY DATES / MILESTONES | AREA | SUB-PHASE | SUB AREA | LOCATION | LOCATION DETAILS | MAJOR WORKS | SUB-LOCATION DETAILS | CR-117 - FOT | LINE | Cr117 Handover | Text 3 |
| --- | --- | --- | --- | --- | --- | --- | --- | --- | --- | --- | --- | --- | --- | --- | --- | --- | --- | --- | --- | --- | --- | --- | --- | --- | --- | --- | --- | --- |
|  | 1 | **GENERAL** |  |  | 2022-03-30 | 2029-12-31 |  |  |  |  |  |  |  |  |  |  |  |  |  |  |  |  |  |  |  |  |  |  |
| 17_GN10000 |  | Contract Commencement Date | milestone | 0d | 2022-03-30 | 2022-03-30 |  | 0d |  | start on 2022-03-30 | 1 | 1 | UDF_G3 | 1 | UDF_G3 | GN | MS | GENRL | GEN | GENL | GEN | GN | GN | GEN | N/A | CR |  |  |
|  | 2 | **SCHEDULE B1 - KEY DATES** |  |  | 2022-09-30 | 2029-12-31 |  |  |  |  |  |  |  |  |  |  |  |  |  |  |  |  |  |  |  |  |  |  |
|  | 1 | **DESIGN SUBMISSION** |  |  | 2022-09-30 | 2025-01-30 |  |  |  |  |  |  |  |  |  |  |  |  |  |  |  |  |  |  |  |  |  |  |
| 17_GN10010 |  | Prelim Design Submission | milestone | 0d | 2022-09-30 | 2022-09-30 | 17_DS10040 | 0d |  | finish on 2022-09-30 |  |  | UDF_G3 |  | UDF_G3 | DS | KD | GENRL | PLD | GENL | GEN | GN | DS | GEN | N/A | CR |  |  |
| 17_GN10020 |  | Pre-Final Design Submission | milestone | 0d | 2023-02-28 | 2023-02-28 | 17_DS10080 | 0d | 79d | finish on 2023-02-28 |  |  | UDF_G3 |  | UDF_G3 | DS | KD | GENRL | PFD | GENL | GEN | GN | DS | GEN | N/A | CR |  |  |
| 17_GN10030 |  | Pre-Final Design CCSM Submission | milestone | 0d | 2023-05-30 | 2023-05-30 | 17_DS10450 | 0d | 2407d | finish on 2023-05-30 |  |  | UDF_G3 |  | UDF_G3 | DS | KD | GENRL | PFD | GENL | GEN | GN | DS | GEN | N/A | CR |  |  |
| 17_GN10040 |  | Final Design Submission | milestone | 0d | 2023-08-30 | 2023-08-30 | 17_DS10120 | 0d | 2315d | finish on 2023-08-30 |  |  | UDF_G3 |  | UDF_G3 | DS | KD | GENRL | FND | GENL | GEN | GN | DS | GEN | N/A | CR |  |  |
| 17_GN10050 |  | Final Design CCSM/SEM Submission | milestone | 0d | 2023-11-30 | 2023-11-30 | 17_DS10470 | 0d |  | finish on 2023-11-30 |  |  | UDF_G3 |  | UDF_G3 | DS | KD | GENRL | FND | GENL | GEN | GN | DS | GEN | N/A | CR |  |  |
| 17_GN10060 |  | Contract Drawings & Specifications Delivery | milestone | 0d | 2024-01-30 | 2024-01-30 | 17_DS10160 | 0d | 366d | finish on 2024-01-30 |  |  | UDF_G3 |  | UDF_G3 | DS | KD | GENRL | GEN | GENL | GEN | GN | DS | GEN | N/A | CR |  |  |
| 17_GN10070 |  | Updated Final Design CCSM/SEM Submission | milestone | 0d | 2025-01-30 | 2025-01-30 | 17_DS10490, 17_GN10060 | 0d | 1796d | finish on 2025-01-30 |  |  | UDF_G3 |  | UDF_G3 | DS | KD | GENRL | FND | GENL | GEN | GN | DS | GEN | N/A | CR |  |  |
|  | 2 | **SECTIONAL COMPLETION** |  |  | 2027-04-30 | 2028-06-30 |  |  |  |  |  |  |  |  |  |  |  |  |  |  |  |  |  |  |  |  |  |  |
| 17_GN10080 |  | CR117 handover Temporary Staging Area (TSA) to CR150 | milestone | 0d | 2027-04-30 | 2027-04-30 | 17_CN11230, 17_CN10780, 17_CN10760, 17_CN10770, 17_CN11420 | 0d | 976d | finish on 2027-04-30 | 1 |  | UDF_G3 |  | UDF_G3 | GN | KD | GENRL | GEN | GENL | GEN | GN | GN | GEN | N/A | CR | 1 |  |
| 17_GN10090 |  | BSC - Tunnels between CR117, N109A (Incl. Tunnel Access to CR150) | milestone | 0d | 2027-05-31 | 2027-05-31 | 17_CN11300, 17_CN11090, 17_CN11430, 17_CN11230, 17_CN10750 | 0d |  | finish on 2027-05-31 |  |  | UDF_G3 |  | UDF_G3 | GN | KD | GENRL | GEN | GENL | GEN | GN | GN | GEN | N/A | CR |  |  |
| 17_GN10100 |  | BSC - Tunnels between CR117 and CRL Phase 2 Contract | milestone | 0d | 2027-05-31 | 2027-05-31 | 17_CN16020, 17_CN15740, 17_CN10130, 17_CN18510, 17_CN15010, 17_CN16110, 17_CN16200 | 0d | 30d | finish on 2027-05-31 |  | 2 | UDF_G3 |  | UDF_G3 | GN | KD | GENRL | GEN | GENL | GEN | GN | GN | GEN | N/A | CR |  |  |
| 17_GN10110 |  | BSC - Engineering Link | milestone | 0d | 2027-05-31 | 2027-05-31 | 17_CN16110, 17_CN16200, 17_CN16290, 17_CN19660 | 0d | 30d | finish on 2027-05-31 |  |  | UDF_G3 |  | UDF_G3 | GN | KD | GENRL | GEN | GENL | GEN | GN | GN | GEN | N/A | CR |  |  |
| 17_GN10120 |  | BSC - Station | milestone | 0d | 2027-06-30 | 2027-06-30 | 17_CN18650, 17_CN18510, 17_CN13900, 17_CN13590, 17_CN13480, 17_CN13800, 17_CN13330, 17_CN13220 | 0d |  | finish on 2027-06-30 |  |  | UDF_G3 | 1 | UDF_G3 | GN | KD | GENRL | GEN | GENL | GEN | GN | GN | GEN | N/A | CR |  | 1 |
| 17_GN10130 |  | BSC - Entrance 8 | milestone | 0d | 2027-06-30 | 2027-06-30 | 17_CN14200, 17_CN16930, 17_CN14190 | 0d |  | finish on 2027-06-30 |  |  | UDF_G3 |  | UDF_G3 | GN | KD | GENRL | GEN | GENL | GEN | GN | GN | GEN | N/A | CR |  |  |
| 17_GN10140 |  | BSC - Entrance 5 | milestone | 0d | 2027-06-30 | 2027-06-30 | 17_CN14210, 17_CN14240, 17_CN16940 | 0d |  | finish on 2027-06-30 |  |  | UDF_G3 |  | UDF_G3 | GN | KD | GENRL | GEN | GENL | GEN | GN | GN | GEN | N/A | CR |  |  |
| 17_GN10150 |  | BSC - Entrance 6 | milestone | 0d | 2027-06-30 | 2027-06-30 | 17_CN14290, 17_CN14300, 17_CN16950 | 0d |  | finish on 2027-06-30 |  |  | UDF_G3 |  | UDF_G3 | GN | KD | GENRL | GEN | GENL | GEN | GN | GN | GEN | N/A | CR |  |  |
| 17_GN10160 |  | BSC - Entrance 7 | milestone | 0d | 2027-06-30 | 2027-06-30 | 17_CN14370, 17_CN16960, 17_CN14380 | 0d |  | finish on 2027-06-30 |  |  | UDF_G3 |  | UDF_G3 | GN | KD | GENRL | GEN | GENL | GEN | GN | GN | GEN | N/A | CR |  |  |
| 17_GN10170 |  | Cat A Room Deg 1 Finishes | milestone | 0d | 2027-07-31 | 2027-07-31 | 17_CN16440 | 0d | 884d | finish on 2027-07-31 |  |  | UDF_G3 |  | UDF_G3 | GN | KD | GENRL | GEN | GENL | GEN | GN | GN | GEN | N/A | CR |  |  |
| 17_GN10180 |  | CR117 handover SWC storage areas to SWC (excl CR150) | milestone | 0d | 2028-06-30 | 2028-06-30 | 17_CN10800 | 0d | 549d | finish on 2028-06-30 |  |  | UDF_G3 |  | UDF_G3 | GN | KD | GENRL | GEN | GENL | GEN | GN | GN | GEN | N/A | CR |  |  |
|  | 3 | **INTERFACE KEY DATES WITH N109A** |  |  | 2026-03-30 | 2026-07-30 |  |  |  |  |  |  |  |  |  |  |  |  |  |  |  |  |  |  |  |  |  |  |
| 17_GN10190 |  | N109A allow access to CR117 for tunnel breakthrouh | milestone | 0d | 2026-03-30 | 2026-03-30 | 17_CN11660 | 0d |  | finish on 2026-03-30 |  |  | UDF_G3 |  | UDF_G3 | GN | KD | GENRL | GEN | GENL | GEN | GN | GN | GEN | N/A | CR |  |  |
| 17_GN10200 |  | CR117 hand back interface area to N109A after tunnel breakthrough | milestone | 0d | 2026-07-30 | 2026-07-30 | 17_CN11680 | 0d | 1250d | finish on 2026-07-30 |  |  | UDF_G3 |  | UDF_G3 | GN | KD | GENRL | GEN | GENL | GEN | GN | GN | GEN | N/A | CR |  |  |

| ID | WBS | Activity | Type | Duration | Start | Finish | Predecessors | Total float | Free float | Constraint | Check 2 (Original Duration) | Check | PHASE | KEY DATES / MILESTONES | AREA | SUB-PHASE | SUB AREA | LOCATION | LOCATION DETAILS | MAJOR WORKS | SUB-LOCATION DETAILS | CR-117 - FOT | LINE | user_text1 |
| --- | --- | --- | --- | --- | --- | --- | --- | --- | --- | --- | --- | --- | --- | --- | --- | --- | --- | --- | --- | --- | --- | --- | --- | --- |
|  | 4 | **INTERFACE WITH CRL2 CONTRACTOR** |  |  | 2028-01-03 | 2028-01-03 |  |  |  |  |  |  |  |  |  |  |  |  |  |  |  |  |  |  |
| 17_GN10210 |  | CR117 Handover Interface Worksite Areas F1,F2,F3 and F4 To CRL2 Contractor For Tunnel Breakthrough And TBM Retrieval | milestone | 0d | 2028-01-03 | 2028-01-03 | 17_CN15740, 17_CN10130, 17_CN10140 | 0d | 728d | finish on 2028-01-03 | UDF_G3 | UDF_G3 | GN | KD | GENRL | GEN | GENL | GEN | GN | GN | GEN | N/A | CR |  |
|  | 5 | **INTERFACE KEY DATES WITH SYSTEM-WIDE CONTRACTORS** |  |  | 2028-12-11 | 2029-06-30 |  |  |  |  |  |  |  |  |  |  |  |  |  |  |  |  |  |  |
| 17_GN10220 |  | CR150 hand back tunnel shaft access area to CR117 for commencement of shaft closure | milestone | 0d | 2028-12-11 | 2028-12-11 |  | 0d |  | finish on 2028-12-11 | UDF_G3 | UDF_G3 | GN | KD | GENRL | GEN | GENL | GEN | GN | GN | GEN | N/A | CR |  |
| 17_GN10230 |  | CR117 complete closing of tunnel access shafts | milestone | 0d | 2029-01-22 | 2029-01-22 | 17_CN11240 | 0d | 343d | finish on 2029-01-22 | UDF_G3 | UDF_G3 | GN | KD | GENRL | GEN | GENL | GEN | GN | GN | GEN | N/A | CR |  |
| 17_GN10240 |  | SWC (excl CR150) hand back SWC storage areas to CR117 for reinstatement | milestone | 0d | 2029-06-30 | 2029-06-30 |  | 0d |  | finish on 2029-06-30 | UDF_G3 | UDF_G3 | GN | KD | GENRL | GEN | GENL | GEN | GN | GN | GEN | N/A | CR | 1 |
| 17_GN10250 |  | CR150 hand back TSA to CR117 for reinstatement | milestone | 0d | 2029-06-30 | 2029-06-30 |  | 0d |  | finish on 2029-06-30 | UDF_G3 | UDF_G3 | GN | KD | GENRL | GEN | GENL | GEN | GN | GN | GEN | N/A | CR | 1 |
|  | 6 | **WATER TURN-ON** |  |  | 2028-11-30 | 2028-11-30 |  |  |  |  |  |  |  |  |  |  |  |  |  |  |  |  |  |  |
| 17_GN10260 |  | Water on | milestone | 0d | 2028-11-30 | 2028-11-30 | 17_CN17090, 17_CN17680 | 0d | 197d | finish on 2028-11-30 | UDF_G3 | UDF_G3 | GN | KD | GENRL | GEN | GENL | GEN | GN | GN | GEN | N/A | CR |  |
|  | 7 | **COMPLETION OF THE WHOLE OF THE WORKS** |  |  | 2029-12-31 | 2029-12-31 |  |  |  |  |  |  |  |  |  |  |  |  |  |  |  |  |  |  |
| 17_GN10270 |  | Completion of the whole of the Works | milestone | 0d | 2029-12-31 | 2029-12-31 | 17_CN10810, 17_GN10990, 17_GN11000, 17_CN18760, 17_GN11040, 17_CN10220, 17_CN18830, 17_CN18840, 17_PC10100, 17_PC10110, 17_GN11250, 17_GN11270, 17_GN11280, 17_CN18950, 17_CN12970 | 0d |  | finish on 2029-12-31 | UDF_G3 | UDF_G3 | GN | KD | GENRL | GEN | GENL | GEN | GN | GN | GEN | N/A | CR | 1 |
|  | 3 | **SCHEDULE B2 - CUT-OFF DATES FOR EXCHANGE OF INFORMATION DURING DESIGN INTERFACE** |  |  | 2022-08-30 | 2024-11-30 |  |  |  |  |  |  |  |  |  |  |  |  |  |  |  |  |  |  |
|  | 1 | **EXCHANGE OF INFORMATION - DESIGN SUBMISSION** |  |  | 2022-08-30 | 2023-07-31 |  |  |  |  |  |  |  |  |  |  |  |  |  |  |  |  |  |  |
| 17_GN10280 |  | Cut-off Date - Exchange of Information for Design Submission - Preliminary Design | milestone | 0d | 2022-08-30 | 2022-08-30 |  | 0d | 2680d | finish on 2022-08-30 | UDF_G3 | UDF_G3 | DS | KD | GENRL | PLD | GENL | GEN | GN | DS | GEN | N/A | CR |  |
| 17_GN10290 |  | Cut-off Date - Exchange of Information for Design Submission - Pre-final Design | milestone | 0d | 2023-01-30 | 2023-01-30 |  | 0d | 2527d | finish on 2023-01-30 | UDF_G3 | UDF_G3 | DS | KD | GENRL | PFD | GENL | GEN | GN | DS | GEN | N/A | CR |  |
| 17_GN10300 |  | Cut-off Date - Exchange of Information for Design Submission - Final Design | milestone | 0d | 2023-07-31 | 2023-07-31 |  | 0d | 2345d | finish on 2023-07-31 | UDF_G3 | UDF_G3 | DS | KD | GENRL | FND | GENL | GEN | GN | DS | GEN | N/A | CR |  |
|  | 2 | **EXCHANGE OF INFORMATION - CCSM SUBMISSION** |  |  | 2023-03-30 | 2024-11-30 |  |  |  |  |  |  |  |  |  |  |  |  |  |  |  |  |  |  |
| 17_GN10310 |  | Cut-off Date - Exchange of Information for CCSM & CCSM/SEM Submission - Pre-Final Design | milestone | 0d | 2023-03-30 | 2023-03-30 |  | 0d | 2468d | finish on 2023-03-30 | UDF_G3 | UDF_G3 | DS | KD | GENRL | PFD | GENL | GEN | GN | DS | GEN | N/A | CR |  |
| 17_GN10320 |  | Cut-off Date - Exchange of Information for CCSM & CCSM/SEM Submission - Final Design | milestone | 0d | 2023-09-30 | 2023-09-30 |  | 0d | 2284d | finish on 2023-09-30 | UDF_G3 | UDF_G3 | DS | KD | GENRL | FND | GENL | GEN | GN | DS | GEN | N/A | CR |  |
| 17_GN10330 |  | Cut-off Date - Exchange of Information for CCSM & CCSM/SEM Submission - Updated Final Design | milestone | 0d | 2024-11-30 | 2024-11-30 |  | 0d | 1857d | finish on 2024-11-30 | UDF_G3 | UDF_G3 | DS | KD | GENRL | FND | GENL | GEN | GN | DS | GEN | N/A | CR |  |
|  | 5 | **SCHEDULE B4 - DEGREE FINISH DATES** |  |  | 2027-07-30 | 2029-06-15 |  |  |  |  |  |  |  |  |  |  |  |  |  |  |  |  |  |  |
|  | 1 | **CATEGORY ROOMS** |  |  | 2027-07-30 | 2028-11-15 |  |  |  |  |  |  |  |  |  |  |  |  |  |  |  |  |  |  |
| 17_GN10400 |  | Category A Rooms - Degree 1 Finish | milestone | 0d | 2027-07-30 | 2027-07-30 | 17_CN16440 | 0d | 885d | finish on 2027-07-30 | UDF_G3 | UDF_G3 | GN | KD | GENRL | GEN | GENL | GEN | GN | GN | GEN | N/A | CR |  |
| 17_GN10410 |  | Category B Rooms - Degree 1 Finish | milestone | 0d | 2027-07-30 | 2027-07-30 | 17_CN16520 | 0d | 885d | finish on 2027-07-30 | UDF_G3 | UDF_G3 | GN | KD | GENRL | GEN | GENL | GEN | GN | GN | GEN | N/A | CR |  |
| 17_GN10420 |  | Category C Rooms - Degree 1 Finish | milestone | 0d | 2027-08-30 | 2027-08-30 | 17_CN16620, 17_CN16630 | 0d | 854d | finish on 2027-08-30 | UDF_G3 | UDF_G3 | GN | KD | GENRL | GEN | GENL | GEN | GN | GN | GEN | N/A | CR |  |
| 17_GN10430 |  | Category D Rooms - Degree 1 Finish | milestone | 0d | 2027-08-30 | 2027-08-30 | 17_CN16710 | 0d | 854d | finish on 2027-08-30 | UDF_G3 | UDF_G3 | GN | KD | GENRL | GEN | GENL | GEN | GN | GN | GEN | N/A | CR |  |
| 17_GN10440 |  | Category A Rooms - Degree 2 Finish | milestone | 0d | 2027-12-30 | 2027-12-30 | 17_CN16460 | 0d | 732d | finish on 2027-12-30 | UDF_G3 | UDF_G3 | GN | KD | GENRL | GEN | GENL | GEN | GN | GN | GEN | N/A | CR |  |
| 17_GN10450 |  | Category B Rooms - Degree 2 Finish | milestone | 0d | 2027-12-30 | 2027-12-30 | 17_CN16550 | 0d | 732d | finish on 2027-12-30 | UDF_G3 | UDF_G3 | GN | KD | GENRL | GEN | GENL | GEN | GN | GN | GEN | N/A | CR |  |
| 17_GN10460 |  | Category C Rooms - Degree 2 Finish | milestone | 0d | 2028-02-28 | 2028-02-28 | 17_CN16660 | 0d | 672d | finish on 2028-02-28 | UDF_G3 | UDF_G3 | GN | KD | GENRL | GEN | GENL | GEN | GN | GN | GEN | N/A | CR |  |
| 17_GN10470 |  | Category D Rooms - Degree 2 Finish | milestone | 0d | 2028-03-30 | 2028-03-30 | 17_CN16770 | 0d | 641d | finish on 2028-03-30 | UDF_G3 | UDF_G3 | GN | KD | GENRL | GEN | GENL | GEN | GN | GN | GEN | N/A | CR |  |
| 17_GN10480 |  | Category A Rooms - Degree 3 Finish | milestone | 0d | 2028-08-30 | 2028-08-30 | 17_CN16490 | 0d | 488d | finish on 2028-08-30 | UDF_G3 | UDF_G3 | GN | KD | GENRL | GEN | GENL | GEN | GN | GN | GEN | N/A | CR |  |
| 17_GN10490 |  | Category B Rooms - Degree 3 Finish | milestone | 0d | 2028-09-30 | 2028-09-30 | 17_CN16580, 17_CN16590 | 0d | 457d | finish on 2028-09-30 | UDF_G3 | UDF_G3 | GN | KD | GENRL | GEN | GENL | GEN | GN | GN | GEN | N/A | CR |  |
| 17_GN10510 |  | Category D Rooms - Degree 3 Finish | milestone | 0d | 2028-09-30 | 2028-09-30 | 17_CN16800 | 0d | 457d | finish on 2028-09-30 | UDF_G3 | UDF_G3 | GN | KD | GENRL | GEN | GENL | GEN | GN | GN | GEN | N/A | CR |  |
| 17_GN10500 |  | Category C Rooms - Degree 3 Finish | milestone | 0d | 2028-11-15 | 2028-11-15 | 17_CN16690, 17_CN16700 | 0d | 411d | finish on 2028-11-15 | UDF_G3 | UDF_G3 | GN | KD | GENRL | GEN | GENL | GEN | GN | GN | GEN | N/A | CR |  |

| ID | WBS | Activity | Type | Duration | Start | Finish | Predecessors | Total float | Free float | Constraint | Resources | Cost | Check 2 (Original Duration) | Check | PHASE | KEY DATES / MILESTONES | AREA | SUB-PHASE | SUB AREA | LOCATION | LOCATION DETAILS | MAJOR WORKS | SUB-LOCATION DETAILS | CR-117 - FOT | LINE | BOQ Item |
| --- | --- | --- | --- | --- | --- | --- | --- | --- | --- | --- | --- | --- | --- | --- | --- | --- | --- | --- | --- | --- | --- | --- | --- | --- | --- | --- |
|  | 2 | **COMMUNICATIONS & ELECTRICAL** |  |  | 2028-11-15 | 2029-02-28 |  |  |  |  |  |  |  |  |  |  |  |  |  |  |  |  |  |  |  |  |
| 17_GN10520 |  | 22kV & Main LV Power Turn On | milestone | 0d | 2028-11-15 | 2028-11-15 | 17_CN17340 | 0d | 411d | finish on 2028-11-15 |  |  | UDF_G3 | UDF_G3 | GN | KD | GENRL | GEN | GENL | GEN | GN | GN | GEN | N/A | CR |  |
| 17_GN10530 |  | Completion of Communication Backbone Network & Telephone System(CBN) | milestone | 0d | 2028-12-30 | 2028-12-30 | 17_CN17510 | 0d | 366d | finish on 2028-12-30 |  |  | UDF_G3 | UDF_G3 | GN | KD | GENRL | GEN | GENL | GEN | GN | GN | GEN | N/A | CR |  |
| 17_GN10550 |  | Completion of Radio System | milestone | 0d | 2029-01-15 | 2029-01-15 | 17_CN17510, 17_CN17680 | 0d | 350d | finish on 2029-01-15 |  |  | UDF_G3 | UDF_G3 | GN | KD | GENRL | GEN | GENL | GEN | GN | GN | GEN | N/A | CR |  |
| 17_GN10540 |  | DC Power Turn on | milestone | 0d | 2029-02-28 | 2029-02-28 | 17_CN17340 | 0d | 306d | finish on 2029-02-28 |  |  | UDF_G3 | UDF_G3 | GN | KD | GENRL | GEN | GENL | GEN | GN | GN | GEN | N/A | CR |  |
|  | 3 | **TOP COMMENCEMENT** |  |  | 2029-06-15 | 2029-06-15 |  |  |  |  |  |  |  |  |  |  |  |  |  |  |  |  |  |  |  |  |
| 17_GN10560 |  | Commencement of TFP/TOP Insepction | milestone | 0d | 2029-06-15 | 2029-06-15 | 17_ST10000, 17_CN18310, 17_CN18270, 17_CN18710, 17_CN18260, 17_GN10260 | 0d | 199d | finish on 2029-06-15 |  |  | UDF_G3 | UDF_G3 | GN | KD | GENRL | GEN | GENL | GEN | GN | GN | GEN | N/A | CR |  |
|  | 6 | **UTILITIES DIVERSION (PS Appendix Z - Addendum No.2)** |  |  | 2022-03-31 | 2026-12-22 |  |  |  |  |  |  |  |  |  |  |  |  |  |  |  |  |  |  |  |  |
|  | 1 | **Appendix Z, Table 1 - Schedule of Utilities undertaken by the Authority** |  |  | 2022-03-31 | 2022-10-31 |  |  |  |  |  |  |  |  |  |  |  |  |  |  |  |  |  |  |  |  |
|  | 1 | **ELECTRICAL (SP POWERGRID LTD)** |  |  | 2022-03-31 | 2022-10-31 |  |  |  |  |  |  |  |  |  |  |  |  |  |  |  |  |  |  |  |  |
| 17_GN10570 |  | Diversion of Electrical Cables HV 66KV (Bright Hill Rd) - To support during ERSS |  | 215d | 2022-03-31 | 2022-10-31 |  | 0d | 66d | finish on 2022-10-31 | CR117_Cost Loading; CR117 WEIGHTAGE [12522.7 h] |  | UDF_G3 | UDF_G3 | GN |  | GENRL | ENA | GENL | GEN | GN | UD | GEN | N/A | CR | By Others |
| 17_GN10580 |  | Diversion of Electrical Cables HV 66KV - To protect |  | 215d | 2022-03-31 | 2022-10-31 |  | 0d |  | finish on 2022-10-31 | CR117_Cost Loading; CR117 WEIGHTAGE [12522.7 h] |  | UDF_G3 | UDF_G3 | GN |  | GENRL | ENA | GENL | GEN | GN | UD | GEN | N/A | CR | By Others |
| 17_GN10590 |  | Diversion of Electrical Cables HV 22KV - 14x2/2x2/5x2 (Bright Hill Rd, Blk 410, Stn T211) - To support during ERSS |  | 215d | 2022-03-31 | 2022-10-31 |  | 0d |  | finish on 2022-10-31 | CR117_Cost Loading; CR117 WEIGHTAGE [12522.7 h] |  | UDF_G3 | UDF_G3 | GN |  | GENRL | ENA | GENL | GEN | GN | UD | GEN | N/A | CR | By Others |
| 17_GN10600 |  | Diversion of Electrical Cables HV 22KV - To protect |  | 215d | 2022-03-31 | 2022-10-31 |  | 0d |  | finish on 2022-10-31 | CR117_Cost Loading; CR117 WEIGHTAGE [12522.7 h] |  | UDF_G3 | UDF_G3 | GN |  | GENRL | ENA | GENL | GEN | GN | UD | GEN | N/A | CR | By Others |
|  | 2 | **GAS (POWERGAS LTD)** |  |  | 2022-03-31 | 2022-10-31 |  |  |  |  |  |  |  |  |  |  |  |  |  |  |  |  |  |  |  |  |
| 17_GN10610 |  | Diversion of Gas Mains - 250LP, 180LPB (Bright Hill Rd) - To support during ERSS |  | 215d | 2022-03-31 | 2022-10-31 |  | 0d | 2618d | finish on 2022-10-31 | CR117_Cost Loading [436005]; CR117 WEIGHTAGE [12522.7 h] | 436,005 | UDF_G3 | UDF_G3 | GN |  | GENRL | ENA | GENL | GEN | GN | UD | GEN | 09 | CR | By Others |
| 17_GN10620 |  | Diversion of Gas Mains - 180LPB - To protect |  | 215d | 2022-03-31 | 2022-10-31 |  | 0d | 2618d | finish on 2022-10-31 | CR117_Cost Loading [436006]; CR117 WEIGHTAGE [12522.7 h] | 436,006 | UDF_G3 | UDF_G3 | GN |  | GENRL | ENA | GENL | GEN | GN | UD | GEN | 09 | CR | By Others |
|  | 3 | **TELECOMMUNICATIONS (SP TELECOM)** |  |  | 2022-03-31 | 2022-10-31 |  |  |  |  |  |  |  |  |  |  |  |  |  |  |  |  |  |  |  |  |
| 17_GN10630 |  | Diversion of Telecoms Cables - 6 ways - To support during ERSS |  | 215d | 2022-03-31 | 2022-10-31 |  | 0d | 2618d | finish on 2022-10-31 | CR117_Cost Loading [436006]; CR117 WEIGHTAGE [12522.7 h] | 436,006 | UDF_G3 | UDF_G3 | GN |  | GENRL | ENA | GENL | GEN | GN | UD | GEN | 09 | CR | By Others |
|  | 4 | **TELECOMMUNICATIONS (SINGTEL LTD AND NETLINK TRUST)** |  |  | 2022-03-31 | 2022-10-31 |  |  |  |  |  |  |  |  |  |  |  |  |  |  |  |  |  |  |  |  |
| 17_GN10640 |  | Diversion of Telecoms Cables - 42 ways (Bright Hill Rd) - To support during ERSS |  | 215d | 2022-03-31 | 2022-10-31 |  | 0d | 2618d | finish on 2022-10-31 | CR117_Cost Loading [436006]; CR117 WEIGHTAGE [12522.7 h] | 436,006 | UDF_G3 | UDF_G3 | GN |  | GENRL | ENA | GENL | GEN | GN | UD | GEN | 09 | CR | By Others |
| 17_GN10650 |  | Diversion of Telecoms Cables - 2/12/24/30/36 ways - To protect |  | 215d | 2022-03-31 | 2022-10-31 |  | 0d | 2618d | finish on 2022-10-31 | CR117_Cost Loading [436006]; CR117 WEIGHTAGE [12522.7 h] | 436,006 | UDF_G3 | UDF_G3 | GN |  | GENRL | ENA | GENL | GEN | GN | UD | GEN | 09 | CR | By Others |
|  | 5 | **TELECOMMUNICATIONS (STARHUB)** |  |  | 2022-03-31 | 2022-10-31 |  |  |  |  |  |  |  |  |  |  |  |  |  |  |  |  |  |  |  |  |
| 17_GN10660 |  | Diversion of Telecoms Cables - 4 ways (Bright Hill Rd) - To support during ERSS |  | 215d | 2022-03-31 | 2022-10-31 |  | 0d | 2618d | finish on 2022-10-31 | CR117_Cost Loading [436006]; CR117 WEIGHTAGE [12522.7 h] | 436,006 | UDF_G3 | UDF_G3 | GN |  | GENRL | ENA | GENL | GEN | GN | UD | GEN | 09 | CR | By Others |

| ID | WBS | Activity | Duration | Start | Finish | Predecessors | Total float | Free float | Constraint | Resources | Cost | BOQ Item | Check 2 (Original Duration) | Check | PHASE | AREA | SUB-PHASE | SUB AREA | LOCATION | LOCATION DETAILS | MAJOR WORKS | SUB-LOCATION DETAILS | CR-117 - FOT | LINE | Cr117 Handover | Utility Programme |
| --- | --- | --- | --- | --- | --- | --- | --- | --- | --- | --- | --- | --- | --- | --- | --- | --- | --- | --- | --- | --- | --- | --- | --- | --- | --- | --- |
|  | 6 | **TELECOMMUNICATIONS (M1)** |  | 2022-03-31 | 2022-10-31 |  |  |  |  |  |  |  |  |  |  |  |  |  |  |  |  |  |  |  |  |  |
| 17_GN10670 |  | Diversion of Telecoms Cables - 2 ways (Bright Hill Rd) - To support during ERSS | 215d | 2022-03-31 | 2022-10-31 |  | 0d | 2618d | finish on 2022-10-31 | CR117_Cost Loading [436006]; CR117 WEIGHTAGE [12522.7 h] | 436,006 | By Others | UDF_G3 | UDF_G3 | GN | GENRL | ENA | GENL | GEN | GN | UD | GEN | 09 | CR |  |  |
|  | 7 | **SEWER (PUBLIC UTILITIES BOARD)** |  | 2022-03-31 | 2022-10-31 |  |  |  |  |  |  |  |  |  |  |  |  |  |  |  |  |  |  |  |  |  |
| 17_GN10680 |  | Diversion of Sewer - 800mm dia (Bright Hill Rd) - To support during ERSS | 215d | 2022-03-31 | 2022-10-31 |  | 0d |  | finish on 2022-10-31 | CR117_Cost Loading [436005]; CR117 WEIGHTAGE [12522.7 h] | 436,005 | By Others | UDF_G3 | UDF_G3 | GN | GENRL | ENA | GENL | GEN | GN | UD | GEN | 09 | CR |  |  |
|  | 8 | **WATER (PUBLIC UTILITIES BOARD)** |  | 2022-03-31 | 2022-10-31 |  |  |  |  |  |  |  |  |  |  |  |  |  |  |  |  |  |  |  |  |  |
| 17_GN10690 |  | Diversion of Water Main - 300mm dia (Stn T211 Zone L) - To support during ERSS | 215d | 2022-03-31 | 2022-10-31 |  | 0d | 66d | finish on 2022-10-31 | CR117_Cost Loading [436005]; CR117 WEIGHTAGE [12522.7 h] | 436,005 | By Others | UDF_G3 | UDF_G3 | GN | GENRL | ENA | GENL | GEN | GN | UD | GEN | 09 | CR |  |  |
| 17_GN10700 |  | Diversion of Water Main - 800mm dia (Stn T211 Zone L) - To support during ERSS | 215d | 2022-03-31 | 2022-10-31 |  | 0d | 66d | finish on 2022-10-31 | CR117_Cost Loading [436005]; CR117 WEIGHTAGE [12522.7 h] | 436,005 | By Others | UDF_G3 | UDF_G3 | GN | GENRL | ENA | GENL | GEN | GN | UD | GEN | 09 | CR |  |  |
|  | 2 | **Appendix Z, Table 2 - Schedule of Utilities to be coordinated by the Contractor** |  | 2026-09-30 | 2026-12-22 |  |  |  |  |  |  |  |  |  |  |  |  |  |  |  |  |  |  |  |  |  |
|  | 1 | **ELECTRICAL (SP POWERGRID LTD)** |  | 2026-09-30 | 2026-12-22 |  |  |  |  |  |  |  |  |  |  |  |  |  |  |  |  |  |  |  |  |  |
| 17_GN10710 |  | Diversion of Electrical Cables HV 66KV - To coordinate reinstatement (12 Weeks) | 84d | 2026-09-30 | 2026-12-22 | 17_CN10710, 17_CN12560 | 40d | 0d |  | CR117_Cost Loading; CR117 WEIGHTAGE [5260.08 h] |  | A.09 |  | UDF_G3 | GN | GENRL | ENA | GENL | GEN | GN | UD | GEN | N/A | CR | 1 |  |
| 17_GN10720 |  | Diversion of Electrical Cables HV 22KV - To coordinate reinstatement (12 Weeks) | 84d | 2026-09-30 | 2026-12-22 | 17_CN10710, 17_CN12560 | 40d | 0d |  | CR117_Cost Loading; CR117 WEIGHTAGE [5260.08 h] |  | A.09 |  | UDF_G3 | GN | GENRL | ENA | GENL | GEN | GN | UD | GEN | N/A | CR | 1 |  |
|  | 2 | **GAS (POWERGAS LTD)** |  | 2026-09-30 | 2026-12-22 |  |  |  |  |  |  |  |  |  |  |  |  |  |  |  |  |  |  |  |  |  |
| 17_GN10730 |  | Diversion of Gas Mains - 250LP, 180LPB - To coordinate reinstatement (12 Weeks) | 84d | 2026-09-30 | 2026-12-22 | 17_CN10710, 17_CN12560 | 40d | 0d |  | CR117_Cost Loading; CR117 WEIGHTAGE [5260.08 h] |  | A.09 |  | UDF_G3 | GN | GENRL | ENA | GENL | GEN | GN | UD | GEN | N/A | CR | 1 |  |
|  | 3 | **TELECOMMUNICATIONS (SP TELECOM)** |  | 2026-09-30 | 2026-12-22 |  |  |  |  |  |  |  |  |  |  |  |  |  |  |  |  |  |  |  |  |  |
| 17_GN10740 |  | Diversion of Telecoms Cables - 6 ways - To coordinate reinstatement (12 Weeks) | 84d | 2026-09-30 | 2026-12-22 | 17_CN10710, 17_CN12560 | 40d | 0d |  | CR117_Cost Loading; CR117 WEIGHTAGE [5260.08 h] |  | A.09 |  | UDF_G3 | GN | GENRL | ENA | GENL | GEN | GN | UD | GEN | N/A | CR | 1 |  |
|  | 4 | **TELECOMMUNICATIONS (SINGTEL LTD AND NETLINK TRUST)** |  | 2026-09-30 | 2026-12-22 |  |  |  |  |  |  |  |  |  |  |  |  |  |  |  |  |  |  |  |  |  |
| 17_GN10750 |  | Diversion of Telecoms Cables - multi ways - To coordinate reinstatement (12 Weeks) | 84d | 2026-09-30 | 2026-12-22 | 17_CN10710, 17_CN12560 | 40d | 0d |  | CR117_Cost Loading; CR117 WEIGHTAGE [5260.08 h] |  | A.09 |  | UDF_G3 | GN | GENRL | ENA | GENL | GEN | GN | UD | GEN | N/A | CR | 1 |  |
|  | 5 | **TELECOMMUNICATIONS (STARHUB)** |  | 2026-09-30 | 2026-12-22 |  |  |  |  |  |  |  |  |  |  |  |  |  |  |  |  |  |  |  |  |  |
| 17_GN10760 |  | Diversion of Telecoms Cables - 4&6 ways - To coordinate reinstatement (12 Weeks) | 84d | 2026-09-30 | 2026-12-22 | 17_CN10710, 17_CN12560 | 40d | 0d |  | CR117_Cost Loading; CR117 WEIGHTAGE [5260.08 h] |  | A.09 |  | UDF_G3 | GN | GENRL | ENA | GENL | GEN | GN | UD | GEN | N/A | CR | 1 |  |
|  | 6 | **TELECOMMUNICATIONS (M1)** |  | 2026-09-30 | 2026-12-22 |  |  |  |  |  |  |  |  |  |  |  |  |  |  |  |  |  |  |  |  |  |
| 17_GN10770 |  | Diversion of Telecoms Cables - 2 ways - To coordinate reinstatement (12 Weeks) | 84d | 2026-09-30 | 2026-12-22 | 17_CN10710, 17_CN12560 | 40d | 0d |  | CR117_Cost Loading; CR117 WEIGHTAGE [5260.08 h] |  | A.09 |  | UDF_G3 | GN | GENRL | ENA | GENL | GEN | GN | UD | GEN | N/A | CR | 1 |  |
|  | 3 | **Appendix Z, Table 3 - Schedule of Utilities to be undertaken by the Contractor** |  | 2022-11-01 | 2026-10-28 |  |  |  |  |  |  |  |  |  |  |  |  |  |  |  |  |  |  |  |  |  |
|  | 1 | **ELECTRICAL (SP POWERGRID LTD)** |  | 2023-07-14 | 2023-10-16 |  |  |  |  |  |  |  |  |  |  |  |  |  |  |  |  |  |  |  |  |  |
| 17_GN11010 |  | Diversion of Electrical Cables HV 22KV (West C&C South Zone P & H, L= 30m) & Prepare Diversion corridor for 200m | 45d | 2023-07-14 | 2023-08-27 | 17_DS11160, 17_CN14520 | 45d | 0d |  | CR117 WEIGHTAGE [90.56 h]; CR117_Cost Loading [90] | 90 |  |  |  | GN | GENRL | ENA | GENL | GEN | GN | UD | GEN |  | CR |  | 1 |
| 17_GN10780 |  | Diversion of Electrical Cables HV 22KV (West C&C South Zone P & H, L=200m) - To divert temporarily before ERSS | 50d | 2023-08-28 | 2023-10-16 | 17_CN15290, 17_GN11010, 17_CN14520 | 45d | 4d |  | CR117_Cost Loading [243352]; CR117 WEIGHTAGE [9595.76 h] | 243,352 | A.09 |  | UDF_G3 | GN | GENRL | ENA | GENL | GEN | GN | UD | GEN | 09 | CR |  | 1 |

| ID | WBS | Activity | Duration | Start | Finish | Predecessors | Total float | Free float | Resources | Cost | BOQ Item | Check | Utility Programme | PHASE | AREA | SUB-PHASE | SUB AREA | LOCATION | LOCATION DETAILS | MAJOR WORKS | SUB-LOCATION DETAILS | CR-117 - FOT | LINE | Text 2 |
| --- | --- | --- | --- | --- | --- | --- | --- | --- | --- | --- | --- | --- | --- | --- | --- | --- | --- | --- | --- | --- | --- | --- | --- | --- |
|  | 2 | **GAS (POWERGAS LTD)** |  | 2023-08-01 | 2026-10-07 |  |  |  |  |  |  |  |  |  |  |  |  |  |  |  |  |  |  |  |
| 17_GN10790 |  | Diversion of Gas Mains - 180LPB (West C&C South Zone P & H, L=100m) - To divert temporarily before ERSS | 48d | 2023-08-01 | 2023-09-17 | 17_CN15290 | 74d | 33d | CR117_Cost Loading [243352]; CR117 WEIGHTAGE [9595.76 h] | 243,352 | A.09 | UDF_G3 | 1 | GN | GENRL | ENA | GENL | GEN | GN | UD | GEN | 09 | CR |  |
| 17_GN10800 |  | Diversion of Gas Mains - 180LPB & M150 (West C&C Zone P & H, L=110m) - To divert permanently after backfill | 90d | 2026-07-10 | 2026-10-07 | 17_CN16110, 17_CN16020, 17_CN15700 | 86d | 0d | CR117_Cost Loading [243352]; CR117 WEIGHTAGE [9595.76 h] | 243,352 | A.09 | UDF_G3 | 1 | GN | GENRL | ENA | GENL | GEN | GN | UD | GEN | 09 | CR | 2 |
|  | 3 | **TELECOMMUNICATIONS (SINGTEL LTD AND NETLINK TRUST)** |  | 2023-04-13 | 2023-10-29 |  |  |  |  |  |  |  |  |  |  |  |  |  |  |  |  |  |  |  |
| 17_GN10830 |  | Diversion of Telecoms Cables - 18 ways (West C&C South of Zone H, L=40m) - To divert temporarily before ERSS | 90d | 2023-04-13 | 2023-07-11 | 17_DS11160 | 51d | 2d | CR117_Cost Loading [243352]; CR117 WEIGHTAGE [9595.76 h] | 243,352 | A.09 | UDF_G3 | 1 | GN | GENRL | ENA | GENL | GEN | GN | UD | GEN | 09 | CR |  |
| 17_GN10820 |  | Diversion of Telecoms Cables - 3 ways (West C&C via Zone H, L=70m) - To Overhang Support Over Zone H | 80d | 2023-07-14 | 2023-10-01 | 17_GN10830, 17_CN10300, 17_CN14520 | 49d | 0d | CR117_Cost Loading [243352]; CR117 WEIGHTAGE [9595.76 h] | 243,352 | A.09 | UDF_G3 | 1 | GN | GENRL | ENA | GENL | GEN | GN | UD | GEN | 09 | CR |  |
| 17_GN10840 |  | Diversion of Telecoms Cables - 16 ways (West C&C South of Zone P & H, L=130m) - To divert temporarily before ERSS | 90d | 2023-08-01 | 2023-10-29 | 17_CN15290, 17_GN10830 | 46d | 5d | CR117_Cost Loading [243352]; CR117 WEIGHTAGE [9595.76 h] | 243,352 | A.09 | UDF_G3 | 1 | GN | GENRL | ENA | GENL | GEN | GN | UD | GEN | 09 | CR |  |
| 17_GN10810 |  | Diversion of Telecoms Cables - 2 ways (West C&C North of Zone H, L=20m) - To divert temporarily before ERSS | 18d | 2023-10-02 | 2023-10-19 | 17_GN10820 | 49d | 8d | CR117_Cost Loading [243352]; CR117 WEIGHTAGE [9595.76 h] | 243,352 | A.09 | UDF_G3 | 1 | GN | GENRL | ENA | GENL | GEN | GN | UD | GEN | 09 | CR |  |
|  | 4 | **WATER (PUBLIC UTILITIES BOARD)** |  | 2023-08-01 | 2026-10-28 |  |  |  |  |  |  |  |  |  |  |  |  |  |  |  |  |  |  |  |
| 17_GN10850 |  | Diversion of Water Main - 300mm dia (West C&C South Zone P & H, L=120m) - To divert temporarily before ERSS W8 & W9 | 60d | 2023-08-01 | 2023-09-29 | 17_GN10700, 17_CN15290 | 76d | 35d | CR117_Cost Loading [243352]; CR117 WEIGHTAGE [9595.76 h] | 243,352 | A.09 | UDF_G3 | 1 | GN | GENRL | ENA | GENL | GEN | GN | UD | GEN | 09 | CR |  |
| 17_GN10900 |  | Diversion of Water Main - 300mm dia (at T211, L=30m) - To divert permanently after backfill | 90d | 2026-03-20 | 2026-06-17 | 17_CN16200, 17_CN16290, 17_CN15010 | 228d | 133d | CR117_Cost Loading [38725]; CR117 WEIGHTAGE [9595.76 h] | 38,725 | A.09 | UDF_G3 | 1 | GN | GENRL | ENA | GENL | GEN | GN | UD | GEN | 03 | CR |  |
| 17_GN10910 |  | Diversion of Water Main - 300mm dia (at T211, L=40m) - To divert permanently after backfill | 90d | 2026-03-20 | 2026-06-17 | 17_CN16200, 17_CN16290, 17_CN15010 | 228d | 133d | CR117_Cost Loading [38725]; CR117 WEIGHTAGE [9595.76 h] | 38,725 | A.09 | UDF_G3 | 1 | GN | GENRL | ENA | GENL | GEN | GN | UD | GEN | 03 | CR |  |
| 17_GN10880 |  | Diversion of Water Main - 300m m dia (Zone DSin Ming Dr, L=90m) - To divert permanently after backfill | 90d | 2026-04-10 | 2026-07-08 | 17_CN13530 | 207d | 112d | CR117_Cost Loading [32271]; CR117 WEIGHTAGE [7990 h] | 32,271 | A.09 | UDF_G3 | 1 | GN | GENRL | ENA | GENL | GEN | GN | UD | GEN | 03 | CR |  |
| 17_GN10920 |  | Diversion of Water Main - 300mm dia (at Blk 405 Car Park access, L=70m) - To divert permanently after backfill | 90d | 2026-04-12 | 2026-07-10 | 17_CN13850, 17_CN13980 | 205d | 110d | CR117_Cost Loading [29044]; CR117 WEIGHTAGE [7187.04 h] | 29,044 | A.09 | UDF_G3 | 1 | GN | GENRL | ENA | GENL | GEN | GN | UD | GEN | 03 | CR |  |
| 17_GN10930 |  | Diversion of Water Main - 300mm dia (at Blk 405 Car Park access, L=90m) - To divert permanently after backfill | 90d | 2026-04-12 | 2026-07-10 | 17_CN13850, 17_CN13980 | 205d | 110d | CR117_Cost Loading [29044]; CR117 WEIGHTAGE [7187.04 h] | 29,044 | A.09 | UDF_G3 | 1 | GN | GENRL | ENA | GENL | GEN | GN | UD | GEN | 03 | CR |  |
| 17_GN10870 |  | Diversion of Water Main - 300mm dia (West C&C Zone P & H, L=110m) - To divert permanently after backfill | 90d | 2026-06-22 | 2026-09-19 | 17_CN16020, 17_CN16110 | 134d | 39d | CR117_Cost Loading [38725]; CR117 WEIGHTAGE [9595.76 h] | 38,725 | A.09 | UDF_G3 | 1 | GN | GENRL | ENA | GENL | GEN | GN | UD | GEN | 03 | CR |  |
| 17_GN10860 |  | Diversion of Water Main - 800mm dia (Stn and East C&C all Zone, L=610m) - To divert permanently after backfill | 90d | 2026-07-31 | 2026-10-28 | 17_CN13270, 17_CN13370, 17_CN13530, 17_CN13640, 17_CN13850, 17_CN13980 | 95d | 0d | CR117_Cost Loading [29044]; CR117 WEIGHTAGE [7187.04 h] | 29,044 | A.09 | UDF_G3 | 1 | GN | GENRL | ENA | GENL | GEN | GN | UD | GEN | 03 | CR |  |
| 17_GN10890 |  | Diversion of Water Main - 300mm dia (Stn and East C&C all Zone, L=940m) - To divert permanently after backfill | 90d | 2026-07-31 | 2026-10-28 | 17_CN13270, 17_CN13370, 17_CN13530, 17_CN13640, 17_CN13850, 17_CN13980 | 95d | 54d | CR117_Cost Loading [29044]; CR117 WEIGHTAGE [7187.04 h] | 29,044 | A.09 | UDF_G3 | 1 | GN | GENRL | ENA | GENL | GEN | GN | UD | GEN | 03 | CR |  |
|  | 5 | **SEWER (PUBLIC UTILITIES BOARD)** |  | 2022-11-01 | 2026-09-19 |  |  |  |  |  |  |  |  |  |  |  |  |  |  |  |  |  |  |  |
| 17_GN10950 |  | Diversion of Sewer - 400mm dia (West C&C Beside Zone J, L=94m) - To Obtain BCA Approval for connection & 2 MH works | 90d | 2022-11-01 | 2023-01-29 | 17_GN10680 | 308d | 0d | CR117_Cost Loading [243352]; CR117 WEIGHTAGE [9595.76 h] | 243,352 | A.09 | UDF_G3 | 1 | GN | GENRL | ENA | GENL | GEN | GN | UD | GEN | 09 | CR |  |
| 17_GN10940 |  | Diversion of Sewer - 400mm dia (West C&C Beside Zone J, L=94m) - To Construct 2 MHs & Pipe Jack Connection | 90d | 2023-01-30 | 2023-04-29 | 17_GN10680, 17_GN10950 | 308d | 69d | CR117_Cost Loading [243352]; CR117 WEIGHTAGE [9595.76 h] | 243,352 | A.09 | UDF_G3 | 1 | GN | GENRL | ENA | GENL | GEN | GN | UD | GEN | 09 | CR |  |
| 17_GN10980 |  | Diversion of Sewer - 400mm dia (West C&C via Zone J & K, L=77m) - To divert permanently after backfill | 90d | 2026-04-07 | 2026-07-05 | 17_CN16200, 17_CN16290, 17_CN10100 | 210d | 124d | CR117_Cost Loading [38725]; CR117 WEIGHTAGE [9595.76 h] | 38,725 | A.09 | UDF_G3 | 1 | GN | GENRL | ENA | GENL | GEN | GN | UD | GEN | 03 | CR |  |
| 17_GN10960 |  | Diversion of Sewer - 400mm dia (West C&C South of Zone J, L=14m) - To divert permanently after backfill | 90d | 2026-06-22 | 2026-09-19 | 17_CN16020, 17_CN16110, 17_CN16200, 17_CN16290, 17_CN10100 | 134d | 48d | CR117_Cost Loading [38725]; CR117 WEIGHTAGE [9595.76 h] | 38,725 | A.09 | UDF_G3 | 1 | GN | GENRL | ENA | GENL | GEN | GN | UD | GEN | 03 | CR |  |
| 17_GN10970 |  | Diversion of Sewer - 400mm dia (West C&C South of Zone J, L=62m) - To divert permanently after backfill | 90d | 2026-06-22 | 2026-09-19 | 17_CN16020, 17_CN16110, 17_CN16200, 17_CN16290, 17_CN10100 | 134d | 48d | CR117_Cost Loading [38725]; CR117 WEIGHTAGE [9595.76 h] | 38,725 | A.09 | UDF_G3 | 1 | GN | GENRL | ENA | GENL | GEN | GN | UD | GEN | 03 | CR |  |

| ID | WBS | Activity | Duration | Start | Finish | Predecessors | Total float | Free float | Constraint | Resources | Cost | BOQ Item | PHASE | AREA | SUB-PHASE | SUB AREA | LOCATION | LOCATION DETAILS | MAJOR WORKS | SUB-LOCATION DETAILS | CR-117 - FOT | LINE | Check | Text 1 | Text 3 | Text 2 | user_text1 | Cr117 BSC Stn | Cr117 Handover |
| --- | --- | --- | --- | --- | --- | --- | --- | --- | --- | --- | --- | --- | --- | --- | --- | --- | --- | --- | --- | --- | --- | --- | --- | --- | --- | --- | --- | --- | --- |
|  | 7 | **GENERAL AND PRELIMINARIES** |  | 2022-03-30 | 2029-12-30 |  |  |  |  |  |  |  |  |  |  |  |  |  |  |  |  |  |  |  |  |  |  |  |  |
|  | 1 | **PRELIMINARIES** |  | 2022-03-30 | 2029-12-30 |  |  |  |  |  |  |  |  |  |  |  |  |  |  |  |  |  |  |  |  |  |  |  |  |
| 17_GN10990 |  | General Project Management | 2833d | 2022-03-30 | 2029-12-30 | 17_GN10000 | 1d |  |  | CR117_Cost Loading [54157335]; CR117 WEIGHTAGE [568927 h] | 54,157,335 | A.Var | GN | GENRL | GEN | GENL | GEN | GN | PR | GEN | 14 | CR |  |  |  |  |  |  |  |
| 17_GN11000 |  | General Environmental, Safety and Security | 2833d | 2022-03-30 | 2029-12-30 | 17_GN10000 | 1d |  |  | CR117_Cost Loading [7876305]; CR117 WEIGHTAGE [229726 h] | 7,876,305 | A.02 | GN | GENRL | GEN | GENL | GEN | GN | PR | GEN | 02 | CR | UDF_G3 |  |  |  |  |  |  |
| 17_GN11020 |  | General Mobilisation | 75d | 2022-03-30 | 2022-06-12 | 17_GN10000 | 201d | 0d |  | CR117_Cost Loading; CR117 WEIGHTAGE [3466.64 h] |  | A.Var | GN | GENRL | GEN | GENL | GEN | GN | PR | GEN | N/A | CR | UDF_G3 |  |  |  |  |  |  |
| 17_GN11250 |  | Progress Photograph Submission Monthly | 2833d | 2022-03-30 | 2029-12-30 | 17_GN10000 | 1d |  |  | CR117_Cost Loading [25800]; CR117 WEIGHTAGE [182050 h] | 25,800 | A.Var | GN | GENRL | GEN | GENL | GEN | GN | PR | GEN | 16 | CR | UDF_G3 |  |  |  |  |  |  |
| 17_GN11260 |  | Progress Update and BIM Implementaion to CCSM Development Stage | 640d | 2022-03-30 | 2023-12-29 | 17_GN10000 | 3d | 0d |  | CR117_Cost Loading [1494300]; CR117 WEIGHTAGE [644.24 h] | 1,494,300 |  | GN | GENRL | GEN | GENL | GEN | GN | PR | GEN | 30 | CR | UDF_G3 |  |  |  |  |  |  |
| 17_GN11280 |  | Press and Public Relations | 2832d | 2022-03-30 | 2029-12-29 | 17_GN10000 | 2d |  |  | CR117_Cost Loading [209495]; CR117 WEIGHTAGE [2850.72 h] | 209,495 |  | GN | GENRL | GEN | GENL | GEN | GN | PR | GEN | 29 | CR | UDF_G3 |  |  |  |  |  |  |
| 17_PC10100 |  | Use and Maintenance of Project Office | 2600d | 2022-11-02 | 2029-12-14 | 17_PC10020, 17_PC10680 | 17d |  |  | CR117_Cost Loading [5000000]; CR117 WEIGHTAGE [152570 h] | 5,000,000 | A.04 | GN | GENRL | GEN | GENL | GEN | GN | PR | GEN | 04 | CR | UDF_G3 |  |  |  |  |  |  |
| 17_PC10110 |  | TOL, Maintenance & Utilities for Project Office (LTA and Contractor) | 2600d | 2022-11-02 | 2029-12-14 | 17_PC10020, 17_PC10680 | 17d |  |  | CR117_Cost Loading [4000000]; CR117 WEIGHTAGE [294803 h] | 4,000,000 |  | GN | GENRL | GEN | GENL | GEN | GN | PR | GEN | 11 | CR | UDF_G3 |  |  |  |  |  |  |
| 17_GN11270 |  | Progress Update and BIM Update on Monthly Basis | 2191d | 2023-12-30 | 2029-12-28 | 17_GN11260 | 3d |  |  | CR117 WEIGHTAGE [2205.52 h]; CR117_Cost Loading [640440] | 640,440 |  | GN | GENRL | GEN | GENL | GEN | GN | PR | GEN | 30 | CR | UDF_G3 |  |  |  |  |  |  |
| 17_GN11030 |  | Demobilisation after BSC | 45d | 2027-07-01 | 2027-08-14 | 17_GN10090, 17_GN10120 | 828d | 776d |  | CR117_Cost Loading; CR117 WEIGHTAGE [2590.24 h] |  | A.05 | GN | GENRL | GEN | GENL | GEN | GN | PR | GEN | N/A | CR | UDF_G3 |  |  |  |  |  |  |
| 17_GN11040 |  | Final Demobilisation | 42d | 2029-09-29 | 2029-11-09 | 17_CN18760, 17_GN11030, 17_GN11230, 17_GN11240 | 52d |  |  | CR117_Cost Loading [150000]; CR117 WEIGHTAGE [3783.12 h] | 150,000 | A.Var | GN | GENRL | GEN | GENL | GEN | GN | PR | GEN | 05 | CR | UDF_G3 |  |  |  |  |  |  |
|  | 2 | **APPOINTMENT OF CONTRACTORS' QPs / PEs / CONSULTANTS** |  | 2022-03-30 | 2022-04-12 |  |  |  |  |  |  |  |  |  |  |  |  |  |  |  |  |  |  |  |  |  |  |  |  |
| 17_GN11050 |  | Appointment of Civil / Structural /MEP - PE/QP | 14d | 2022-03-30 | 2022-04-12 | 17_GN10000 | 17d | 0d |  | CR117_Cost Loading; CR117 WEIGHTAGE [779.04 h] |  | A.Var | GN | GENRL | GEN | GENL | GEN | GN | PR | GEN | N/A | CR | UDF_G3 | 1 | 1 | 1 |  |  |  |
| 17_GN11060 |  | Appointment of Architectural QP | 14d | 2022-03-30 | 2022-04-12 | 17_GN10000 | 17d | 0d |  | CR117_Cost Loading; CR117 WEIGHTAGE [779.04 h] |  | A.Var | GN | GENRL | GEN | GENL | GEN | GN | PR | GEN | N/A | CR | UDF_G3 | 1 | 1 | 1 |  |  |  |
| 17_GN11070 |  | Appointment of Architectural QECP | 14d | 2022-03-30 | 2022-04-12 | 17_GN10000 | 214d | 0d |  | CR117_Cost Loading; CR117 WEIGHTAGE [779.04 h] |  | A.Var | GN | GENRL | GEN | GENL | GEN | GN | PR | GEN | N/A | CR | UDF_G3 |  |  |  |  |  |  |
|  | 3 | **GENERAL SUBMISSIONS** |  | 2022-03-30 | 2029-09-28 |  |  |  |  |  |  |  |  |  |  |  |  |  |  |  |  |  |  |  |  |  |  |  |  |
| 17_GN11080 |  | Submission of Baseline Programme | 61d | 2022-03-30 | 2022-05-29 | 17_GN10000 | 65d | 34d |  | CR117_Cost Loading; CR117 WEIGHTAGE [3466.64 h] |  | A.Var | GN | GENRL | GEN | GENL | GEN | GN | PR | GEN | 15 | CR | UDF_G3 |  |  |  |  |  |  |
| 17_GN11100 |  | Submission of Project Quality Plan | 60d | 2022-03-30 | 2022-05-28 | 17_GN10000 | 66d | 35d |  | CR117_Cost Loading [204000]; CR117 WEIGHTAGE [3466.64 h] | 204,000 | A.Var | GN | GENRL | GEN | GENL | GEN | GN | PR | GEN | 27 | CR | UDF_G3 |  |  |  |  |  |  |
| 17_GN11120 |  | Submission of Safety, Environmental Control & Site Security Plan | 60d | 2022-03-30 | 2022-05-28 | 17_GN10000 | 216d | 15d |  | CR117_Cost Loading; CR117 WEIGHTAGE [3466.64 h] |  | A.Var | GN | GENRL | GEN | GENL | GEN | GN | PR | GEN | 10 | CR | UDF_G3 |  |  |  |  |  |  |
| 17_GN11130 |  | Submission of Performance & Mobilization Bond | 30d | 2022-03-30 | 2022-04-28 | 17_GN10000 | 55d | 0d |  | CR117_Cost Loading [1200000]; CR117 WEIGHTAGE [21716.6 h] | 1,200,000 | A.Var | GN | GENRL | GEN | GENL | GEN | GN | PR | GEN | 26 | CR | UDF_G3 |  |  |  |  |  |  |
| 17_GN11220 |  | Submission of Insurance, Bonds and Guarantee | 28d | 2022-03-30 | 2022-04-26 | 17_GN10000 | 37d | 0d |  | CR117_Cost Loading [1000000]; CR117 WEIGHTAGE [11936.7 h] | 1,000,000 | A.25-A.26 | GN | GENRL | GEN | GENL | GEN | GN | PR | GEN | 25 | CR | UDF_G3 |  |  | 2 | General | 1 | 1 |
| 17_GN11090 |  | Submission of Earth Control Measure Plan & Temporary Drainage System | 60d | 2022-04-13 | 2022-06-11 | 17_GN11070 | 214d | 137d |  | CR117_Cost Loading; CR117 WEIGHTAGE [3466.64 h] |  | A.Var | GN | GENRL | GEN | GENL | GEN | GN | PR | GEN | 10 | CR | UDF_G3 |  |  |  |  |  |  |
| 17_GN11110 |  | Submission of Flood Protection Plan | 60d | 2022-04-13 | 2022-06-11 | 17_GN11070 | 214d | 137d |  | CR117_Cost Loading; CR117 WEIGHTAGE [3466.64 h] |  | A.Var | GN | GENRL | GEN | GENL | GEN | GN | PR | GEN | 10 | CR | UDF_G3 |  |  |  |  |  |  |
| 17_GN11170 |  | Submission of The Agreed Schedule of Rates (ASR - $30,000) | 90d | 2022-04-27 | 2022-07-25 | 17_GN11220 | 257d | 226d |  | CR117_Cost Loading [30000]; CR117 WEIGHTAGE [10477.8 h] | 30,000 | A.Var | GN | GENRL | GEN | GENL | GEN | GN | PR | GEN | 14 | CR |  |  |  |  | General |  |  |
| 17_GN11230 |  | Issuance of Advance Payment by LTA | 14d | 2022-04-29 | 2022-05-12 | 17_GN11130, 17_GN11220 | 55d |  |  | CR117_Cost Loading [26254350]; CR117 WEIGHTAGE | 26,254,350 |  | GN | GENRL | GEN | GENL | GEN | GN | PR | GEN | N/A | CR | UDF_G3 |  |  |  |  |  |  |
| 17_GN11240 |  | Monthly recovery of Advance Payment | 695d | 2022-07-07 | 2024-05-31 | 17_GN11230 | 0d | 1946d | finish on 2024-05-31 | CR117_Cost Loading [-26254350]; CR117 WEIGHTAGE | -26,254,350 |  | GN | GENRL | GEN | GENL | GEN | GN | PR | GEN | N/A | CR | UDF_G3 |  |  |  |  |  |  |
| 17_GN11180 |  | Submission and Acceptance of Warranties | 90d | 2029-07-01 | 2029-09-28 | 17_GN10240 | 94d |  |  | CR117_Cost Loading; CR117 WEIGHTAGE [5219.36 h] |  | A.Var | GN | GENRL | GEN | GENL | GEN | GN | PR | GEN | 25 | CR | UDF_G3 |  |  |  | General |  |  |

| ID | WBS | Activity | Duration | Start | Finish | Predecessors | Total float | Free float | Resources | Cost | BOQ Item | Check | PHASE | AREA | SUB-PHASE | SUB AREA | LOCATION | LOCATION DETAILS | MAJOR WORKS | SUB-LOCATION DETAILS | CR-117 - FOT | LINE | user_text1 | Text 1 | Text 3 | Text 2 |
| --- | --- | --- | --- | --- | --- | --- | --- | --- | --- | --- | --- | --- | --- | --- | --- | --- | --- | --- | --- | --- | --- | --- | --- | --- | --- | --- |
|  | 4 | **AS-BUILT DRAWINGS** |  | 2027-06-01 | 2029-11-13 |  |  |  |  |  |  |  |  |  |  |  |  |  |  |  |  |  |  |  |  |  |
| 17_GN11140 |  | Submission of As-built Drawings for Bored Tunnel | 90d | 2027-06-01 | 2027-08-29 | 17_GN10090 | 854d | 806d | CR117_Cost Loading; CR117 WEIGHTAGE [5219.36 h] |  | A.24 | UDF_G3 | DS | GENRL | GEN | GENL | GEN | GN | GN | GEN | 24 | CR |  |  |  |  |
| 17_GN11150 |  | Submission of As-built Drawings for D-Wall | 90d | 2027-07-01 | 2027-09-28 | 17_GN10100, 17_GN10120 | 824d | 776d | CR117_Cost Loading; CR117 WEIGHTAGE [5219.36 h] |  | A.24 | UDF_G3 | DS | GENRL | GEN | GENL | GEN | GN | GN | GEN | 24 | CR |  |  |  |  |
| 17_GN11160 |  | Submission of As-built Drawings for RC Works | 90d | 2027-07-01 | 2027-09-28 | 17_GN10090, 17_GN10100, 17_GN10110, 17_GN10120, 17_GN10130, 17_GN10140, 17_GN10150, 17_GN10160 | 824d | 776d | CR117_Cost Loading; CR117 WEIGHTAGE [5219.36 h] |  | A.24 | UDF_G3 | DS | GENRL | GEN | GENL | GEN | GN | GN | GEN | 24 | CR |  |  |  |  |
| 17_GN11190 |  | Submission of As-built Drawings for Archi & MEP works | 90d | 2029-03-02 | 2029-05-30 | 17_ST10000 | 214d | 166d | CR117_Cost Loading; CR117 WEIGHTAGE [5219.36 h] |  | A.24 | UDF_G3 | DS | GENRL | GEN | GENL | GEN | GN | GN | GEN | 24 | CR | General |  |  |  |
| 17_GN11200 |  | Submission of As-built Drawings for Reinstatement Road | 45d | 2029-09-29 | 2029-11-12 | 17_CN18760 | 48d | 0d | CR117_Cost Loading; CR117 WEIGHTAGE [5219.36 h] |  | A.24 | UDF_G3 | DS | GENRL | GEN | GENL | GEN | GN | GN | GEN | 24 | CR | General |  |  |  |
| 17_GN11210 |  | Completion of all As-Built Drawings Information | 1d | 2029-11-13 | 2029-11-13 | 17_GN11190, 17_GN11200, 17_GN11140, 17_GN11150, 17_GN11160 | 48d |  | CR117_Cost Loading [6563587]; CR117 WEIGHTAGE [4236.96 h] | 6,563,587 | A.24 | UDF_G3 | DS | GENRL | GEN | GENL | GEN | GN | GN | GEN | 24 | CR | General |  |  |  |
|  | 2 | **DESIGN** |  | 2022-04-13 | 2024-10-21 |  |  |  |  |  |  |  |  |  |  |  |  |  |  |  |  |  |  |  |  |  |
|  | 1 | **SUBMISSION TO ENGINEER / AC** |  | 2022-04-13 | 2024-10-21 |  |  |  |  |  |  |  |  |  |  |  |  |  |  |  |  |  |  |  |  |  |
|  | 1 | **APPROVAL IN PRINCIPLE (AIP)** |  | 2022-04-13 | 2022-07-02 |  |  |  |  |  |  |  |  |  |  |  |  |  |  |  |  |  |  |  |  |  |
| 17_DS10000 |  | AIP : Preparation & Submission to LTA / AC | 23d | 2022-04-13 | 2022-05-05 | 17_GN11050, 17_GN11060 | 17d | 0d | CR117_Cost Loading; CR117 WEIGHTAGE [779.04 h] |  |  | UDF_G3 | DS | GENRL | GEN | GENL | GEN | GN | DS | GEN | N/A | CR |  | 1 | 1 | 1 |
| 17_DS10010 |  | AIP : Review & Comment by LTA / AC | 21d | 2022-05-06 | 2022-05-26 | 17_DS10000 | 31d | 0d | CR117_Cost Loading; CR117 WEIGHTAGE [1188 h] |  |  | UDF_G3 | DS | GENRL | GEN | GENL | GEN | GN | DS | GEN | N/A | CR |  | 1 | 1 | 1 |
| 17_DS10020 |  | AIP : Re-submission to LTA / AC | 9d | 2022-05-27 | 2022-06-04 | 17_DS10010 | 31d | 0d | CR117_Cost Loading; CR117 WEIGHTAGE [486.88 h] |  |  | UDF_G3 | DS | GENRL | GEN | GENL | GEN | GN | DS | GEN | N/A | CR |  | 1 | 1 | 1 |
| 17_DS10030 |  | AIP : Review & Acceptance by LTA / AC | 28d | 2022-06-05 | 2022-07-02 | 17_DS10020 | 31d | 0d | CR117_Cost Loading [1110671]; CR117 WEIGHTAGE [10113.8 h] | 1,110,671.25 |  | UDF_G3 | DS | GENRL | GEN | GENL | GEN | GN | DS | GEN | 1 | CR |  | 1 | 1 | 1 |
|  | 2 | **PRELIM DESIGN** |  | 2022-07-03 | 2022-10-17 |  |  |  |  |  |  |  |  |  |  |  |  |  |  |  |  |  |  |  |  |  |
| 17_DS10040 |  | Preliminary Design : Preparation & Submission to LTA / AC | 30d | 2022-07-03 | 2022-08-01 | 17_DS10030, 17_GN11080, 17_GN11100, 17_PC10000 | 31d | 0d | CR117_Cost Loading; CR117 WEIGHTAGE [1188 h] |  |  | UDF_G3 | DS | GENRL | PLD | GENL | GEN | GN | DS | GEN | N/A | CR |  |  |  |  |
| 17_DS10050 |  | Preliminary Design : Review and Comment by LTA / AC | 28d | 2022-08-02 | 2022-08-29 | 17_DS10040 | 31d | 0d | CR117_Cost Loading; CR117 WEIGHTAGE [1188 h] |  |  | UDF_G3 | DS | GENRL | PLD | GENL | GEN | GN | DS | GEN | N/A | CR |  |  |  |  |
| 17_DS10060 |  | Preliminary Design : Re-submission to LTA / AC | 21d | 2022-08-30 | 2022-09-19 | 17_DS10050 | 31d | 0d | CR117_Cost Loading; CR117 WEIGHTAGE [779.04 h] |  |  | UDF_G3 | DS | GENRL | PLD | GENL | GEN | GN | DS | GEN | N/A | CR |  |  |  |  |
| 17_DS10070 |  | Preliminary Design : Review and Acceptance by LTA / AC | 28d | 2022-09-20 | 2022-10-17 | 17_DS10060 | 31d | 0d | CR117_Cost Loading [2221342]; CR117 WEIGHTAGE [18221.6 h] | 2,221,342.5 |  | UDF_G3 | DS | GENRL | PLD | GENL | GEN | GN | DS | GEN | 2 | CR |  |  |  |  |
|  | 3 | **PRE-FINAL DESIGN** |  | 2022-10-18 | 2023-03-08 |  |  |  |  |  |  |  |  |  |  |  |  |  |  |  |  |  |  |  |  |  |
| 17_DS10080 |  | Pre-Final Design : Preparation & Submission to LTA / AC | 65d | 2022-10-18 | 2022-12-21 | 17_DS10070 | 31d | 0d | CR117_Cost Loading; CR117 WEIGHTAGE [2590.24 h] |  |  | UDF_G3 | DS | GENRL | PFD | GENL | GEN | GN | DS | GEN | N/A | CR |  |  |  |  |
| 17_DS10090 |  | Pre-Final Design : Review and Comment by LTA / AC | 28d | 2022-12-22 | 2023-01-18 | 17_DS10080 | 31d | 0d | CR117_Cost Loading; CR117 WEIGHTAGE [1596.96 h] |  |  | UDF_G3 | DS | GENRL | PFD | GENL | GEN | GN | DS | GEN | N/A | CR |  |  |  |  |
| 17_DS10100 |  | Pre-Final Design : Re-submission to LTA / AC | 21d | 2023-01-19 | 2023-02-08 | 17_DS10090, 17_PC10500 | 31d | 0d | CR117_Cost Loading; CR117 WEIGHTAGE [1188 h] |  |  | UDF_G3 | DS | GENRL | PFD | GENL | GEN | GN | DS | GEN | N/A | CR |  |  |  |  |
| 17_DS10110 |  | Pre-Final Design : Review and Acceptance by LTA / AC | 28d | 2023-02-09 | 2023-03-08 | 17_DS10100, 17_DS10080 | 31d | 0d | CR117_Cost Loading [3332014]; CR117 WEIGHTAGE [26738.4 h] | 3,332,013.75 |  | UDF_G3 | DS | GENRL | PFD | GENL | GEN | GN | DS | GEN | 3 | CR |  |  |  |  |

| ID | WBS | Activity | Duration | Start | Finish | Predecessors | Total float | Free float | Resources | Cost | Check | PHASE | AREA | SUB-PHASE | SUB AREA | LOCATION | LOCATION DETAILS | MAJOR WORKS | SUB-LOCATION DETAILS | CR-117 - FOT | LINE |
| --- | --- | --- | --- | --- | --- | --- | --- | --- | --- | --- | --- | --- | --- | --- | --- | --- | --- | --- | --- | --- | --- |
|  | 4 | **FINAL DESIGN** |  | 2023-03-09 | 2023-08-22 |  |  |  |  |  |  |  |  |  |  |  |  |  |  |  |  |
| 17_DS10120 |  | Final Design : Preparation & Submission to LTA / AC | 90d | 2023-03-09 | 2023-06-06 | 17_DS10110, 17_GN11170 | 31d | 0d | CR117_Cost Loading; CR117 WEIGHTAGE [3232.88 h] |  | UDF_G3 | DS | GENRL | FND | GENL | GEN | GN | DS | GEN | N/A | CR |
| 17_DS10130 |  | Final Design : Review and Comment by LTA / AC | 28d | 2023-06-07 | 2023-07-04 | 17_DS10120 | 97d | 0d | CR117_Cost Loading; CR117 WEIGHTAGE [1596.96 h] |  | UDF_G3 | DS | GENRL | FND | GENL | GEN | GN | DS | GEN | N/A | CR |
| 17_DS10140 |  | Final Design : Re-submission to LTA / AC | 21d | 2023-07-05 | 2023-07-25 | 17_DS10130 | 97d | 0d | CR117_Cost Loading; CR117 WEIGHTAGE [1188 h] |  | UDF_G3 | DS | GENRL | FND | GENL | GEN | GN | DS | GEN | N/A | CR |
| 17_DS10150 |  | Final Design : Review and Acceptance by LTA / AC | 28d | 2023-07-26 | 2023-08-22 | 17_DS10140 | 97d | 0d | CR117_Cost Loading [7774699]; CR117 WEIGHTAGE [61214.5 h] | 7,774,698.75 | UDF_G3 | DS | GENRL | FND | GENL | GEN | GN | DS | GEN | 4 | CR |
|  | 5 | **CONTRACT DRAWING & SPECIFICATIONS DELIVERY** |  | 2023-11-10 | 2023-12-24 |  |  |  |  |  |  |  |  |  |  |  |  |  |  |  |  |
| 17_DS10160 |  | Contract Drawings and Specifications Delivery | 45d | 2023-11-10 | 2023-12-24 | 17_DS10150, 17_DS10690, 17_DS10730, 17_DS10810, 17_DS10850, 17_DS11490 | 37d |  | CR117_Cost Loading [4442685]; CR117 WEIGHTAGE [39286.6 h] | 4,442,685 | UDF_G3 | DS | GENRL | GEN | GENL | GEN | GN | DS | GEN | 5 | CR |
|  | 6 | **CDSS (Civil Design Safety Submission)** |  | 2022-09-20 | 2023-10-24 |  |  |  |  |  |  |  |  |  |  |  |  |  |  |  |  |
| 17_DS10170 |  | CDSS Submission:ERSS Works | 36d | 2022-09-20 | 2022-10-25 | 17_DS10060 | 81d | 0d | CR117_Cost Loading; CR117 WEIGHTAGE [1188 h] |  | UDF_G3 | DS | GENRL | GEN | GENL | GEN | GN | DS | GEN | N/A | CR |
| 17_DS10180 |  | CDSS LTA & AC Review:ERSS Works | 14d | 2022-10-26 | 2022-11-08 | 17_DS10170 | 88d | 0d | CR117_Cost Loading; CR117 WEIGHTAGE [779.04 h] |  | UDF_G3 | DS | GENRL | GEN | GENL | GEN | GN | DS | GEN | N/A | CR |
| 17_DS10190 |  | CDSS Review and Resubmission:ERSS Works | 7d | 2022-11-09 | 2022-11-15 | 17_DS10180 | 88d | 0d | CR117_Cost Loading; CR117 WEIGHTAGE [370 h] |  | UDF_G3 | DS | GENRL | GEN | GENL | GEN | GN | DS | GEN | N/A | CR |
| 17_DS10200 |  | CDSS LTA & AC Approval:ERSS works | 14d | 2022-11-16 | 2022-11-29 | 17_DS10190 | 88d | 7d | CR117_Cost Loading; CR117 WEIGHTAGE [779.04 h] |  | UDF_G3 | DS | GENRL | GEN | GENL | GEN | GN | DS | GEN | N/A | CR |
| 17_DS10210 |  | CDSS Submission: Permanent Works | 28d | 2023-01-18 | 2023-02-14 | 17_DS10320, 17_DS10410 | 246d | 0d | CR117_Cost Loading; CR117 WEIGHTAGE [1596.96 h] |  | UDF_G3 | DS | GENRL | GEN | GENL | GEN | GN | DS | GEN | N/A | CR |
| 17_DS10220 |  | CDSS LTA & AC Review: Permanent Works | 28d | 2023-02-15 | 2023-03-14 | 17_DS10210 | 246d | 0d | CR117_Cost Loading; CR117 WEIGHTAGE [1596.96 h] |  | UDF_G3 | DS | GENRL | GEN | GENL | GEN | GN | DS | GEN | N/A | CR |
| 17_DS10230 |  | CDSS Review and Resubmission: Permanent Works | 14d | 2023-03-15 | 2023-03-28 | 17_DS10220 | 246d | 0d | CR117_Cost Loading; CR117 WEIGHTAGE [779.04 h] |  | UDF_G3 | DS | GENRL | GEN | GENL | GEN | GN | DS | GEN | N/A | CR |
| 17_DS10240 |  | CDSS LTA & AC Approval: Permanent Works | 14d | 2023-03-29 | 2023-04-11 | 17_DS10230 | 246d | 0d | CR117_Cost Loading; CR117 WEIGHTAGE [779.04 h] |  | UDF_G3 | DS | GENRL | GEN | GENL | GEN | GN | DS | GEN | N/A | CR |
| 17_DS10250 |  | CDSS Submission : Tunneling Works | 28d | 2023-08-02 | 2023-08-29 | 17_DS10420 | 246d | 0d | CR117_Cost Loading; CR117 WEIGHTAGE [1596.96 h] |  | UDF_G3 | DS | GENRL | GEN | GENL | GEN | GN | DS | GEN | N/A | CR |
| 17_DS10260 |  | CDSS LTA & AC Review : Tunneling Works | 28d | 2023-08-30 | 2023-09-26 | 17_DS10250 | 246d | 0d | CR117_Cost Loading; CR117 WEIGHTAGE [1596.96 h] |  | UDF_G3 | DS | GENRL | GEN | GENL | GEN | GN | DS | GEN | N/A | CR |
| 17_DS10270 |  | CDSS Revision and Resubmission : Tunneling Works | 14d | 2023-09-27 | 2023-10-10 | 17_DS10260 | 246d | 0d | CR117_Cost Loading; CR117 WEIGHTAGE [779.04 h] |  | UDF_G3 | DS | GENRL | GEN | GENL | GEN | GN | DS | GEN | N/A | CR |
| 17_DS10280 |  | CDSS LTA & AC Approval : Tunneling Works | 14d | 2023-10-11 | 2023-10-24 | 17_DS10270 | 246d | 0d | CR117_Cost Loading; CR117 WEIGHTAGE [779.04 h] |  | UDF_G3 | DS | GENRL | GEN | GENL | GEN | GN | DS | GEN | N/A | CR |
|  | 7 | **CNSS (Civil Construction Safety Submission)** |  | 2022-10-26 | 2024-01-16 |  |  |  |  |  |  |  |  |  |  |  |  |  |  |  |  |
| 17_DS10290 |  | CNSS Submission:ERSS Works | 21d | 2022-10-26 | 2022-11-15 | 17_DS10170 | 81d | 0d | CR117_Cost Loading; CR117 WEIGHTAGE [1188 h] |  | UDF_G3 | DS | GENRL | GEN | GENL | GEN | GN | DS | GEN | N/A | CR |
| 17_DS10300 |  | CNSS LTA & AC Review:ERSS Works | 14d | 2022-11-16 | 2022-11-29 | 17_DS10290 | 81d | 0d | CR117_Cost Loading; CR117 WEIGHTAGE [779.04 h] |  | UDF_G3 | DS | GENRL | GEN | GENL | GEN | GN | DS | GEN | N/A | CR |
| 17_DS10310 |  | CNSS Review and Resubmission:ERSS Works | 7d | 2022-11-30 | 2022-12-06 | 17_DS10300 | 81d | 0d | CR117_Cost Loading; CR117 WEIGHTAGE [370 h] |  | UDF_G3 | DS | GENRL | GEN | GENL | GEN | GN | DS | GEN | N/A | CR |
| 17_DS10320 |  | CNSS LTA & AC Approval:ERSS works | 14d | 2022-12-07 | 2022-12-20 | 17_DS10310, 17_DS10200 | 81d | 0d | CR117_Cost Loading; CR117 WEIGHTAGE [779.04 h] |  | UDF_G3 | DS | GENRL | GEN | GENL | GEN | GN | DS | GEN | N/A | CR |
| 17_DS10330 |  | CNSS Submission: Permanent Works | 28d | 2023-04-12 | 2023-05-09 | 17_DS10240 | 246d | 0d | CR117_Cost Loading; CR117 WEIGHTAGE [1596.96 h] |  | UDF_G3 | DS | GENRL | GEN | GENL | GEN | GN | DS | GEN | N/A | CR |
| 17_DS10340 |  | CNSS LTA & AC Review: Permanent Works | 28d | 2023-05-10 | 2023-06-06 | 17_DS10330 | 246d | 0d | CR117_Cost Loading; CR117 WEIGHTAGE [1596.96 h] |  | UDF_G3 | DS | GENRL | GEN | GENL | GEN | GN | DS | GEN | N/A | CR |
| 17_DS10350 |  | CNSS Review and Resubmission: Permanent Works | 14d | 2023-06-07 | 2023-06-20 | 17_DS10340 | 246d | 0d | CR117_Cost Loading; CR117 WEIGHTAGE [779.04 h] |  | UDF_G3 | DS | GENRL | GEN | GENL | GEN | GN | DS | GEN | N/A | CR |
| 17_DS10360 |  | CNSS LTA & AC Approval: Permanent Works | 14d | 2023-06-21 | 2023-07-04 | 17_DS10350 | 246d | 0d | CR117_Cost Loading; CR117 WEIGHTAGE [779.04 h] |  | UDF_G3 | DS | GENRL | GEN | GENL | GEN | GN | DS | GEN | N/A | CR |
| 17_DS10370 |  | CNSS Submission : Tunneling Works | 28d | 2023-10-25 | 2023-11-21 | 17_DS10280 | 289d | 0d | CR117_Cost Loading; CR117 WEIGHTAGE [1596.96 h] |  | UDF_G3 | DS | GENRL | GEN | GENL | GEN | GN | DS | GEN | N/A | CR |
| 17_DS10380 |  | CNSS LTA & AC Review : Tunneling Works | 28d | 2023-11-22 | 2023-12-19 | 17_DS10370 | 289d | 0d | CR117_Cost Loading; CR117 WEIGHTAGE [1596.96 h] |  | UDF_G3 | DS | GENRL | GEN | GENL | GEN | GN | DS | GEN | N/A | CR |
| 17_DS10390 |  | CNSS Revision and Resubmission : Tunneling Works | 14d | 2023-12-20 | 2024-01-02 | 17_DS10380 | 289d | 0d | CR117_Cost Loading; CR117 WEIGHTAGE [779.04 h] |  | UDF_G3 | DS | GENRL | GEN | GENL | GEN | GN | DS | GEN | N/A | CR |
| 17_DS10400 |  | CNSS LTA & AC Approval : Tunneling Works | 14d | 2024-01-03 | 2024-01-16 | 17_DS10390 | 289d | 0d | CR117_Cost Loading; CR117 WEIGHTAGE [779.04 h] |  | UDF_G3 | DS | GENRL | GEN | GENL | GEN | GN | DS | GEN | N/A | CR |

| ID | WBS | Activity | Duration | Start | Finish | Predecessors | Total float | Free float | Resources | Cost | Check | PHASE | AREA | SUB-PHASE | SUB AREA | LOCATION | LOCATION DETAILS | MAJOR WORKS | SUB-LOCATION DETAILS | CR-117 - FOT | LINE |
| --- | --- | --- | --- | --- | --- | --- | --- | --- | --- | --- | --- | --- | --- | --- | --- | --- | --- | --- | --- | --- | --- |
|  | 8 | **PSR (Project Safety Review)** |  | 2022-12-21 | 2024-02-13 |  |  |  |  |  |  |  |  |  |  |  |  |  |  |  |  |
| 17_DS10410 |  | Project Safety Review : ERSS Works | 28d | 2022-12-21 | 2023-01-17 | 17_DS10320 | 81d | 0d | CR117_Cost Loading; CR117 WEIGHTAGE [1596.96 h] |  | UDF_G3 | DS | GENRL | GEN | GENL | GEN | GN | DS | GEN | N/A | CR |
| 17_DS10420 |  | Project Safety Review: Permanent Works | 28d | 2023-07-05 | 2023-08-01 | 17_DS10360 | 246d | 0d | CR117_Cost Loading; CR117 WEIGHTAGE [1596.96 h] |  | UDF_G3 | DS | GENRL | GEN | GENL | GEN | GN | DS | GEN | N/A | CR |
| 17_DS10430 |  | Project Safety Review : Tunneling Works | 28d | 2024-01-17 | 2024-02-13 | 17_DS10400 | 289d | 252d | CR117_Cost Loading; CR117 WEIGHTAGE [1596.96 h] |  | UDF_G3 | DS | GENRL | GEN | GENL | GEN | GN | DS | GEN | N/A | CR |
|  | 9 | **PRE-FINAL DESIGN CCSM (Co-ordinated Combined Services Model)** |  | 2022-12-22 | 2023-04-28 |  |  |  |  |  |  |  |  |  |  |  |  |  |  |  |  |
| 17_DS10440 |  | Preparation and Submission:Pre-Final Design CCSM Submission | 72d | 2022-12-22 | 2023-03-03 | 17_DS10080 | 32d | 0d | CR117_Cost Loading; CR117 WEIGHTAGE [10594.6 h] |  | UDF_G3 | DS | GENRL | GEN | GENL | GEN | GN | DS | GEN | N/A | CR |
| 17_DS10450 |  | Review and Approval :Pre-Fial Design CCSM Submission | 56d | 2023-03-04 | 2023-04-28 | 17_DS10440 | 32d |  | CR117_Cost Loading [555336]; CR117 WEIGHTAGE [7491.28 h] | 555,335.63 | UDF_G3 | DS | GENRL | GEN | GENL | GEN | GN | DS | GEN | 7 | CR |
|  | 10 | **FINAL DESIGN CCSM/SEM (Structural, Electrical and Mechanical Drawings)** |  | 2023-06-07 | 2023-10-30 |  |  |  |  |  |  |  |  |  |  |  |  |  |  |  |  |
| 17_DS10460 |  | Preparation and Submission : Final Design CCSM/SEM Submission | 90d | 2023-06-07 | 2023-09-04 | 17_DS10120 | 31d | 0d | CR117_Cost Loading; CR117 WEIGHTAGE [7322.72 h] |  | UDF_G3 | DS | GENRL | GEN | GENL | GEN | GN | DS | GEN | N/A | CR |
| 17_DS10470 |  | Review and Approval :Final Design CCSM Submission | 56d | 2023-09-05 | 2023-10-30 | 17_DS10460 | 31d |  | CR117_Cost Loading [1110671]; CR117 WEIGHTAGE [11749.8 h] | 1,110,671.25 | UDF_G3 | DS | GENRL | GEN | GENL | GEN | GN | DS | GEN | 8 | CR |
|  | 11 | **UPDATED FINAL DESIGN CCSM/SEM (Structural, Electrical and Mechanical Drawings)** |  | 2023-12-01 | 2024-10-21 |  |  |  |  |  |  |  |  |  |  |  |  |  |  |  |  |
| 17_DS10480 |  | Preparation and Submission : Updated Final Design CCSM / SEM Submission | 270d | 2023-12-01 | 2024-08-26 | 17_GN10050, 17_DS10470 | 101d | 0d | CR117_Cost Loading; CR117 WEIGHTAGE [15736.2 h] |  | UDF_G3 | DS | GENRL | GEN | GENL | GEN | GN | DS | GEN | N/A | CR |
| 17_DS10490 |  | Review and Approval : Updated Final Design CCSM / SEM Submission | 56d | 2024-08-27 | 2024-10-21 | 17_DS10480 | 101d |  | CR117_Cost Loading [555336]; CR117 WEIGHTAGE [7491.28 h] | 555,335.62 | UDF_G3 | DS | GENRL | GEN | GENL | GEN | GN | DS | GEN | 9 | CR |
|  | 2 | **SUBMISSIONS TO ENGINEER** |  | 2022-05-06 | 2023-03-01 |  |  |  |  |  |  |  |  |  |  |  |  |  |  |  |  |
|  | 5 | **SITE OFFICE LAYOUT / HOARDING DESIGN** |  | 2022-05-06 | 2022-08-03 |  |  |  |  |  |  |  |  |  |  |  |  |  |  |  |  |
| 17_DS10650 |  | Preparation, Submission and Approval for Site Office Layout / Hoarding | 90d | 2022-05-06 | 2022-08-03 | 17_DS10000 | 17d | 0d | CR117_Cost Loading; CR117 WEIGHTAGE [1713.84 h] |  | UDF_G3 | DS | GENRL | GEN | GENL | GEN | GN | DS | GEN | 20 | CR |
|  | 1 | **TBM DESIGN** |  | 2022-05-06 | 2023-03-01 |  |  |  |  |  |  |  |  |  |  |  |  |  |  |  |  |
| 17_DS10500 |  | TBM Design : Concept Drawings Preparation & Submission to LTA / Engineer | 90d | 2022-05-06 | 2022-08-03 | 17_DS10000 | 188d | 0d | CR117_Cost Loading; CR117 WEIGHTAGE [4050.96 h] |  | UDF_G3 | DS | GENRL | GEN | GENL | GEN | GN | DS | GEN | 20 | CR |
| 17_DS10510 |  | TBM Design : Review and Comment by LTA / Engineer | 34d | 2022-08-04 | 2022-09-06 | 17_DS10500 | 188d | 0d | CR117_Cost Loading; CR117 WEIGHTAGE [1596.96 h] |  | UDF_G3 | DS | GENRL | GEN | GENL | GEN | GN | DS | GEN | 20 | CR |
| 17_DS10520 |  | TBM Design : Resubmission to LTA / Engineer | 64d | 2022-09-07 | 2022-11-09 | 17_DS10510 | 188d | 0d | CR117_Cost Loading; CR117 WEIGHTAGE [1596.96 h] |  | UDF_G3 | DS | GENRL | GEN | GENL | GEN | GN | DS | GEN | 20 | CR |
| 17_DS10530 |  | TBM Design : Review and Acceptance by LTA / Engineer | 28d | 2022-11-10 | 2022-12-07 | 17_DS10520, 17_PC10520 | 188d | 0d | CR117_Cost Loading; CR117 WEIGHTAGE [779.04 h] |  | UDF_G3 | DS | GENRL | GEN | GENL | GEN | GN | DS | GEN | 20 | CR |
| 17_DS10540 |  | TBM Design : Manufacturing Drawings | 28d | 2022-12-08 | 2023-01-04 | 17_DS10530 | 188d | 0d | CR117_Cost Loading; CR117 WEIGHTAGE [1596.96 h] |  | UDF_G3 | DS | GENRL | GEN | GENL | GEN | GN | DS | GEN | 20 | CR |
| 17_DS10550 |  | TBM Design : Assembly Drawings | 56d | 2023-01-05 | 2023-03-01 | 17_DS10540 | 188d | 7d | CR117_Cost Loading; CR117 WEIGHTAGE [3232.88 h] |  | UDF_G3 | DS | GENRL | GEN | GENL | GEN | GN | DS | GEN | 20 | CR |
|  | 2 | **GROUND IMPROVEMENT** |  | 2022-07-03 | 2022-11-25 |  |  |  |  |  |  |  |  |  |  |  |  |  |  |  |  |
| 17_DS10560 |  | GIW Design : Preparation&Submission to LTA / Engineer | 90d | 2022-07-03 | 2022-09-30 | 17_DS10030 | 126d | 0d | CR117_Cost Loading; CR117 WEIGHTAGE [3232.88 h] |  | UDF_G3 | DS | GENRL | GEN | GENL | GEN | GN | DS | GEN | 20 | CR |
| 17_DS10570 |  | GIW Design : Review and Comment by LTA / Engineer | 28d | 2022-10-01 | 2022-10-28 | 17_DS10560 | 126d | 0d | CR117_Cost Loading; CR117 WEIGHTAGE [1596.96 h] |  | UDF_G3 | DS | GENRL | GEN | GENL | GEN | GN | DS | GEN | 20 | CR |
| 17_DS10580 |  | GIW Design : Resubmission to LTA / Engineer | 14d | 2022-10-29 | 2022-11-11 | 17_DS10570 | 126d | 0d | CR117_Cost Loading; CR117 WEIGHTAGE [779.04 h] |  | UDF_G3 | DS | GENRL | GEN | GENL | GEN | GN | DS | GEN | 20 | CR |
| 17_DS10590 |  | GIW Design : Review and Acceptance by LTA / Engineer | 14d | 2022-11-12 | 2022-11-25 | 17_DS10580 | 126d | 0d | CR117_Cost Loading; CR117 WEIGHTAGE [779.04 h] |  | UDF_G3 | DS | GENRL | GEN | GENL | GEN | GN | DS | GEN | 20 | CR |

| ID | WBS | Activity | Duration | Start | Finish | Predecessors | Total float | Free float | Resources | Check | PHASE | AREA | SUB-PHASE | SUB AREA | LOCATION | LOCATION DETAILS | MAJOR WORKS | SUB-LOCATION DETAILS | CR-117 - FOT | LINE | Text 2 | Cr117 BSC Stn | Cr117 Handover | Text 1 | Text 3 |
| --- | --- | --- | --- | --- | --- | --- | --- | --- | --- | --- | --- | --- | --- | --- | --- | --- | --- | --- | --- | --- | --- | --- | --- | --- | --- |
|  | 3 | **HIGH DENSITY SLURRY PLANT (STP)** |  | 2022-08-04 | 2022-12-21 |  |  |  |  |  |  |  |  |  |  |  |  |  |  |  |  |  |  |  |  |
| 17_DS10600 |  | STP Design : Preparation&Submission to LTA / Engineer | 70d | 2022-08-04 | 2022-10-12 | 17_DS10500 | 261d | 0d | CR117_Cost Loading; CR117 WEIGHTAGE [4050.96 h] | UDF_G3 | DS | GENRL | GEN | GENL | GEN | GN | DS | GEN | 20 | CR |  |  |  |  |  |
| 17_DS10610 |  | STP : Review and Comment by LTA / Engineer | 28d | 2022-10-13 | 2022-11-09 | 17_DS10600 | 261d | 0d | CR117_Cost Loading; CR117 WEIGHTAGE [1596.96 h] | UDF_G3 | DS | GENRL | GEN | GENL | GEN | GN | DS | GEN | 20 | CR |  |  |  |  |  |
| 17_DS10620 |  | STP: Resubmission to LTA / Engineer | 28d | 2022-11-10 | 2022-12-07 | 17_DS10610 | 261d | 0d | CR117_Cost Loading; CR117 WEIGHTAGE [1596.96 h] | UDF_G3 | DS | GENRL | GEN | GENL | GEN | GN | DS | GEN | 20 | CR |  |  |  |  |  |
| 17_DS10630 |  | STP: Review and Acceptance by LTA / Engineer | 14d | 2022-12-08 | 2022-12-21 | 17_DS10620 | 261d | 0d | CR117_Cost Loading; CR117 WEIGHTAGE [779.04 h] | UDF_G3 | DS | GENRL | GEN | GENL | GEN | GN | DS | GEN | 20 | CR |  |  |  |  |  |
|  | 4 | **PRECAST YARD LAYOUT** |  | 2022-08-04 | 2022-11-24 |  |  |  |  |  |  |  |  |  |  |  |  |  |  |  |  |  |  |  |  |
| 17_DS10640 |  | Preparation & Submission of Pre-cast Yard Layout to LTA / Engineer | 85d | 2022-08-04 | 2022-10-27 | 17_DS10500 | 228d | 0d | CR117_Cost Loading; CR117 WEIGHTAGE [3232.88 h] | UDF_G3 | DS | GENRL | GEN | GENL | GEN | GN | DS | GEN | 20 | CR |  |  |  |  |  |
| 17_DS11080 |  | Precast Yard Layout - Review and Approval by LTA / Engineer | 28d | 2022-10-28 | 2022-11-24 | 17_DS10640 | 228d | 85d | CR117 WEIGHTAGE [28.16 h]; CR117_Cost Loading | UDF_G3 | DS | GENRL | GEN | GENL | GEN | GN | DS | GEN | 20 | CR |  |  |  |  |  |
|  | 3 | **ST SUBMISSION TO BCA - ERSS** |  | 2022-08-01 | 2023-01-21 |  |  |  |  |  |  |  |  |  |  |  |  |  |  |  |  |  |  |  |  |
|  | 3 | **ERSS DESIGN - DRAINAGE DIVERSION** |  | 2022-08-01 | 2022-11-20 |  |  |  |  |  |  |  |  |  |  |  |  |  |  |  |  |  |  |  |  |
| 17_DS10740 |  | ERSS Design : Preparation & Submission to BCA (Drainage Diversion) | 56d | 2022-08-01 | 2022-09-25 | 17_DS11020 | 37d | 0d | CR117_Cost Loading; CR117 WEIGHTAGE [779.04 h] | UDF_G3 | DS | GENRL | GEN | GENL | GEN | GN | DS | GEN | 20 | CR | 2 | 1 | 1 |  |  |
| 17_DS10750 |  | ERSS Design : Review & Comment by BCA (Drainage Diversion) | 28d | 2022-09-26 | 2022-10-23 | 17_DS10740 | 37d | 0d | CR117_Cost Loading; CR117 WEIGHTAGE [1596.96 h] | UDF_G3 | DS | GENRL | GEN | GENL | GEN | GN | DS | GEN | 20 | CR | 2 | 1 | 1 |  |  |
| 17_DS10760 |  | ERSS Design : Resubmission to BCA (Drainage Diversion) | 14d | 2022-10-24 | 2022-11-06 | 17_DS10750 | 37d | 0d | CR117_Cost Loading; CR117 WEIGHTAGE [779.04 h] | UDF_G3 | DS | GENRL | GEN | GENL | GEN | GN | DS | GEN | 20 | CR | 2 | 1 | 1 |  |  |
| 17_DS10770 |  | ERSS Design : Approval by BCA (Drainage Diversion) | 14d | 2022-11-07 | 2022-11-20 | 17_DS10760 | 37d | 0d | CR117_Cost Loading; CR117 WEIGHTAGE [779.04 h] | UDF_G3 | DS | GENRL | GEN | GENL | GEN | GN | DS | GEN | 20 | CR | 2 | 1 | 1 |  |  |
|  | 1 | **ERSS DESIGN - East C&C Tunnel** |  | 2022-10-01 | 2022-12-09 |  |  |  |  |  |  |  |  |  |  |  |  |  |  |  |  |  |  |  |  |
| 17_DS10660 |  | ERSS Design : Preparation & Submission to BCA (East C&C Tunnel) | 14d | 2022-10-01 | 2022-10-14 | 17_GN10010, 17_PC10450 | 69d | 0d | CR117_Cost Loading; CR117 WEIGHTAGE [779.04 h] | UDF_G3 | DS | GENRL | GEN | GENL | GEN | GN | DS | GEN | 20 | CR | 1 |  |  | 1 | 1 |
| 17_DS10670 |  | ERSS Design : Review & Comment by BCA (East C&C Tunnel) | 28d | 2022-10-15 | 2022-11-11 | 17_DS10660 | 94d | 0d | CR117_Cost Loading; CR117 WEIGHTAGE [1596.96 h] | UDF_G3 | DS | GENRL | GEN | GENL | GEN | GN | DS | GEN | 20 | CR | 1 |  |  | 1 | 1 |
| 17_DS10680 |  | ERSS Design : Resubmission to BCA (East C&C Tunnel) | 14d | 2022-11-12 | 2022-11-25 | 17_DS10670 | 120d | 0d | CR117_Cost Loading; CR117 WEIGHTAGE [779.04 h] | UDF_G3 | DS | GENRL | GEN | GENL | GEN | GN | DS | GEN | 20 | CR |  |  |  |  |  |
| 17_DS10690 |  | ERSS Design : Approval by BCA (East C&C Tunnel) | 14d | 2022-11-26 | 2022-12-09 | 17_DS10680 | 120d | 43d | CR117_Cost Loading; CR117 WEIGHTAGE [779.04 h] | UDF_G3 | DS | GENRL | GEN | GENL | GEN | GN | DS | GEN | 20 | CR |  |  |  |  |  |
|  | 4 | **ERSS DESIGN - Station** |  | 2022-10-15 | 2023-01-21 |  |  |  |  |  |  |  |  |  |  |  |  |  |  |  |  |  |  |  |  |
| 17_DS11410 |  | ERSS Design : Preparation & Submission to BCA (Station) | 43d | 2022-10-15 | 2022-11-26 | 17_PC10440, 17_DS10660 | 69d | 0d | CR117_Cost Loading; CR117 WEIGHTAGE [779.04 h] | UDF_G3 | DS | GENRL | GEN | GENL | GEN | GN | DS | GEN | 20 | CR | 1 |  |  | 1 | 1 |
| 17_DS11420 |  | ERSS Design : Review & Comment by BCA (Station) | 28d | 2022-11-27 | 2022-12-24 | 17_DS11410 | 69d | 0d | CR117_Cost Loading; CR117 WEIGHTAGE [1596.96 h] | UDF_G3 | DS | GENRL | GEN | GENL | GEN | GN | DS | GEN | 20 | CR | 1 |  |  | 1 | 1 |
| 17_DS11430 |  | ERSS Design : Resubmission to BCA (Station) | 14d | 2022-12-25 | 2023-01-07 | 17_DS11420 | 69d | 0d | CR117_Cost Loading; CR117 WEIGHTAGE [779.04 h] | UDF_G3 | DS | GENRL | GEN | GENL | GEN | GN | DS | GEN | 20 | CR |  |  |  |  |  |
| 17_DS11440 |  | ERSS Design : Approval by BCA (Station) | 14d | 2023-01-08 | 2023-01-21 | 17_DS11430 | 69d | 0d | CR117_Cost Loading; CR117 WEIGHTAGE [779.04 h] | UDF_G3 | DS | GENRL | GEN | GENL | GEN | GN | DS | GEN | 20 | CR |  |  |  |  |  |

| ID | WBS | Activity | Duration | Start | Finish | Predecessors | Total float | Free float | Resources | Check | PHASE | AREA | SUB-PHASE | SUB AREA | LOCATION | LOCATION DETAILS | MAJOR WORKS | SUB-LOCATION DETAILS | CR-117 - FOT | LINE |
| --- | --- | --- | --- | --- | --- | --- | --- | --- | --- | --- | --- | --- | --- | --- | --- | --- | --- | --- | --- | --- |
|  | 2 | **ERSS DESIGN - WEST C&C** |  | 2022-10-15 | 2023-01-19 |  |  |  |  |  |  |  |  |  |  |  |  |  |  |  |
| 17_DS10700 |  | ERSS Design : Preparation & Submission to BCA (West C&C) | 41d | 2022-10-15 | 2022-11-24 | 17_PC10460, 17_DS10660 | 109d | 0d | CR117_Cost Loading; CR117 WEIGHTAGE [779.04 h] | UDF_G3 | DS | GENRL | GEN | GENL | GEN | GN | DS | GEN | 20 | CR |
| 17_DS10710 |  | ERSS Design : Review & Comment by BCA (West C&C) | 28d | 2022-11-25 | 2022-12-22 | 17_DS10700 | 155d | 0d | CR117_Cost Loading; CR117 WEIGHTAGE [1596.96 h] | UDF_G3 | DS | GENRL | GEN | GENL | GEN | GN | DS | GEN | 20 | CR |
| 17_DS10720 |  | ERSS Design : Resubmission to BCA (West C&C) | 14d | 2022-12-23 | 2023-01-05 | 17_DS10710 | 155d | 0d | CR117_Cost Loading; CR117 WEIGHTAGE [779.04 h] | UDF_G3 | DS | GENRL | GEN | GENL | GEN | GN | DS | GEN | 20 | CR |
| 17_DS10730 |  | ERSS Design : Approval by BCA (West C&C) | 14d | 2023-01-06 | 2023-01-19 | 17_DS10720 | 155d | 61d | CR117_Cost Loading; CR117 WEIGHTAGE [779.04 h] | UDF_G3 | DS | GENRL | GEN | GENL | GEN | GN | DS | GEN | 20 | CR |
|  | 4 | **ST SUBMISSION TO BCA - STRUCTURES** |  | 2022-08-01 | 2023-11-14 |  |  |  |  |  |  |  |  |  |  |  |  |  |  |  |
|  | 4 | **STRUCTURE - DRAINAGE DIVERSION** |  | 2022-08-01 | 2022-12-15 |  |  |  |  |  |  |  |  |  |  |  |  |  |  |  |
| 17_DS10900 |  | Drainage Design : Preparation & Submission to BCA | 81d | 2022-08-01 | 2022-10-20 | 17_DS11020 | 62d | 0d | CR117_Cost Loading; CR117 WEIGHTAGE [3232.88 h] | UDF_G3 | DS | GENRL | GEN | GENL | GEN | GN | DS | GEN | 20 | CR |
| 17_DS10910 |  | Drainage Design : Review and Comments by BCA | 28d | 2022-10-21 | 2022-11-17 | 17_DS10900 | 62d | 0d | CR117_Cost Loading; CR117 WEIGHTAGE [1596.96 h] | UDF_G3 | DS | GENRL | GEN | GENL | GEN | GN | DS | GEN | 20 | CR |
| 17_DS10920 |  | Drainage Design : Re submission to BCA | 14d | 2022-11-18 | 2022-12-01 | 17_DS10910 | 62d | 0d | CR117_Cost Loading; CR117 WEIGHTAGE [779.04 h] | UDF_G3 | DS | GENRL | GEN | GENL | GEN | GN | DS | GEN | 20 | CR |
| 17_DS10930 |  | Drainage Design : Review and Approval by BCA | 14d | 2022-12-02 | 2022-12-15 | 17_DS10920 | 62d | 0d | CR117_Cost Loading; CR117 WEIGHTAGE [779.04 h] | UDF_G3 | DS | GENRL | GEN | GENL | GEN | GN | DS | GEN | 20 | CR |
|  | 5 | **STRUCTURE - EAST C&C TUNNEL** |  | 2023-06-07 | 2023-08-29 |  |  |  |  |  |  |  |  |  |  |  |  |  |  |  |
| 17_DS11460 |  | Structure Design : Preparation & Submission to BCA ( East C&C Tunnel) | 28d | 2023-06-07 | 2023-07-04 | 17_PC10620, 17_PC10580, 17_PC10450, 17_DS10120, 17_PC10500 | 109d | 0d | CR117_Cost Loading; CR117 WEIGHTAGE [1596.96 h] | UDF_G3 | DS | GENRL | GEN | GENL | GEN | GN | DS | GEN | 20 | CR |
| 17_DS11470 |  | Structure Design : Review & Comment by BCA ( East C&C Tunnel) | 28d | 2023-07-05 | 2023-08-01 | 17_DS11460 | 109d | 0d | CR117_Cost Loading; CR117 WEIGHTAGE [1596.96 h] | UDF_G3 | DS | GENRL | GEN | GENL | GEN | GN | DS | GEN | 20 | CR |
| 17_DS11480 |  | Structure Design : Resubmission to BCA ( East C&C Tunnel) | 14d | 2023-08-02 | 2023-08-15 | 17_DS11470 | 109d | 0d | CR117_Cost Loading; CR117 WEIGHTAGE [779.04 h] | UDF_G3 | DS | GENRL | GEN | GENL | GEN | GN | DS | GEN | 20 | CR |
| 17_DS11490 |  | Structure Design : Approval by BCA ( East C&C Tunnel) | 14d | 2023-08-16 | 2023-08-29 | 17_DS11480 | 109d | 72d | CR117_Cost Loading; CR117 WEIGHTAGE [779.04 h] | UDF_G3 | DS | GENRL | GEN | GENL | GEN | GN | DS | GEN | 20 | CR |
|  | 2 | **STRUCTURE - WEST C&C TUNNEL** |  | 2023-08-16 | 2023-10-31 |  |  |  |  |  |  |  |  |  |  |  |  |  |  |  |
| 17_DS10820 |  | Structure Design : Preparation & Submission to BCA (West C&C Tunnel) | 21d | 2023-08-16 | 2023-09-05 | 17_DS10730, 17_PC10510, 17_PC10480, 17_PC10470, 17_PC10460, 17_PC10590, 17_PC10570, 17_PC10610, 17_DS10120 | 46d | 0d | CR117_Cost Loading; CR117 WEIGHTAGE [1596.96 h] | UDF_G3 | DS | GENRL | GEN | GENL | GEN | GN | DS | GEN | 20 | CR |
| 17_DS10830 |  | Structure Design : Review & Comment by BCA (West C&C Tunnel) | 28d | 2023-09-06 | 2023-10-03 | 17_DS10820 | 46d | 0d | CR117_Cost Loading; CR117 WEIGHTAGE [1596.96 h] | UDF_G3 | DS | GENRL | GEN | GENL | GEN | GN | DS | GEN | 20 | CR |
| 17_DS10840 |  | Structure Design : Resubmission to BCA (West C&C Tunnel) | 14d | 2023-10-04 | 2023-10-17 | 17_DS10830, 17_PC10660, 17_PC10670 | 46d | 0d | CR117_Cost Loading; CR117 WEIGHTAGE [779.04 h] | UDF_G3 | DS | GENRL | GEN | GENL | GEN | GN | DS | GEN | 20 | CR |
| 17_DS10850 |  | Structure Design : Approval by BCA (West C&C Tunnel) | 14d | 2023-10-18 | 2023-10-31 | 17_DS10840 | 46d | 9d | CR117_Cost Loading; CR117 WEIGHTAGE [779.04 h] | UDF_G3 | DS | GENRL | GEN | GENL | GEN | GN | DS | GEN | 20 | CR |
|  | 1 | **STRUCTURE - STATION STRUCTURE** |  | 2023-08-26 | 2023-11-09 |  |  |  |  |  |  |  |  |  |  |  |  |  |  |  |
| 17_DS10780 |  | Structure Design : Preparation & Submission to BCA (Station) | 20d | 2023-08-26 | 2023-09-14 | 17_PC10440, 17_PC10560, 17_DS10120, 17_PC10650, 17_PC10490 | 37d | 0d | CR117_Cost Loading; CR117 WEIGHTAGE [1596.96 h] | UDF_G3 | DS | GENRL | GEN | GENL | GEN | GN | DS | GEN | 20 | CR |
| 17_DS10790 |  | Structure Design : Review & Comment by BCA (Station) | 28d | 2023-09-15 | 2023-10-12 | 17_DS10780 | 37d | 0d | CR117_Cost Loading; CR117 WEIGHTAGE [1596.96 h] | UDF_G3 | DS | GENRL | GEN | GENL | GEN | GN | DS | GEN | 20 | CR |
| 17_DS10800 |  | Structure Design : Resubmission to BCA (Station) | 14d | 2023-10-13 | 2023-10-26 | 17_DS10790 | 37d | 0d | CR117_Cost Loading; CR117 WEIGHTAGE [779.04 h] | UDF_G3 | DS | GENRL | GEN | GENL | GEN | GN | DS | GEN | 20 | CR |
| 17_DS10810 |  | Structure Design : Approval by BCA (Station) | 14d | 2023-10-27 | 2023-11-09 | 17_DS10800 | 37d | 0d | CR117_Cost Loading; CR117 WEIGHTAGE [779.04 h] | UDF_G3 | DS | GENRL | GEN | GENL | GEN | GN | DS | GEN | 20 | CR |

| ID | WBS | Activity | Duration | Start | Finish | Predecessors | Total float | Free float | Resources | Check | PHASE | AREA | SUB-PHASE | SUB AREA | LOCATION | LOCATION DETAILS | MAJOR WORKS | SUB-LOCATION DETAILS | CR-117 - FOT | LINE | Text 2 | Cr117 BSC Stn | Cr117 Handover | Check 2 (Original Duration) |
| --- | --- | --- | --- | --- | --- | --- | --- | --- | --- | --- | --- | --- | --- | --- | --- | --- | --- | --- | --- | --- | --- | --- | --- | --- |
|  | 3 | **PRECAST SEGMENT DESIGN** |  | 2023-08-23 | 2023-11-14 |  |  |  |  |  |  |  |  |  |  |  |  |  |  |  |  |  |  |  |
| 17_DS10860 |  | Precast Segments Design : Preparation & Submission to BCA | 28d | 2023-08-23 | 2023-09-19 | 17_DS10150, 17_DS10550 | 128d | 0d | CR117_Cost Loading; CR117 WEIGHTAGE [1596.96 h] | UDF_G3 | DS | GENRL | GEN | GENL | GEN | GN | DS | GEN | 20 | CR |  |  |  |  |
| 17_DS10870 |  | Precast Segments Design : Review and Comments by BCA | 28d | 2023-09-20 | 2023-10-17 | 17_DS10860 | 128d | 0d | CR117_Cost Loading; CR117 WEIGHTAGE [1596.96 h] | UDF_G3 | DS | GENRL | GEN | GENL | GEN | GN | DS | GEN | 20 | CR |  |  |  |  |
| 17_DS10880 |  | Precast Segments Design : Re submission to BCA | 14d | 2023-10-18 | 2023-10-31 | 17_DS10870 | 128d | 0d | CR117_Cost Loading; CR117 WEIGHTAGE [779.04 h] | UDF_G3 | DS | GENRL | GEN | GENL | GEN | GN | DS | GEN | 20 | CR |  |  |  |  |
| 17_DS10890 |  | Precast Segments Design : Review and Approval by BCA | 14d | 2023-11-01 | 2023-11-14 | 17_DS10880 | 128d | 31d | CR117_Cost Loading; CR117 WEIGHTAGE [779.04 h] | UDF_G3 | DS | GENRL | GEN | GENL | GEN | GN | DS | GEN | 20 | CR |  |  |  |  |
|  | 5 | **SUBMISSION TO AUTHORITY / AGENCIES** |  | 2022-06-26 | 2024-03-21 |  |  |  |  |  |  |  |  |  |  |  |  |  |  |  |  |  |  |  |
|  | 1 | **LTA TM - TRAFFIC / ROAD DIVERSION** |  | 2022-07-03 | 2024-03-21 |  |  |  |  |  |  |  |  |  |  |  |  |  |  |  |  |  |  |  |
| 17_DS10940 |  | Road diversion: Stage 1 Preparation, Coordination with Stakeholders, Submission to and Approval from LTA | 28d | 2022-07-03 | 2022-07-30 | 17_DS10030 | 60d | 0d | CR117_Cost Loading; CR117 WEIGHTAGE [3466.64 h] | UDF_G3 | GN | GENRL | ENA | GENL | GEN | GN | DS | GEN | 20 | CR |  |  |  |  |
| 17_DS10950 |  | Road diversion: Stage 2 Preparation, Coordination with Stakeholders, Submission to and Approval from LTA | 60d | 2022-07-31 | 2022-09-28 | 17_DS10940 | 244d | 0d | CR117_Cost Loading; CR117 WEIGHTAGE [3466.64 h] | UDF_G3 | GN | GENRL | ENA | GENL | GEN | GN | DS | GEN | 20 | CR |  |  |  |  |
| 17_DS10960 |  | Road diversion: Stage 3A&3B Preparation, Coordination with Stakeholders, Submission to and Approval from LTA | 90d | 2022-09-29 | 2022-12-27 | 17_DS10950 | 350d | 0d | CR117_Cost Loading; CR117 WEIGHTAGE [6972.16 h] | UDF_G3 | GN | GENRL | ENA | GENL | GEN | GN | DS | GEN | 20 | CR |  |  |  |  |
| 17_DS10970 |  | Road diversion: Stage 4 Preparation, Coordination with Stakeholders, Submission to and Approval from LTA | 90d | 2022-12-28 | 2023-03-27 | 17_DS10960 | 441d | 0d | CR117_Cost Loading; CR117 WEIGHTAGE [6972.16 h] | UDF_G3 | GN | GENRL | ENA | GENL | GEN | GN | DS | GEN | 20 | CR |  |  |  |  |
| 17_DS10980 |  | Road diversion: Stage 5 Preparation, Coordination with Stakeholders, Submission to and Approval from LTA | 90d | 2023-03-28 | 2023-06-25 | 17_DS10970 | 441d | 0d | CR117_Cost Loading; CR117 WEIGHTAGE [6972.16 h] | UDF_G3 | GN | GENRL | ENA | GENL | GEN | GN | DS | GEN | 20 | CR |  |  |  |  |
| 17_DS10990 |  | Road diversion: Stage 6 Preparation, Coordination with Stakeholders, Submission to and Approval from LTA | 90d | 2023-06-26 | 2023-09-23 | 17_DS10980 | 441d | 0d | CR117_Cost Loading; CR117 WEIGHTAGE [6972.16 h] | UDF_G3 | GN | GENRL | ENA | GENL | GEN | GN | DS | GEN | 20 | CR |  |  |  |  |
| 17_DS11000 |  | Road diversion: Stage 7 Preparation, Coordination with Stakeholders, Submission to and Approval from LTA | 90d | 2023-09-24 | 2023-12-22 | 17_DS10990 | 441d | 0d | CR117_Cost Loading; CR117 WEIGHTAGE [6972.16 h] | UDF_G3 | GN | GENRL | ENA | GENL | GEN | GN | DS | GEN | 20 | CR |  |  |  |  |
| 17_DS11010 |  | Road diversion: Stage 8 Preparation, Coordination with Stakeholders, Submission to and Approval from LTA | 90d | 2023-12-23 | 2024-03-21 | 17_DS11000 | 441d | 344d | CR117_Cost Loading; CR117 WEIGHTAGE [6972.16 h] | UDF_G3 | GN | GENRL | ENA | GENL | GEN | GN | DS | GEN | 20 | CR |  |  |  |  |
|  | 2 | **PUB - DESIGN AND SUBMISSION OF SEWER & DRAINAGE DIVERSION** |  | 2022-06-26 | 2022-10-29 |  |  |  |  |  |  |  |  |  |  |  |  |  |  |  |  |  |  |  |
| 17_DS11020 |  | Coordination, Design, and Submission of Drain Diversion - PUB | 36d | 2022-06-26 | 2022-07-31 | 17_GN11050, 17_PC10000 | 37d | 0d | CR117_Cost Loading; CR117 WEIGHTAGE [3232.88 h] | UDF_G3 | GN | GENRL | ENA | GENL | GEN | GN | DS | GEN | 20 | CR | 2 | 1 | 1 |  |
| 17_DS11030 |  | Re-submission and Approval of Drain Diversion - PUB | 90d | 2022-08-01 | 2022-10-29 | 17_DS11020 | 58d | 7d | CR117_Cost Loading; CR117 WEIGHTAGE [3232.88 h] | UDF_G3 | GN | GENRL | ENA | GENL | GEN | GN | DS | GEN | 20 | CR |  |  |  |  |
|  | 3 | **NPARKS - TREE FELLING** |  | 2022-06-26 | 2022-12-09 |  |  |  |  |  |  |  |  |  |  |  |  |  |  |  |  |  |  |  |
| 17_DS11040 |  | Tree Felling : Preparation & Submission to NParks | 90d | 2022-06-26 | 2022-09-23 | 17_PC10000 | 143d | 0d | CR117_Cost Loading; CR117 WEIGHTAGE [1188 h] | UDF_G3 | GN | GENRL | ENA | GENL | GEN | GN | DS | GEN | 20 | CR |  |  |  |  |
| 17_DS11050 |  | Tree Felling : Review and Comment by NParks | 28d | 2022-09-24 | 2022-10-21 | 17_DS11040 | 143d | 0d | CR117_Cost Loading; CR117 WEIGHTAGE [1596.96 h] | UDF_G3 | GN | GENRL | ENA | GENL | GEN | GN | DS | GEN | 20 | CR |  |  |  |  |
| 17_DS11060 |  | Tree Felling : Resubmission to NParks | 21d | 2022-10-22 | 2022-11-11 | 17_DS11050 | 143d | 0d | CR117_Cost Loading; CR117 WEIGHTAGE [370 h] | UDF_G3 | GN | GENRL | ENA | GENL | GEN | GN | DS | GEN | 20 | CR |  |  |  |  |
| 17_DS11070 |  | Tree Felling : Approval by NParks | 28d | 2022-11-12 | 2022-12-09 | 17_DS11060 | 143d | 0d | CR117_Cost Loading; CR117 WEIGHTAGE [779.04 h] | UDF_G3 | GN | GENRL | ENA | GENL | GEN | GN | DS | GEN | 20 | CR |  |  |  |  |
|  | 4 | **SPPG - SUBSTATION** |  | 2022-07-03 | 2023-04-26 |  |  |  |  |  |  |  |  |  |  |  |  |  |  |  |  |  |  |  |
|  | 2 | **TEMPORARY 22kV SUBSTATION - DESIGN & APPROVAL** |  | 2022-07-03 | 2023-04-26 |  |  |  |  |  |  |  |  |  |  |  |  |  |  |  |  |  |  |  |
| 17_DS11450 |  | Temp 22kV S/S - Design of Substation Preparation | 90d | 2022-07-03 | 2022-09-30 | 17_DS10030 | 159d | 0d | CR117_Cost Loading; CR117 WEIGHTAGE |  | DS | GENRL | ENA | GENL | GEN | GN | DS | GEN |  | CR |  |  |  |  |
| 17_DS11110 |  | Temp 22kV S/S - Design of Substation Submission to LTA | 90d | 2022-10-01 | 2022-12-29 | 17_DS11450 | 159d | 0d | CR117_Cost Loading; CR117 WEIGHTAGE [10594.6 h] | UDF_G3 | DS | GENRL | ENA | GENL | GEN | GN | DS | GEN | 20 | CR |  |  |  | UDF_G3 |
| 17_DS11120 |  | Temp 22kV S/S - Review and Approval by LTA | 28d | 2022-12-30 | 2023-01-26 | 17_DS11110 | 159d | 0d | CR117_Cost Loading; CR117 WEIGHTAGE [1596.96 h] | UDF_G3 | DS | GENRL | ENA | GENL | GEN | GN | DS | GEN | 20 | CR |  |  |  | UDF_G3 |
| 17_DS11130 |  | Temp 22kV S/S - Submission to SPPG for review and Approval (14 Weeks) | 90d | 2023-01-27 | 2023-04-26 | 17_DS11120 | 159d | 0d | CR117_Cost Loading; CR117 WEIGHTAGE [5686.8 h] | UDF_G3 | DS | GENRL | ENA | GENL | GEN | GN | DS | GEN | 20 | CR |  |  |  | UDF_G3 |

| ID | WBS | Activity | Duration | Start | Finish | Predecessors | Total float | Free float | Resources | Cost | Check | Utility Programme | PHASE | AREA | SUB-PHASE | SUB AREA | LOCATION | LOCATION DETAILS | MAJOR WORKS | SUB-LOCATION DETAILS | CR-117 - FOT | LINE |
| --- | --- | --- | --- | --- | --- | --- | --- | --- | --- | --- | --- | --- | --- | --- | --- | --- | --- | --- | --- | --- | --- | --- |
|  | 5 | **UTILITIES EXCAVATION, DIVERSION, SUPPORTING AND REINSTATEMENT (SPPG, POWERGAS, PUB, TELECOM, SINGTEL** |  | 2022-11-06 | 2023-04-12 |  |  |  |  |  |  |  |  |  |  |  |  |  |  |  |  |  |
| 17_DS11140 |  | Utilities excavation, diversion, supporting & reinstatement: Preparation & Submission to NCE | 45d | 2022-11-06 | 2022-12-20 | 17_DS11300, 17_DS11310, 17_DS11330, 17_DS11400, 17_DS11030 | 51d | 0d | CR117_Cost Loading; CR117 WEIGHTAGE [1596.96 h] |  | UDF_G3 | 1 | GN | GENRL | ENA | GENL | GEN | GN | DS | GEN | 20 | CR |
| 17_DS11150 |  | Utilities excavation, diversion, supporting & reinstatement: Review, Comment and Approval by NCE | 28d | 2022-12-21 | 2023-01-17 | 17_DS11140 | 51d | 0d | CR117_Cost Loading; CR117 WEIGHTAGE [1596.96 h] |  | UDF_G3 | 1 | GN | GENRL | ENA | GENL | GEN | GN | DS | GEN | 20 | CR |
| 17_DS11160 |  | Utilities excavation, diversion, supporting & reinstatement: Coordination with Agency | 85d | 2023-01-18 | 2023-04-12 | 17_DS11150 | 51d | 0d | CR117_Cost Loading; CR117 WEIGHTAGE [3232.88 h] |  | UDF_G3 | 1 | GN | GENRL | ENA | GENL | GEN | GN | DS | GEN | 20 | CR |
|  | 6 | **AUTHORITY AND LEGAL REQUIREMENTS FOR BUILDING PLAN** |  | 2022-07-03 | 2022-11-05 |  |  |  |  |  |  |  |  |  |  |  |  |  |  |  |  |  |
|  | 1 | **SLA** |  | 2022-07-03 | 2022-07-23 |  |  |  |  |  |  |  |  |  |  |  |  |  |  |  |  |  |
| 17_DS11170 |  | Landowner's consent Submission & Approval | 21d | 2022-07-03 | 2022-07-23 | 17_DS10030 | 51d | 0d | CR117_Cost Loading; CR117 WEIGHTAGE [779.04 h] |  | UDF_G3 |  | GN | GENRL | ENA | GENL | GEN | GN | DS | GEN | 20 | CR |
|  | 10 | **NPARKS** |  | 2022-08-21 | 2022-10-01 |  |  |  |  |  |  |  |  |  |  |  |  |  |  |  |  |  |
| 17_DS11370 |  | Nparks - Development Clearance (if Any) Submission & Approval (15 Working Days - 3 Weeks) | 21d | 2022-08-21 | 2022-09-10 | 17_DS11180 | 65d | 0d | CR117_Cost Loading; CR117 WEIGHTAGE [1188 h] |  | UDF_G3 |  | GN | GENRL | ENA | GENL | GEN | GN | DS | GEN | 20 | CR |
| 17_DS11380 |  | Nparks - Building Plan (if Any) Submission & Approval (15 Working Days - 3 Weeks) | 21d | 2022-09-11 | 2022-10-01 | 17_DS11370 | 65d | 14d | CR117_Cost Loading; CR117 WEIGHTAGE [1188 h] |  | UDF_G3 |  | GN | GENRL | ENA | GENL | GEN | GN | DS | GEN | 20 | CR |
|  | 11 | **CAAS** |  | 2022-08-21 | 2022-09-03 |  |  |  |  |  |  |  |  |  |  |  |  |  |  |  |  |  |
| 17_DS11390 |  | CAAS - Obstacle Clearance Submission & Approval | 14d | 2022-08-21 | 2022-09-03 | 17_DS11180 | 93d | 42d | CR117_Cost Loading; CR117 WEIGHTAGE [779.04 h] |  | UDF_G3 |  | GN | GENRL | ENA | GENL | GEN | GN | DS | GEN | 20 | CR |
|  | 12 | **IMDA** |  | 2022-10-23 | 2022-11-05 |  |  |  |  |  |  |  |  |  |  |  |  |  |  |  |  |  |
| 17_DS11400 |  | IMDA - iDA & TFCC Telco Plan Submission & Approval | 14d | 2022-10-23 | 2022-11-05 | 17_DS11200 | 51d | 0d | CR117_Cost Loading; CR117 WEIGHTAGE [779.04 h] |  | UDF_G3 |  | GN | GENRL | ENA | GENL | GEN | GN | DS | GEN | 20 | CR |
|  | 2 | **URA** |  | 2022-07-24 | 2022-08-20 |  |  |  |  |  |  |  |  |  |  |  |  |  |  |  |  |  |
| 17_DS11180 |  | URA - Planning Permission Submission & Approval (Usual 20 Working Days - Prelim. Approval Obtained) | 28d | 2022-07-24 | 2022-08-20 | 17_DS11170 | 51d | 0d | CR117_Cost Loading; CR117 WEIGHTAGE [1596.96 h] |  | UDF_G3 |  | GN | GENRL | ENA | GENL | GEN | GN | DS | GEN | 20 | CR |
|  | 3 | **BCA** |  | 2022-08-21 | 2022-11-05 |  |  |  |  |  |  |  |  |  |  |  |  |  |  |  |  |  |
| 17_DS11190 |  | Registration of "Project Reference Number" with BCA (2 Weeks) | 14d | 2022-08-21 | 2022-09-03 | 17_DS11180 | 142d | 0d | CR117_Cost Loading; CR117 WEIGHTAGE [779.04 h] |  | UDF_G3 |  | GN | GENRL | ENA | GENL | GEN | GN | DS | GEN | 20 | CR |
| 17_DS11200 |  | BCA - Building Plan Submission & Approval (1 Week) | 7d | 2022-10-16 | 2022-10-22 | 17_DS11180, 17_DS11240, 17_DS11260, 17_DS11280, 17_DS11350, 17_DS11360, 17_DS11380, 17_DS11390, 17_DS11290 | 51d | 0d | CR117_Cost Loading [1110671]; CR117 WEIGHTAGE [8886.8 h] | 1,110,671.25 | UDF_G3 |  | GN | GENRL | ENA | GENL | GEN | GN | DS | GEN | 6 | CR |
| 17_DS11210 |  | Obtaining "Permit to Commence Structural Works" with BCA (2 Weeks) | 14d | 2022-10-23 | 2022-11-05 | 17_DS11200, 17_DS11220 | 100d | 10d | CR117_Cost Loading; CR117 WEIGHTAGE [779.04 h] |  | UDF_G3 |  | GN | GENRL | ENA | GENL | GEN | GN | DS | GEN | 20 | CR |
|  | 4 | **MOM** |  | 2022-09-04 | 2022-09-10 |  |  |  |  |  |  |  |  |  |  |  |  |  |  |  |  |  |
| 17_DS11220 |  | Registration of "Work Place Number" with MOM (7 Days) | 7d | 2022-09-04 | 2022-09-10 | 17_DS11190 | 142d | 42d | CR117_Cost Loading; CR117 WEIGHTAGE [370 h] |  | UDF_G3 |  | GN | GENRL | ENA | GENL | GEN | GN | DS | GEN | 20 | CR |
|  | 5 | **LTA** |  | 2022-08-21 | 2022-10-15 |  |  |  |  |  |  |  |  |  |  |  |  |  |  |  |  |  |
| 17_DS11230 |  | LTA (Vehicle Parking) - Development Clearance Submission & Approval | 28d | 2022-08-21 | 2022-09-17 | 17_DS11180 | 51d | 0d | CR117_Cost Loading; CR117 WEIGHTAGE [1596.96 h] |  | UDF_G3 |  | GN | GENRL | ENA | GENL | GEN | GN | DS | GEN | 20 | CR |
| 17_DS11240 |  | LTA (Street Works) - Building Plan Submission & Approval | 28d | 2022-09-18 | 2022-10-15 | 17_DS11230 | 51d | 0d | CR117_Cost Loading; CR117 WEIGHTAGE [1596.96 h] |  | UDF_G3 |  | GN | GENRL | ENA | GENL | GEN | GN | DS | GEN | 20 | CR |

| ID | WBS | Activity | Duration | Start | Finish | Predecessors | Total float | Free float | Resources | Cost | Check | PHASE | AREA | SUB-PHASE | SUB AREA | LOCATION | LOCATION DETAILS | MAJOR WORKS | SUB-LOCATION DETAILS | CR-117 - FOT | LINE | BOQ Item | Check 2 (Original Duration) |
| --- | --- | --- | --- | --- | --- | --- | --- | --- | --- | --- | --- | --- | --- | --- | --- | --- | --- | --- | --- | --- | --- | --- | --- |
|  | 6 | **NEA** |  | 2022-08-21 | 2022-10-15 |  |  |  |  |  |  |  |  |  |  |  |  |  |  |  |  |  |  |
| 17_DS11250 |  | NEA - Development Clearance Submission & Approval | 28d | 2022-08-21 | 2022-09-17 | 17_DS11180 | 51d | 0d | CR117_Cost Loading; CR117 WEIGHTAGE [1596.96 h] |  | UDF_G3 | GN | GENRL | ENA | GENL | GEN | GN | DS | GEN | 20 | CR |  |  |
| 17_DS11260 |  | NEA - Building Plan Submission & Approval | 28d | 2022-09-18 | 2022-10-15 | 17_DS11250 | 51d | 0d | CR117_Cost Loading; CR117 WEIGHTAGE [1596.96 h] |  | UDF_G3 | GN | GENRL | ENA | GENL | GEN | GN | DS | GEN | 20 | CR |  |  |
|  | 7 | **PUB** |  | 2022-08-21 | 2022-10-15 |  |  |  |  |  |  |  |  |  |  |  |  |  |  |  |  |  |  |
| 17_DS11270 |  | PUB (WSN) - Connection to Public Mains Submission & Approval | 28d | 2022-08-21 | 2022-09-17 | 17_DS11180 | 72d | 0d | CR117_Cost Loading; CR117 WEIGHTAGE [1596.96 h] |  | UDF_G3 | GN | GENRL | ENA | GENL | GEN | GN | DS | GEN | 20 | CR |  |  |
| 17_DS11280 |  | PUB (WRN) - Sanitary/Sewer Development Clearance Submission & Approval | 28d | 2022-08-21 | 2022-09-17 | 17_DS11180 | 72d | 0d | CR117_Cost Loading; CR117 WEIGHTAGE [1596.96 h] |  | UDF_G3 | GN | GENRL | ENA | GENL | GEN | GN | DS | GEN | 20 | CR |  |  |
| 17_DS11290 |  | PUB (C&W) - Drainage Development Clearance Submission & Approval | 28d | 2022-08-21 | 2022-09-17 | 17_DS11180 | 72d | 0d | CR117_Cost Loading; CR117 WEIGHTAGE [1596.96 h] |  | UDF_G3 | GN | GENRL | ENA | GENL | GEN | GN | DS | GEN | 20 | CR |  |  |
| 17_DS11300 |  | PUB (WRN) - Sanitary Detailed Plan Submission & Approval | 28d | 2022-09-18 | 2022-10-15 | 17_DS11270, 17_DS11280 | 72d | 21d | CR117_Cost Loading; CR117 WEIGHTAGE [1596.96 h] |  | UDF_G3 | GN | GENRL | ENA | GENL | GEN | GN | DS | GEN | 20 | CR |  |  |
| 17_DS11310 |  | PUB (C&W) - Drainage Detailed Plan Submission & Approval | 28d | 2022-09-18 | 2022-10-15 | 17_DS11290 | 72d | 21d | CR117_Cost Loading; CR117 WEIGHTAGE [1596.96 h] |  | UDF_G3 | GN | GENRL | ENA | GENL | GEN | GN | DS | GEN | 20 | CR |  |  |
|  | 8 | **SPPG** |  | 2022-08-21 | 2022-10-01 |  |  |  |  |  |  |  |  |  |  |  |  |  |  |  |  |  |  |
| 17_DS11320 |  | SPPG - Form CS1 Application for Connection to the Transmission System | 14d | 2022-08-21 | 2022-09-03 | 17_DS11180 | 86d | 0d | CR117_Cost Loading; CR117 WEIGHTAGE [779.04 h] |  | UDF_G3 | GN | GENRL | ENA | GENL | GEN | GN | DS | GEN | 20 | CR |  |  |
| 17_DS11330 |  | SPPG - Substation Submission & Approval | 28d | 2022-09-04 | 2022-10-01 | 17_DS11320 | 86d | 35d | CR117_Cost Loading; CR117 WEIGHTAGE [1596.96 h] |  | UDF_G3 | GN | GENRL | ENA | GENL | GEN | GN | DS | GEN | 20 | CR |  |  |
|  | 9 | **SCDF** |  | 2022-08-21 | 2022-10-15 |  |  |  |  |  |  |  |  |  |  |  |  |  |  |  |  |  |  |
| 17_DS11340 |  | SCDF (FSSD) - Fire Safety Plan Submission & Approval | 28d | 2022-08-21 | 2022-09-17 | 17_DS11180 | 51d | 0d | CR117_Cost Loading; CR117 WEIGHTAGE [1596.96 h] |  | UDF_G3 | GN | GENRL | ENA | GENL | GEN | GN | DS | GEN | 20 | CR |  |  |
| 17_DS11350 |  | SCDF (FSSD) - Fire Safety Works (Emergency Voice Com) Submission & Approval | 28d | 2022-09-18 | 2022-10-15 | 17_DS11340 | 51d | 0d | CR117_Cost Loading; CR117 WEIGHTAGE [1596.96 h] |  | UDF_G3 | GN | GENRL | ENA | GENL | GEN | GN | DS | GEN | 20 | CR |  |  |
| 17_DS11360 |  | SCDF (FSSD) - Fire Safety Works (HYD,HR,FA) Submission & Approval | 28d | 2022-09-18 | 2022-10-15 | 17_DS11340 | 51d | 0d | CR117_Cost Loading; CR117 WEIGHTAGE [1596.96 h] |  | UDF_G3 | GN | GENRL | ENA | GENL | GEN | GN | DS | GEN | 20 | CR |  |  |
|  | 3 | **PROCUREMENT / MANUFACTURING / FABRICATION** |  | 2022-12-22 | 2025-08-06 |  |  |  |  |  |  |  |  |  |  |  |  |  |  |  |  |  |  |
|  | 1 | **BORED TUNNEL** |  | 2022-12-22 | 2025-08-06 |  |  |  |  |  |  |  |  |  |  |  |  |  |  |  |  |  |  |
|  | 1 | **TBM - manufacture, testing and delivery** |  | 2023-03-09 | 2024-05-31 |  |  |  |  |  |  |  |  |  |  |  |  |  |  |  |  |  |  |
| 17_MF10250 |  | TBM Manufacturing Stage 1 (Procurement of raw material, manufacturing our key raw material) | 90d | 2023-03-09 | 2023-06-06 | 17_DS10110, 17_DS10550 | 181d | 0d | CR117_Cost Loading; CR117 WEIGHTAGE |  |  | MF | GENRL | MFG | GENL | GEN | GN | GN | GEN |  | CR |  |  |
| 17_MF10260 |  | TBM Manufacturing Stage 2 (Shop Dwg and Procurement of Raw Material) | 90d | 2023-06-07 | 2023-09-04 | 17_MF10250 | 181d | 0d | CR117_Cost Loading; CR117 WEIGHTAGE |  |  | MF | GENRL | MFG | GENL | GEN | GN | GN | GEN |  | CR |  |  |
| 17_MF10270 |  | TBM Manufacturing Stage 3 (manufacturing of TBM cutter-head and main shield) | 90d | 2023-09-05 | 2023-12-03 | 17_MF10260 | 181d | 0d | CR117 WEIGHTAGE; CR117_Cost Loading |  |  | MF | GENRL | MFG | GENL | GEN | GN | GN | GEN |  | CR |  |  |
| 17_MF10000 |  | TBM Manufacturing Final Stage (Assemble TBM) | 90d | 2023-12-04 | 2024-03-02 | 17_MF10270 | 181d | 0d | CR117_Cost Loading; CR117 WEIGHTAGE |  | UDF_G3 | MF | GENRL | MFG | GENL | GEN | GN | GN | GEN | 02 | CR | D3.2 | UDF_G3 |
| 17_MF10010 |  | TBM Factory Acceptance Test | 60d | 2024-03-03 | 2024-05-01 | 17_MF10000 | 181d | 0d | CR117_Cost Loading [971161]; CR117 WEIGHTAGE [1713.84 h] | 971,161 | UDF_G3 | MF | GENRL | MFG | GENL | GEN | GN | GN | GEN | 02 | CR | D3.2 | UDF_G3 |
| 17_MF10020 |  | TBM Delivery to Site | 30d | 2024-05-02 | 2024-05-31 | 17_MF10010 | 181d | 0d | CR117_Cost Loading [14567420]; CR117 WEIGHTAGE [26214.2 h] | 14,567,420 | UDF_G3 | MF | GENRL | MFG | GENL | GEN | GN | GN | GEN | 02 | CR | D3.2 | UDF_G3 |

| ID | WBS | Activity | Duration | Start | Finish | Predecessors | Total float | Free float | Resources | Cost | Check | PHASE | AREA | SUB-PHASE | SUB AREA | LOCATION | LOCATION DETAILS | MAJOR WORKS | SUB-LOCATION DETAILS | CR-117 - FOT | LINE |
| --- | --- | --- | --- | --- | --- | --- | --- | --- | --- | --- | --- | --- | --- | --- | --- | --- | --- | --- | --- | --- | --- |
|  | 2 | **Segment Production** |  | 2023-08-23 | 2025-08-06 |  |  |  |  |  |  |  |  |  |  |  |  |  |  |  |  |
| 17_MF10030 |  | Concrete Trail Mix and Approval | 31d | 2023-08-23 | 2023-09-22 | 17_DS10150 | 97d | 0d | CR117_Cost Loading; CR117 WEIGHTAGE [3232.88 h] |  | UDF_G3 | MF | GENRL | GEN | GENL | GEN | GN | GN | GEN | 20 | CR |
| 17_MF10040 |  | Procurement Pre-cast Segment Mould | 31d | 2023-08-23 | 2023-09-22 | 17_DS10150 | 97d | 0d | CR117_Cost Loading; CR117 WEIGHTAGE [3232.88 h] |  | UDF_G3 | MF | GENRL | PCM | GENL | GEN | GN | GN | GEN | 20 | CR |
| 17_MF10050 |  | Trial Samples (12 Weeks) | 84d | 2023-09-23 | 2023-12-15 | 17_MF10030, 17_MF10040 | 97d | 0d | CR117_Cost Loading; CR117 WEIGHTAGE [4868.88 h] |  | UDF_G3 | MF | GENRL | GEN | GENL | GEN | GN | GN | GEN | 20 | CR |
| 17_MF10130 |  | West Bound Tunnel PC Segments Fabrication Batch 1 | 90d | 2023-12-16 | 2024-03-14 | 17_MF10050, 17_DS10890 | 97d | 0d | CR117 WEIGHTAGE |  |  | MF | GENRL | FAB | GENL | WEB | GN | GN | GEN |  | CR |
| 17_MF10140 |  | West Bound Tunel PC Seqments Fabrication Batch 2 | 90d | 2024-03-15 | 2024-06-12 | 17_MF10130 | 97d | 0d | CR117 WEIGHTAGE |  |  | MF | GENRL | FAB | GENL | WEB | GN | GN | GEN |  | CR |
| 17_MF10150 |  | West Bound Tunnel PC Segments Fabrication Batch 3 | 90d | 2024-06-13 | 2024-09-10 | 17_MF10140 | 97d | 0d | CR117 WEIGHTAGE |  |  | MF | GENRL | FAB | GENL | WEB | GN | GN | GEN |  | CR |
| 17_MF10190 |  | West Bound Tunnel PC Segments Progressive Delivery | 90d | 2024-06-13 | 2024-09-10 | 17_MF10130, 17_MF10140 | 97d | 0d | CR117 WEIGHTAGE [25494.9 h]; CR117_Cost Loading [1846177] | 1,846,177 |  | MF | GENRL | FAB | GENL | WEB | GN | GN | GEN |  | CR |
| 17_MF10060 |  | West Bound Tunnel PC Segments FInal Delivery | 30d | 2024-09-11 | 2024-10-10 | 17_MF10150, 17_MF10190 | 97d | 0d | CR117_Cost Loading [791219]; CR117 WEIGHTAGE [10925.8 h] | 791,219 | UDF_G3 | MF | GENRL | FAB | GENL | WEB | GN | GN | GEN | 07 | CR |
| 17_MF10160 |  | East Bound Tunnel PC Segments Fabrication Batch 1 | 90d | 2024-10-11 | 2025-01-08 | 17_DS10890, 17_MF10050, 17_MF10060 | 97d | 0d | CR117 WEIGHTAGE |  |  | MF | GENRL | FAB | GENL | EAB | GN | GN | GEN |  | CR |
| 17_MF10170 |  | East Bound Tunnel PC Segments Fabrication Batch 2 | 90d | 2025-01-09 | 2025-04-08 | 17_MF10160 | 97d | 0d | CR117 WEIGHTAGE |  |  | MF | GENRL | FAB | GENL | EAB | GN | GN | GEN |  | CR |
| 17_MF10180 |  | East Bound Tunnel PC Segments Fabrication of Batch 3 | 90d | 2025-04-09 | 2025-07-07 | 17_MF10170 | 97d | 0d | CR117 WEIGHTAGE |  |  | MF | GENRL | FAB | GENL | EAB | GN | GN | GEN |  | CR |
| 17_MF10200 |  | East Bound Tunnel PC Segments Progressive Delivery | 90d | 2025-04-09 | 2025-07-07 | 17_MF10160, 17_MF10170 | 97d | 0d | CR117 WEIGHTAGE [25494.5 h]; CR117_Cost Loading [1846177] | 1,846,177 |  | MF | GENRL | FAB | GENL | EAB | GN | GN | GEN |  | CR |
| 17_MF10070 |  | East Bound Tunnel PC Segments Final Delivery | 30d | 2025-07-08 | 2025-08-06 | 17_MF10060, 17_MF10180, 17_MF10200 | 97d | 60d | CR117_Cost Loading [791219]; CR117 WEIGHTAGE [10926.4 h] | 791,219 | UDF_G3 | MF | GENRL | FAB | GENL | EAB | GN | GN | GEN | 07 | CR |
|  | 3 | **S/S - TEMPORARY 22kV ELECTRICAL SUBSTATION** |  | 2023-04-27 | 2023-11-22 |  |  |  |  |  |  |  |  |  |  |  |  |  |  |  |  |
| 17_MF10080 |  | Temporary 22kV S/S - Procument Process | 90d | 2023-04-27 | 2023-07-25 | 17_DS11130 | 159d | 0d | CR117_Cost Loading [241313]; CR117 WEIGHTAGE [4362.64 h] | 241,313 | UDF_G3 | MF | GENRL | PCM | GENL | GEN | GN | GN | GEN | 03 | CR |
| 17_MF10240 |  | Temporary 22KV S/S - Fabrication Process | 90d | 2023-07-26 | 2023-10-23 | 17_MF10080 | 159d | 0d | CR117 WEIGHTAGE [4362.64 h]; CR117_Cost Loading [241312] | 241,312 |  | MF | GENRL | FAB | GENL | GEN | GN | GN | GEN |  | CR |
| 17_MF10090 |  | Temporary 22kV S/S - Delivery to site | 30d | 2023-10-24 | 2023-11-22 | 17_MF10240 | 159d | 0d | CR117_Cost Loading [96525]; CR117 WEIGHTAGE [1713.84 h] | 96,525 | UDF_G3 | MF | GENRL | FAB | GENL | GEN | GN | GN | GEN | 03 | CR |
|  | 4 | **Slurry Treatment Plant (STP) FOR TBM** |  | 2022-12-22 | 2024-03-15 |  |  |  |  |  |  |  |  |  |  |  |  |  |  |  |  |
| 17_MF10210 |  | STP Equipment Procurement Process | 90d | 2022-12-22 | 2023-03-21 | 17_DS10630 | 261d | 0d | CR117 WEIGHTAGE |  |  | MF | GENRL | PCM | GENL | GEN | GN | GN | GEN |  | CR |
| 17_MF10220 |  | STP Equipement Fabrication Stage 1 | 90d | 2023-03-22 | 2023-06-19 | 17_MF10210 | 261d | 0d | CR117 WEIGHTAGE |  |  | MF | GENRL | FAB | GENL | GEN | GN | GN | GEN |  | CR |
| 17_MF10230 |  | STP Equipment Fabrication Stage 2 | 90d | 2023-06-20 | 2023-09-17 | 17_MF10220 | 261d | 0d | CR117 WEIGHTAGE |  |  | MF | GENRL | FAB | GENL | GEN | GN | GN | GEN |  | CR |
| 17_MF10100 |  | STP Equipment Final Stage Fabrication and FAT Process | 90d | 2023-09-18 | 2023-12-16 | 17_DS10630, 17_MF10230 | 261d | 0d | CR117_Cost Loading; CR117 WEIGHTAGE [3466.8 h] |  | UDF_G3 | MF | GENRL | FAB | GENL | GEN | GN | GN | GEN | 03 | CR |
| 17_MF10110 |  | STP equipment delivery to site | 90d | 2023-12-17 | 2024-03-15 | 17_MF10100 | 261d | 77d | CR117_Cost Loading [1544401]; CR117 WEIGHTAGE [24499.9 h] | 1,544,401 | UDF_G3 | MF | GENRL | FAB | GENL | GEN | GN | GN | GEN | 03 | CR |

| ID | WBS | Activity | Duration | Start | Finish | Predecessors | Total float | Free float | Resources | Cost | PHASE | AREA | SUB-PHASE | SUB AREA | LOCATION | LOCATION DETAILS | MAJOR WORKS | SUB-LOCATION DETAILS | LINE | Check | CR-117 - FOT | Text 1 | Text 3 | Text 2 | BOQ Item | Cr117 BSC Stn | Cr117 Handover | Check 2 (Original Duration) | Comments |
| --- | --- | --- | --- | --- | --- | --- | --- | --- | --- | --- | --- | --- | --- | --- | --- | --- | --- | --- | --- | --- | --- | --- | --- | --- | --- | --- | --- | --- | --- |
|  | 2 | **CD DOOR FOR SUBWAY LINK** |  | 2023-12-01 | 2024-07-17 |  |  |  |  |  |  |  |  |  |  |  |  |  |  |  |  |  |  |  |  |  |  |  |  |
| 17_MF10280 |  | CD Doors Procurement | 90d | 2023-12-01 | 2024-02-28 | 17_GN10050 | 467d | 0d | CR117 WEIGHTAGE; CR117_Cost Loading |  | MF | GENRL | PCM | GENL | GEN | GN | GN | GEN | CR |  |  |  |  |  |  |  |  |  |  |
| 17_MF10290 |  | CD Doors Fabrication Stage 1 | 90d | 2024-02-29 | 2024-05-28 | 17_MF10280 | 467d | 0d | CR117_Cost Loading; CR117 WEIGHTAGE |  | MF | GENRL | FAB | GENL | GEN | GN | GN | GEN | CR |  |  |  |  |  |  |  |  |  |  |
| 17_MF10120 |  | CD Doors Final Stage Fabrication | 50d | 2024-05-29 | 2024-07-17 | 17_MF10290 | 467d | 370d | CR117_Cost Loading; CR117 WEIGHTAGE [12230.6 h] |  | MF | GENRL | FAB | GENL | GEN | GN | GN | GEN | CR | UDF_G3 | 01 |  |  |  |  |  |  |  |  |
|  | 4 | **PRECONSTRUCTION** |  | 2022-04-27 | 2029-03-26 |  |  |  |  |  |  |  |  |  |  |  |  |  |  |  |  |  |  |  |  |  |  |  |  |
|  | 1 | **PRE-CONDITION AND POST-CONDITION SURVEY** |  | 2022-04-27 | 2029-03-26 |  |  |  |  |  |  |  |  |  |  |  |  |  |  |  |  |  |  |  |  |  |  |  |  |
| 17_PC10000 |  | Topographic Survey | 60d | 2022-04-27 | 2022-06-25 | 17_GN11220 | 37d | 0d | CR117_Cost Loading; CR117 WEIGHTAGE [2999.2 h] |  | GN | GENRL | ENA | GENL | GEN | GN | SI | GEN | CR | UDF_G3 | N/A | 1 | 1 | 2 | A.12 | 1 | 1 |  |  |
| 17_PC10010 |  | Pre-condition Survey | 90d | 2022-06-13 | 2022-09-10 | 17_GN11120, 17_GN11220, 17_GN11130, 17_GN11020 | 201d | 46d | CR117_Cost Loading [353465]; CR117 WEIGHTAGE [8420 h] | 353,465 | GN | GENRL | ENA | GENL | GEN | GN | SI | GEN | CR | UDF_G3 | 12 | 1 | 1 | 1 | A.12 |  |  |  |  |
| 17_PC10120 |  | Post-Condition Survey | 90d | 2028-12-27 | 2029-03-26 | 17_GN10120, 17_GN10110, 17_CN18750 | 144d | 96d | CR117 WEIGHTAGE [120.8 h]; CR117_Cost Loading [353465] | 353,465 | GN | GENRL | ENA | GENL | GEN | GN | SI | GEN | CR | UDF_G3 | 12 |  |  |  |  |  |  |  |  |
|  | 2 | **SITE OFFICE SETUP** |  | 2022-08-04 | 2022-11-01 |  |  |  |  |  |  |  |  |  |  |  |  |  |  |  |  |  |  |  |  |  |  |  |  |
| 17_PC10020 |  | Setting up Project Office ( Contractor) | 90d | 2022-08-04 | 2022-11-01 | 17_DS10650 | 17d | 0d | CR117_Cost Loading [1300000]; CR117 WEIGHTAGE [44914.3 h] | 1,300,000 | GN | GENRL | GEN | GENL | GEN | GN | GN | GEN | CR | UDF_G3 | 03 |  |  |  | A.03 |  |  |  |  |
| 17_PC10680 |  | Setting up Project Office (LTA ) | 90d | 2022-08-04 | 2022-11-01 | 17_DS10650 | 17d | 0d | CR117_Cost Loading [1300000]; CR117 WEIGHTAGE [44914.3 h] | 1,300,000 | GN | GENRL | GEN | GENL | GEN | GN | GN | GEN | CR | UDF_G3 | 03 |  |  |  | A.03 |  |  |  |  |
|  | 3 | **MOBILISATION AND PLANT SET UP** |  | 2022-04-27 | 2024-08-29 |  |  |  |  |  |  |  |  |  |  |  |  |  |  |  |  |  |  |  |  |  |  |  |  |
| 17_PC10030 |  | Mobilization of Soil Investigation Plant | 90d | 2022-04-27 | 2022-07-25 | 17_GN11220 | 102d | 0d | CR117_Cost Loading; CR117 WEIGHTAGE [1188 h] |  | GN | GENRL | GEN | GENL | GEN | GN | GN | GEN | CR | UDF_G3 | N/A | 1 | 1 | 1 |  |  |  | UDF_G2 |  |
| 17_PC10040 |  | Mobilization of Piling & Testing equipments, Kentledge etc., | 90d | 2022-08-02 | 2022-10-30 | 17_DS10040 | 80d | 0d | CR117_Cost Loading; CR117 WEIGHTAGE [1596.96 h] |  | GN | GENRL | GEN | GENL | GEN | GN | GN | GEN | CR | UDF_G3 | N/A |  |  |  |  |  |  |  |  |
| 17_PC10060 |  | Mobilisation of ERSS Equipment - Fissure Grouting Plant | 60d | 2022-11-16 | 2023-01-14 | 17_DS10290 | 165d | 67d | CR117_Cost Loading; CR117 WEIGHTAGE [1830.64 h] |  | GN | GENRL | GEN | GENL | GEN | GN | GN | GEN | CR | UDF_G3 | N/A |  |  |  |  |  |  |  |  |
| 17_PC10070 |  | Mobilisation of ERSS Equipment - Secant Bored Pile and Bored Pile Plant | 46d | 2022-11-16 | 2022-12-31 | 17_DS11210, 17_DS10670, 17_DS10290 | 90d | 21d | CR117_Cost Loading; CR117 WEIGHTAGE [3116.08 h] |  | GN | GENRL | GEN | GENL | GEN | GN | GN | GEN | CR | UDF_G3 | N/A | 1 | 1 | 1 |  |  |  |  |  |
| 17_PC10080 |  | Mobilisation of ERSS Equipment - Dwall Plant | 45d | 2022-11-25 | 2023-01-08 | 17_DS10700 | 109d | 72d | CR117_Cost Loading; CR117 WEIGHTAGE [3758.8 h] |  | GN | GENRL | GEN | GENL | GEN | GN | GN | GEN | CR | UDF_G3 | N/A |  |  |  |  |  |  |  |  |
| 17_PC10050 |  | Mobilisation of ERSS Equipment - GIW Plant (DCM/JGP RIGS) | 90d | 2022-11-26 | 2023-02-23 | 17_DS10590 | 227d | 84d | CR117_Cost Loading; CR117 WEIGHTAGE [3758.8 h] |  | GN | GENRL | GEN | GENL | GEN | GN | GN | GEN | CR | UDF_G3 | N/A |  |  |  |  |  |  |  |  |
| 17_PC10090 |  | Set Up Slurry Treatment Plant (STP) | 90d | 2024-06-01 | 2024-08-29 | 17_DS10110, 17_MF10020, 17_DS10630, 17_MF10110, 17_PC10320 | 184d | 147d | CR117_Cost Loading [337838]; GW (C&S) [840 h]; CR117 WEIGHTAGE [6095.76 h] | 337,838 | GN | GENRL | GEN | GENL | GEN | GN | GN | GEN | CR | UDF_G3 | 03 |  |  |  |  |  |  |  |  |
|  | 4 | **ADDITIONAL SOIL INVESTIGATION** |  | 2022-07-26 | 2023-08-31 |  |  |  |  |  |  |  |  |  |  |  |  |  |  |  |  |  |  |  |  |  |  |  |  |
|  | 1 | **ADDITIONAL SI** |  | 2022-07-26 | 2023-08-21 |  |  |  |  |  |  |  |  |  |  |  |  |  |  |  |  |  |  |  |  |  |  |  |  |
|  | 1 | **STAGE 0 DIVERSION - ADDITIONAL SI** |  | 2022-07-26 | 2022-09-11 |  |  |  |  |  |  |  |  |  |  |  |  |  |  |  |  |  |  |  |  |  |  |  |  |
| 17_PC10450 |  | Additional Soil Investigation at East C&C STG0 - 3 Nos (1 BH/ 6 day-rig) - 1st Rig | 18d | 2022-07-26 | 2022-08-12 | 17_PC10030 | 102d | 0d | CR117_Cost Loading; GW (C&S) [96 h]; CR117 WEIGHTAGE [662.16 h] |  | GN | GENRL | GEN | GENL | GEN | GN | GN | GEN | CR | UDF_G3 | N/A |  |  |  |  |  |  | UDF_G3 | 1 BH / 3 days (6 days / week) |
| 17_PC10460 |  | Additional Soil Investigation at West C&C STG0 - 7 Nos (1 BH/ 6 day-rig) - 4th Rig | 42d | 2022-07-26 | 2022-09-05 | 17_PC10030 | 148d | 0d | CR117_Cost Loading; GW (C&S) [296 h]; CR117 WEIGHTAGE [2122.8 h] |  | GN | GENRL | GEN | GENL | GEN | GN | GN | GEN | CR | UDF_G3 | N/A |  |  |  |  |  |  | UDF_G3 | 1 BH / 3 days (6 days / week) |
| 17_PC10520 |  | Additional SI for Tunnel Related - 9 Nos (1 BH / 6 day-rig) - 5th & 6th Rig | 27d | 2022-07-26 | 2022-08-21 | 17_PC10030 | 268d | 80d | CR117 WEIGHTAGE [27.2 h]; CR117_Cost Loading; GW (C&S) [216 h] |  | GN | GENRL | GEN | GENL | GEN | GN | GN | GEN | CR | UDF_G3 | N/A |  |  |  |  |  |  |  |  |
| 17_PC10440 |  | Additional Soil Investigation at Station Area STG0 - 10 Nos (1 BH/ 6 day-rig) - 2nd Rig & 3rd Rig | 30d | 2022-08-13 | 2022-09-11 | 17_PC10030, 17_PC10450 | 102d | 33d | CR117_Cost Loading; GW (C&S) [392 h]; CR117 WEIGHTAGE [2823.92 h] |  | GN | GENRL | GEN | GENL | GEN | GN | GN | GEN | CR | UDF_G3 | N/A | 1 | 1 | 1 |  |  |  | UDF_G3 | 1 BH / 3 days (6 days / week) |

| ID | WBS | Activity | Duration | Start | Finish | Predecessors | Total float | Free float | Resources | Comments | Check 2 (Original Duration) | Check | stage 1 | PHASE | AREA | SUB-PHASE | SUB AREA | LOCATION | LOCATION DETAILS | MAJOR WORKS | SUB-LOCATION DETAILS | CR-117 - FOT | LINE |
| --- | --- | --- | --- | --- | --- | --- | --- | --- | --- | --- | --- | --- | --- | --- | --- | --- | --- | --- | --- | --- | --- | --- | --- |
|  | 2 | **STAGE 1 DIVERSION - ADDITIONAL SI** |  | 2023-03-22 | 2023-04-02 |  |  |  |  |  |  |  |  |  |  |  |  |  |  |  |  |  |  |
| 17_PC10470 |  | Additional Soil Investigation at Underpass STG 1 - 2 Nos (1 BH/ 6 day-rig) - 1st rig | 12d | 2023-03-22 | 2023-04-02 | 17_PC10440, 17_PC10460, 17_CN10300 | 151d | 0d | CR117_Cost Loading; GW (C&S) [56 h]; CR117 WEIGHTAGE [370 h] | 1 BH / 3 days (6 days / week) | UDF_G3 | UDF_G3 | 1 | GN | GENRL | GEN | GENL | GEN | GN | GN | GEN | N/A | CR |
|  | 3 | **STAGE 2 DIVERSION - ADDITIONAL SI** |  | 2023-07-17 | 2023-08-03 |  |  |  |  |  |  |  |  |  |  |  |  |  |  |  |  |  |  |
| 17_PC10480 |  | Additional Soil Investigation at West C&C STG2 - 3 Nos (1 BH/ 6 day-rig) - 1st rig | 18d | 2023-07-17 | 2023-08-03 | 17_PC10470, 17_CN10010 | 46d | 0d | CR117_Cost Loading; GW (C&S) [88 h]; CR117 WEIGHTAGE [603.76 h] | 1 BH / 3 days (6 days / week) | UDF_G3 | UDF_G3 |  | GN | GENRL | GEN | GENL | GEN | GN | GN | GEN | N/A | CR |
|  | 4 | **LOCALISED LANE CLOSURE DIVERSION - ADDITIONAL SI** |  | 2022-11-01 | 2023-08-21 |  |  |  |  |  |  |  |  |  |  |  |  |  |  |  |  |  |  |
| 17_PC10500 |  | Additional Soil Investigation at East localised Lane Closure or Diversion) - 5 nos (1 BH/ 6 day-rig) - 4th Rig | 30d | 2022-11-01 | 2022-11-30 | 17_GN10580, 17_GN10590 | 80d | 49d | CR117_Cost Loading; GW (C&S) [144 h]; CR117 WEIGHTAGE [1012.72 h] | 1 BH / 3 days (6 days / week) | UDF_G3 | UDF_G3 |  | GN | GENRL | GEN | GENL | GEN | GN | GN | GEN | N/A | CR |
| 17_PC10490 |  | Additional Soil Investigation at Station localised Lane Closure or Diversion - 6 nos (1 BH/ 6 day-rig) - 5th Rig | 36d | 2023-07-17 | 2023-08-21 | 17_CN10010 | 41d | 4d | CR117_Cost Loading; GW (C&S) [168 h]; CR117 WEIGHTAGE [1188 h] | 1 BH / 3 days (6 days / week) | UDF_G3 | UDF_G3 |  | GN | GENRL | GEN | GENL | GEN | GN | GN | GEN | N/A | CR |
| 17_PC10510 |  | Additional Soil Investigation at Underpass localised Lane Closure or Diversion - 4 nos (1 BH/ 6 day-rig) - 1st & 2nd Rig | 12d | 2023-08-04 | 2023-08-15 | 17_PC10480 | 46d | 0d | CR117_Cost Loading; GW (C&S) [112 h]; CR117 WEIGHTAGE [779.04 h] | 1 BH / 3 days (6 days / week) | UDF_G3 | UDF_G3 |  | GN | GENRL | GEN | GENL | GEN | GN | GN | GEN | N/A | CR |
|  | 2 | **PROBING BOREHOLES** |  | 2022-09-06 | 2023-08-31 |  |  |  |  |  |  |  |  |  |  |  |  |  |  |  |  |  |  |
|  | 1 | **STAGE 0 DIVERSION - PROBING BOREHOLES** |  | 2022-09-06 | 2023-01-16 |  |  |  |  |  |  |  |  |  |  |  |  |  |  |  |  |  |  |
| 17_PC10560 |  | Probing Boreholes along ERSS at Station (Stage 0 - 26 No) (1 BH/ 4 day-rig) -1st & 2nd Rig | 52d | 2022-09-06 | 2022-10-27 | 17_PC10460 | 226d | 0d | CR117_Cost Loading; CR117 WEIGHTAGE [2648.64 h] | 1 BH / 3 days (6 days / week) | UDF_G3 | UDF_G3 |  | GN | GENRL | GEN | GENL | GEN | GN | GN | GEN | N/A | CR |
| 17_PC10570 |  | Probing Boreholes along ERSS at West C&C (Stage 0 - 20 No) (1 BH/ 4 day-rig) - 2nd rig | 80d | 2022-10-28 | 2023-01-15 | 17_PC10560 | 258d | 212d | CR117_Cost Loading; CR117 WEIGHTAGE [4050.96 h] | 1 BH / 3 days (6 days / week) | UDF_G3 | UDF_G3 |  | GN | GENRL | GEN | GENL | GEN | GN | GN | GEN | N/A | CR |
| 17_PC10580 |  | Probing Boreholes along ERSS at East C&C (Stage 0 - 13 No) (1 BH/ 4 day-rig) - 1st rig | 52d | 2022-11-01 | 2022-12-22 | 17_PC10560, 17_GN10600 | 222d | 0d | CR117_Cost Loading; CR117 WEIGHTAGE [2648.64 h] | 1 BH / 3 days (6 days / week) | UDF_G3 | UDF_G3 |  | GN | GENRL | GEN | GENL | GEN | GN | GN | GEN | N/A | CR |
| 17_PC10590 |  | Probing Boreholes along ERSS at Linkway (Stage 0 - 7 No) (1 BH/ 3.5 day-rig) - 1st Rig | 25d | 2022-12-23 | 2023-01-16 | 17_PC10580 | 257d | 211d | CR117_Cost Loading; CR117 WEIGHTAGE [1421.76 h] | 1 BH / 3 days (6 days / week) | UDF_G3 | UDF_G3 |  | GN | GENRL | GEN | GENL | GEN | GN | GN | GEN | N/A | CR |
|  | 2 | **STAGE 1 DIVERSION - PROBING BOREHOLES** |  | 2022-12-23 | 2023-04-22 |  |  |  |  |  |  |  |  |  |  |  |  |  |  |  |  |  |  |
| 17_PC10620 |  | Probing Boreholes along ERSS at East C&C (Stage 1 - 10 No) (1 BH/ 4 day-rig) - 3rd Rig | 40d | 2022-12-23 | 2023-01-31 | 17_PC10580, 17_GN10600, 17_GN10580 | 222d | 61d | CR117_Cost Loading; CR117 WEIGHTAGE [2006 h] | 1 BH / 3 days (6 days / week) | UDF_G3 | UDF_G3 |  | GN | GENRL | GEN | GENL | GEN | GN | GN | GEN | N/A | CR |
| 17_PC10600 |  | Probing Boreholes along ERSS at Station (Stage 1 - 1 No) (1 BH/ 4 day-rig) - 1st Rig | 4d | 2023-04-03 | 2023-04-06 | 17_PC10470, 17_PC10620 | 161d | 0d | CR117_Cost Loading; CR117 WEIGHTAGE [194.72 h] | 1 BH / 3 days (6 days / week) | UDF_G3 | UDF_G3 |  | GN | GENRL | GEN | GENL | GEN | GN | GN | GEN | N/A | CR |
| 17_PC10610 |  | Probing Boreholes along ERSS at Underpass (Stage 1 - 4 No) (1 BH/ 4 day-rig) - 3rd Rig | 16d | 2023-04-07 | 2023-04-22 | 17_PC10600 | 161d | 115d | CR117_Cost Loading; CR117 WEIGHTAGE [779.04 h] | 1 BH / 3 days (6 days / week) | UDF_G3 | UDF_G3 |  | GN | GENRL | GEN | GENL | GEN | GN | GN | GEN | N/A | CR |
|  | 3 | **STAGE 2 DIVERSION - PROBING BOREHOLES** |  | 2023-07-17 | 2023-08-05 |  |  |  |  |  |  |  |  |  |  |  |  |  |  |  |  |  |  |
| 17_PC10630 |  | Probing Boreholes along ERSS at West C&C (Stage 2 - 5 No) (1 BH/ 4 day-rig) - 2nd Rig | 20d | 2023-07-17 | 2023-08-05 | 17_CN10010 | 93d | 10d | CR117_Cost Loading; CR117 WEIGHTAGE [1012.72 h] | 1 BH / 3 days (6 days / week) | UDF_G3 | UDF_G3 |  | GN | GENRL | GEN | GENL | GEN | GN | GN | GEN | N/A | CR |
| 17_PC10640 |  | Probing Boreholes along ERSS at Linkway (Stage 2 - 5 No) (1 BH/ 4 day-rig) - 3rd Rig | 20d | 2023-07-17 | 2023-08-05 | 17_CN10010 | 89d | 10d | CR117_Cost Loading; CR117 WEIGHTAGE [1012.72 h] | 1 BH / 3 days (6 days / week) | UDF_G3 | UDF_G3 |  | GN | GENRL | GEN | GENL | GEN | GN | GN | GEN | N/A | CR |
|  | 4 | **STAGE 3A LOCALISED 1 LANE CLOSURE - PROBING BOREHOLES** |  | 2023-07-17 | 2023-08-31 |  |  |  |  |  |  |  |  |  |  |  |  |  |  |  |  |  |  |
| 17_PC10650 |  | Probing Boreholes along ERSS at Station (Localised Lane Closure / Diverion - 40 No) (1 BH/ 4 day-rig) - with 4 Rigs | 40d | 2023-07-17 | 2023-08-25 | 17_CN10010 | 37d | 0d | CR117_Cost Loading; CR117 WEIGHTAGE [3057.6 h] | 1 BH / 3 days (6 days / week) | UDF_G3 | UDF_G3 |  | GN | GENRL | GEN | GENL | GEN | GN | GN | GEN | N/A | CR |
| 17_PC10660 |  | Probing Boreholes along ERSS at Underpass ((Localised Lane Closure / Diverion -8 No) (1 BH/ 4 day-rig) - 2nd &3rd Rigs | 16d | 2023-08-16 | 2023-08-31 | 17_PC10510, 17_PC10640 | 79d | 33d | CR117_Cost Loading; CR117 WEIGHTAGE [779.04 h] | 1 BH / 3 days (6 days / week) | UDF_G3 | UDF_G3 |  | GN | GENRL | GEN | GENL | GEN | GN | GN | GEN | N/A | CR |
| 17_PC10670 |  | Probing Boreholes along ERSS at West C&C (Localised Lane Closure / Diverion- 3 No) (1 BH/ 4 day-rig) - 1st rig | 12d | 2023-08-16 | 2023-08-27 | 17_PC10510, 17_PC10630 | 83d | 37d | CR117_Cost Loading; CR117 WEIGHTAGE [603.76 h] | 1 BH / 3 days (6 days / week) | UDF_G3 | UDF_G3 |  | GN | GENRL | GEN | GENL | GEN | GN | GN | GEN | N/A | CR |

| ID | WBS | Activity | Duration | Start | Finish | Predecessors | Total float | Free float | Resources | Cost | Check | PHASE | AREA | SUB-PHASE | SUB AREA | LOCATION | LOCATION DETAILS | MAJOR WORKS | SUB-LOCATION DETAILS | CR-117 - FOT | LINE | Comments | Check 2 (Original Duration) | BOQ Item |
| --- | --- | --- | --- | --- | --- | --- | --- | --- | --- | --- | --- | --- | --- | --- | --- | --- | --- | --- | --- | --- | --- | --- | --- | --- |
|  | 5 | **BORED PILE TESTING** |  | 2022-10-31 | 2023-01-21 |  |  |  |  |  |  |  |  |  |  |  |  |  |  |  |  |  |  |  |
| 17_PC10140 |  | Installation of Preliminary Test Piles | 35d | 2022-10-31 | 2022-12-04 | 17_PC10040 | 80d | 3d | CR117_Cost Loading; GW (C&S) [192 h]; CR117 WEIGHTAGE [1363.28 h] |  | UDF_G3 | IN | GENRL | ENA | GENL | GEN | GN | PT | GEN | N/A | CR |  |  |  |
| 17_PC10150 |  | Bored Pile Load Tests (4 Weeks) | 45d | 2022-12-08 | 2023-01-21 | 17_PC10260, 17_PC10140 | 77d | 0d | CR117_Cost Loading; GW (C&S) [224 h]; CR117 WEIGHTAGE [1596.96 h] |  | UDF_G3 | CN | GENRL | ENA | GENL | GEN | GN | PT | GEN | N/A | CR |  |  |  |
|  | 6 | **S/S - TEMPORARY 22kV ELECTRICAL SUBSTATION** |  | 2023-05-19 | 2024-08-03 |  |  |  |  |  |  |  |  |  |  |  |  |  |  |  |  |  |  |  |
| 17_PC10160 |  | Temporary 22kV S/S - Construction of Substation | 90d | 2023-05-19 | 2023-08-16 | 17_GN10020, 17_PC10300, 17_DS11130 | 257d | 98d | CR117_Cost Loading [540540]; GW (C&S) [1344 h]; CR117 WEIGHTAGE [9776.72 h] | 540,540 | UDF_G3 | CN | GENRL | ENA | GENL | GEN | GN | GN | GEN | 03 | CR | Own Estimate | UDF_G3 |  |
| 17_PC10170 |  | Temporary 22kV S/S - Substation Equipment Installation (5 weeks) | 75d | 2023-11-23 | 2024-02-05 | 17_MF10090, 17_PC10160 | 159d | 0d | CR117_Cost Loading [112613]; GW (M&E) [280 h]; CR117 WEIGHTAGE [2006 h] | 112,613 | UDF_G3 | CN | GENRL | ENA | GENL | GEN | GN | GN | GEN | 03 | CR | Own Estimate | UDF_G3 |  |
| 17_PC10180 |  | Temporary 22kV S/S - Handover SubStation to SPG (4 Weeks) | 60d | 2024-02-06 | 2024-04-05 | 17_PC10170, 17_MF10090 | 159d | 0d | CR117_Cost Loading [90090]; GW (M&E) [224 h]; CR117 WEIGHTAGE [1596.96 h] | 90,090 | UDF_G3 | CN | GENRL | ENA | GENL | GEN | GN | GN | GEN | 03 | CR | Own Estimate | UDF_G3 |  |
| 17_PC10190 |  | Temporary 22kV S/S - Equipment Installation and Cablling by SPG | 90d | 2024-04-06 | 2024-07-04 | 17_PC10180 | 159d | 0d | CR117_Cost Loading [540540]; CR117 WEIGHTAGE [9776.72 h] | 540,540 | UDF_G3 | CN | GENRL | ENA | GENL | GEN | GN | GN | GEN | 03 | CR | Own Estimate | UDF_G3 |  |
| 17_PC10200 |  | Temporary 22kV S/S - Testing, Commissioning & Power Turn On (3 months before TBM launching) | 30d | 2024-07-05 | 2024-08-03 | 17_PC10190 | 159d | 122d | CR117_Cost Loading [96525]; GW (M&E) [240 h]; CR117 WEIGHTAGE [1713.84 h] | 96,525 | UDF_G3 | CN | GENRL | ENA | GENL | GEN | GN | GN | GEN | 03 | CR | Own Estimate | UDF_G3 |  |
|  | 7 | **SITE PREPARATION WORKS** |  | 2022-06-26 | 2024-01-02 |  |  |  |  |  |  |  |  |  |  |  |  |  |  |  |  |  |  |  |
|  | 1 | **SITE INVESTIGATION / UTILITIES DETECTION** |  | 2022-06-26 | 2022-07-25 |  |  |  |  |  |  |  |  |  |  |  |  |  |  |  |  |  |  |  |
| 17_PC10210 |  | Site Investigation Works | 30d | 2022-06-26 | 2022-07-25 | 17_PC10000 | 65d | 5d | CR117_Cost Loading; CR117 WEIGHTAGE [428.48 h] |  | UDF_G3 | GN | GENRL | ENA | GENL | GEN | GN | GN | GEN | N/A | CR |  |  |  |
| 17_PC10220 |  | Utilities Detection | 30d | 2022-06-26 | 2022-07-25 | 17_PC10000 | 65d | 5d | CR117_Cost Loading; GW (M&E) [280 h]; CR117 WEIGHTAGE [2006 h] |  | UDF_G3 | GN | GENRL | ENA | GENL | GEN | GN | GN | GEN | N/A | CR |  |  |  |
|  | 2 | **SITE HOARDINGS, NOISE BARRIER** |  | 2022-08-04 | 2022-10-26 |  |  |  |  |  |  |  |  |  |  |  |  |  |  |  |  |  |  |  |
| 17_PC10230 |  | Erection of Hoardings, Noise Barriers (All Areas before Traffic Divesion Stage 1) (12 Weeks) | 84d | 2022-08-04 | 2022-10-26 | 17_DS10650 | 77d | 0d | CR117_Cost Loading [1385501]; GW (C&S) [672 h]; CR117 WEIGHTAGE [4868.88 h] | 1,385,501 | UDF_G3 | GN | GENRL | ENA | GENL | GEN | GN | GN | GEN | 06 | CR |  |  | A.06 |
|  | 3 | **SITE CLEARANCE WORKS** |  | 2022-10-27 | 2023-02-17 |  |  |  |  |  |  |  |  |  |  |  |  |  |  |  |  |  |  |  |
| 17_PC10240 |  | Trees Felling to enable work start | 32d | 2022-10-27 | 2022-11-27 | 17_PC10230, 17_PC10010 | 155d | 10d | CR117_Cost Loading; CR117 WEIGHTAGE [1830.64 h] |  | UDF_G3 | GN | GENRL | ENA | GENL | GEN | GN | GN | GEN | N/A | CR |  |  |  |
| 17_PC10250 |  | Clearing and Preparing to Working Levels | 70d | 2022-12-10 | 2023-02-17 | 17_DS11070, 17_PC10240 | 143d | 0d | CR117_Cost Loading; GW (C&S) [560 h]; CR117 WEIGHTAGE [4050.96 h] |  | UDF_G3 | GN | GENRL | ENA | GENL | GEN | GN | GN | GEN | N/A | CR |  |  |  |
|  | 4 | **ECM SETUP** |  | 2022-10-27 | 2022-12-07 |  |  |  |  |  |  |  |  |  |  |  |  |  |  |  |  |  |  |  |
| 17_PC10260 |  | ECM Setup &Temporary Drains construction (6 Weeks) | 42d | 2022-10-27 | 2022-12-07 | 17_GN11090, 17_GN11110, 17_PC10230 | 77d | 0d | CR117_Cost Loading; GW (C&S) [336 h]; CR117 WEIGHTAGE [2414.96 h] |  | UDF_G3 | GN | GENRL | ENA | GENL | GEN | GN | GN | GEN | 10 | CR |  |  |  |
|  | 6 | **WORKING AND STORAGE AREAS** |  | 2022-12-08 | 2023-05-18 |  |  |  |  |  |  |  |  |  |  |  |  |  |  |  |  |  |  |  |
| 17_PC10290 |  | Internal Site access routes and drainage | 56d | 2022-12-08 | 2023-02-01 | 17_PC10240, 17_PC10260 | 159d | 16d | CR117_Cost Loading; GW (C&S) [448 h]; CR117 WEIGHTAGE [3232.88 h] |  | UDF_G3 | GN | GENRL | ENA | GENL | GEN | GN | GN | GEN | N/A | CR |  |  |  |
| 17_PC10300 |  | Site Facilities, Guard House and Storage Areas | 90d | 2023-02-18 | 2023-05-18 | 17_PC10250, 17_PC10290, 17_DS11080 | 143d | 0d | CR117_Cost Loading; GW (C&S) [840 h]; CR117 WEIGHTAGE [6095.76 h] |  | UDF_G3 | GN | GENRL | ENA | GENL | GEN | GN | GN | GEN | 03 | CR |  |  |  |
|  | 7 | **STP AREA PREPARATION** |  | 2023-05-19 | 2023-08-01 |  |  |  |  |  |  |  |  |  |  |  |  |  |  |  |  |  |  |  |
| 17_PC10310 |  | STP: Piling for STP Area | 45d | 2023-05-19 | 2023-07-02 | 17_PC10300 | 488d | 0d | CR117_Cost Loading [144788]; GW (C&S) [360 h]; CR117 WEIGHTAGE [2590.24 h] | 144,788 | UDF_G3 | GN | GENRL | ENA | GENL | GEN | GN | GN | GEN | 03 | CR |  |  |  |
| 17_PC10320 |  | STP: Slab for STP | 30d | 2023-07-03 | 2023-08-01 | 17_PC10310 | 488d | 304d | CR117_Cost Loading [96525]; GW (C&S) [240 h]; CR117 WEIGHTAGE [1713.84 h] | 96,525 | UDF_G3 | GN | GENRL | ENA | GENL | GEN | GN | GN | GEN | 03 | CR |  |  |  |

| ID | WBS | Activity | Type | Duration | Start | Finish | Predecessors | Total float | Free float | Resources | Check | PHASE | AREA | SUB-PHASE | SUB AREA | LOCATION | LOCATION DETAILS | MAJOR WORKS | SUB-LOCATION DETAILS | CR-117 - FOT | LINE | Comments | BOQ Item | Check 2 (Original Duration) | stage 1 | KEY DATES / MILESTONES | Text 2 | Cr117 BSC Stn | Cr117 Handover | Text 1 | Text 3 |
| --- | --- | --- | --- | --- | --- | --- | --- | --- | --- | --- | --- | --- | --- | --- | --- | --- | --- | --- | --- | --- | --- | --- | --- | --- | --- | --- | --- | --- | --- | --- | --- |
|  | 5 | **RECHARGING WELLS** |  |  | 2023-07-17 | 2024-01-02 |  |  |  |  |  |  |  |  |  |  |  |  |  |  |  |  |  |  |  |  |  |  |  |  |  |
| 17_PC10270 |  | Recharge Wells at Area West C&C Tunnel |  | 49d | 2023-07-17 | 2023-09-03 | 17_CN14530 | 81d | 40d | CR117_Cost Loading; GW (C&S) [392 h]; CR117 WEIGHTAGE [2823.92 h] | UDF_G3 | GN | GENRL | ENA | GENL | GEN | GN | GN | GEN | N/A | CR |  |  |  |  |  |  |  |  |  |  |
| 17_PC10280 |  | Recharge Wells at Area Station and East C&C Tunnel (14 Weeks) |  | 98d | 2023-09-27 | 2024-01-02 | 17_CN10340 | 144d | 84d | CR117_Cost Loading; GW (C&S) [784 h]; CR117 WEIGHTAGE [5686.8 h] | UDF_G3 | GN | GENRL | ENA | GENL | GEN | GN | GN | GEN | N/A | CR |  |  |  |  |  |  |  |  |  |  |
|  | 5 | **CONSTRUCTION** |  |  | 2022-07-31 | 2029-12-16 |  |  |  |  |  |  |  |  |  |  |  |  |  |  |  |  |  |  |  |  |  |  |  |  |  |
|  | 1 | **TRAFFIC / ROAD DIVERSION** |  |  | 2023-02-13 | 2029-11-27 |  |  |  |  |  |  |  |  |  |  |  |  |  |  |  |  |  |  |  |  |  |  |  |  |  |
|  | 1 | **STAGE 1 - CONSTRUCTION OF DIVERTED ROAD** |  |  | 2023-02-13 | 2023-03-21 |  |  |  |  |  |  |  |  |  |  |  |  |  |  |  |  |  |  |  |  |  |  |  |  |  |
| 17_CN10000 |  | Diversion Road Stage 1-1 - Open to Traffic at East C&C | milestone | 0d | 2023-02-13 | 2023-02-13 | 17_CN14420, 17_CN10260, 17_DS10940 | 190d | 153d |  | UDF_G3 | CN | CRBRH | ENA | GENL | GEN | GN | RD | TD1 | N/A | CR | Milestone | A.07 | UDF_G3 | 1 | MS |  |  |  |  |  |
| 17_CN10300 |  | Diversion Road Stage 1-2 - Open To Traffic at West C&C | milestone | 0d | 2023-03-21 | 2023-03-21 | 17_CN15110 | 37d | 0d |  |  | CN | CRBRH | ENA | GENL | GEN | GN | RD | TD1 |  | CR |  |  |  |  | MS | 2 | 1 | 1 |  |  |
|  | 2 | **STAGE 2 - CONSTRUCTION OF DIVERTED ROAD** |  |  | 2023-07-16 | 2023-10-20 |  |  |  |  |  |  |  |  |  |  |  |  |  |  |  |  |  |  |  |  |  |  |  |  |  |
| 17_CN10010 |  | Diversion Road Stage 2 - Open to Traffic at East - Subway Link beside T211 Entrance | milestone | 0d | 2023-07-16 | 2023-07-16 | 17_CN14530, 17_DS10950, 17_CN10000 | 37d | 0d |  | UDF_G3 | CN | CRBRH | ENA | GENL | GEN | GN | RD | TD2 | N/A | CR | Milestone | A.07 | UDF_G3 |  | MS |  |  | 1 |  |  |
| 17_CN10020 |  | Diversion Road Stage 2 - Open to Traffic at West - both bound swing toward north along Sin Ming Walk (SMW) | milestone | 0d | 2023-10-20 | 2023-10-20 | 17_CN15320, 17_DS10950, 17_CN10000, 17_GN10780, 17_GN10790, 17_GN10830 | 41d | 0d |  | UDF_G3 | CN | CRBRH | ENA | GENL | GEN | GN | RD | TD2 | N/A | CR | Milestone | A.07 | UDF_G3 |  | MS | 2 | 1 |  |  |  |
|  | 3 | **STAGE 3A - CONSTRUCTION OF DIVERTED ROAD** |  |  | 2023-11-05 | 2024-03-17 |  |  |  |  |  |  |  |  |  |  |  |  |  |  |  |  |  |  |  |  |  |  |  |  |  |
| 17_CN10030 |  | Diversion Road Stage 3A - Open to Traffic at East C&C, Blk408CP & BRH diversion and Subway link for new alignment of Sin | milestone | 0d | 2023-11-05 | 2023-11-05 | 17_CN10340, 17_DS10960, 17_CN12010, 17_CN14630 | 37d | 0d |  | UDF_G3 | CN | CRBRH | ENA | GENL | GEN | GN | RD | TD3A | N/A | CR | Milestone | A.07 | UDF_G3 |  | MS | 1 |  | 1 | 1 | 1 |
| 17_CN10040 |  | Diversion Road Stage 3A - Open to Traffic at West - west bound swing toward south along Sin Ming Walk (SMW) | milestone | 0d | 2024-03-17 | 2024-03-17 | 17_DS10960, 17_CN15500 | 86d | 0d |  | UDF_G3 | CN | CRBRH | ENA | GENL | GEN | GN | RD | TD3A | N/A | CR | Milestone | A.07 | UDF_G3 |  | MS |  |  |  |  |  |
|  | 4 | **STAGE 3B - CONSTRUCTION OF DIVERTED ROAD** |  |  | 2024-03-07 | 2024-04-01 |  |  |  |  |  |  |  |  |  |  |  |  |  |  |  |  |  |  |  |  |  |  |  |  |  |
| 17_CN10050 |  | Diversion Road Stage 3B - Open to Traffic at East - TTA Temple access localised diversion | milestone | 0d | 2024-03-07 | 2024-03-07 | 17_CN10550, 17_DS10960 | 40d | 0d |  | UDF_G3 | CN | CRBRH | ENA | GENL | GEN | GN | RD | TD3B | N/A | CR | Milestone | A.07 | UDF_G3 |  | MS |  |  |  | 1 |  |
| 17_CN10060 |  | Diversion Road Stage 3B - Open to Traffic at East - Bright Hill Rd localised diversion | milestone | 0d | 2024-04-01 | 2024-04-01 | 17_CN12370, 17_DS10960 | 50d | 0d |  | UDF_G3 | CN | CRBRH | ENA | GENL | GEN | GN | RD | TD3B | N/A | CR | Milestone | A.07 | UDF_G3 |  | MS |  |  |  |  |  |
|  | 5 | **STAGE 4 - CONSTRUCTION OF DIVERTED ROAD** |  |  | 2024-05-26 | 2024-07-27 |  |  |  |  |  |  |  |  |  |  |  |  |  |  |  |  |  |  |  |  |  |  |  |  |  |
| 17_CN10080 |  | Diversion Road Stage 4 - Open to Traffic at East - Diversion on traffic deck near TTA Temple for excavation at launch sh | milestone | 0d | 2024-05-26 | 2024-05-26 | 17_CN10630, 17_DS10970 | 37d | 0d |  | UDF_G3 | CN | CRBRH | ENA | GENL | GEN | GN | RD | TD4 | N/A | CR | Milestone | A.07 | UDF_G3 |  | MS |  |  | 1 | 1 |  |
| 17_CN10070 |  | Diversion Road Stage 4 - Open to Traffic at West - both bound swing back south Along Sin Ming Walk (SMW) | milestone | 0d | 2024-06-30 | 2024-06-30 | 17_CN15610, 17_DS10970 | 86d | 0d |  | UDF_G3 | CN | CRBRH | ENA | GENL | GEN | GN | RD | TD4 | N/A | CR | Milestone | A.07 | UDF_G3 |  | MS | 2 |  |  |  | 1 |
| 17_CN10090 |  | Diversion Road Stage 4 - Open to Traffic at East - Diversion on traffic deck for BRH & Blk408CP access rd | milestone | 0d | 2024-07-27 | 2024-07-27 | 17_CN12450, 17_DS10970 | 50d | 0d |  | UDF_G3 | CN | CRBRH | ENA | GENL | GEN | GN | RD | TD4 | N/A | CR | Milestone | A.07 | UDF_G3 |  | MS |  |  |  |  |  |
|  | 6 | **STAGE 5 - CONSTRUCTION OF DIVERTED ROAD** |  |  | 2026-04-06 | 2026-09-20 |  |  |  |  |  |  |  |  |  |  |  |  |  |  |  |  |  |  |  |  |  |  |  |  |  |
| 17_CN10100 |  | Diversion Road Stage 5 - Open to Traffic at West - both bound swing back North along Sin Ming Walk (SMW) | milestone | 0d | 2026-04-06 | 2026-04-06 | 17_CN16110, 17_CN16200, 17_CN16290, 17_CN15660, 17_DS10980 | 86d | 0d |  | UDF_G3 | CN | CRBRH | ENA | GENL | GEN | GN | RD | TD5 | N/A | CR | Milestone | A.07 | UDF_G3 |  | MS | 2 |  |  |  |  |
| 17_CN10110 |  | Diversion Road Stage 5 - Open to Traffic at Station - Diversion away from traffic deck for BRH & Blk408CP access rd aft | milestone | 0d | 2026-06-23 | 2026-06-23 | 17_CN12550, 17_DS10980 | 50d | 0d |  | UDF_G3 | CN | CRBRH | ENA | GENL | GEN | GN | RD | TD5 | N/A | CR | Milestone | A.07 | UDF_G3 |  | MS |  |  |  |  |  |
| 17_CN10120 |  | Diversion Road Stage 5 - Open to Traffic at East - Diversion on traffic deck at Launching shaft after backfilling | milestone | 0d | 2026-09-20 | 2026-09-20 | 17_DS10980, 17_CN10700 | 40d | 0d |  | UDF_G3 | CN | CRBRH | ENA | GENL | GEN | GN | RD | TD5 | N/A | CR | Milestone | A.07 | UDF_G3 |  | MS |  |  |  | 1 |  |

| ID | WBS | Activity | Type | Duration | Start | Finish | Predecessors | Total float | Free float | Resources | Cost | Text 2 | Comments | BOQ Item | Check 2 (Original Duration) | Check | PHASE | KEY DATES / MILESTONES | AREA | SUB-PHASE | SUB AREA | LOCATION | LOCATION DETAILS | MAJOR WORKS | SUB-LOCATION DETAILS | CR-117 - FOT | LINE | Text 1 | Cr117 Handover | user_text1 | SBP and KP |
| --- | --- | --- | --- | --- | --- | --- | --- | --- | --- | --- | --- | --- | --- | --- | --- | --- | --- | --- | --- | --- | --- | --- | --- | --- | --- | --- | --- | --- | --- | --- | --- |
|  | 7 | **STAGE 6 (SMW) - CONSTRUCTION OF DIVERTED ROAD** |  |  | 2026-11-06 | 2026-11-06 |  |  |  |  |  |  |  |  |  |  |  |  |  |  |  |  |  |  |  |  |  |  |  |  |  |
| 17_CN10130 |  | Diversion Road Stage 6 - Open to Traffic at West - Final re-alignment of Sin Ming Walk (SMW) after removal traffic deck | milestone | 0d | 2026-11-06 | 2026-11-06 | 17_CN15720, 17_DS10990, 17_GN10980, 17_GN10970, 17_GN10960 | 86d | 0d |  |  | 2 | Milestone | A.07 | UDF_G3 | UDF_G3 | CN | MS | CRBRH | ENA | GENL | GEN | GN | RD | TD6 | N/A | CR |  |  |  |  |
|  | 8 | **STAGE 6 (SMA) - CONSTRUCTION OF DIVERTED ROAD** |  |  | 2026-10-28 | 2027-01-19 |  |  |  |  |  |  |  |  |  |  |  |  |  |  |  |  |  |  |  |  |  |  |  |  |  |
| 17_CN10150 |  | Diversion Road Stage 6 - Reinstate of original alignment of SMA ready along station at T211 Entrance 6entre median | milestone | 0d | 2026-10-28 | 2026-10-28 | 17_GN10860, 17_GN10870, 17_GN10880, 17_GN10900, 17_GN10910, 17_GN10920, 17_GN10930, 17_CN12570, 17_DS10990, 17_CN15050 | 95d | 55d |  |  |  | Milestone | A.07 | UDF_G3 | UDF_G3 | CN | MS | CRBRH | ENA | GENL | GEN | GN | RD | TD6 | N/A | CR |  |  |  |  |
| 17_CN10140 |  | Diversion Road Stage 6 - Reinstate of original alignment of junction at SMW and SWA | milestone | 0d | 2026-11-06 | 2026-11-06 | 17_CN10130 | 86d | 46d |  |  |  | Milestone | A.07 | UDF_G3 | UDF_G3 | CN | MS | CRBRH | ENA | GENL | GEN | GN | RD | TD6 | N/A | CR |  |  |  |  |
| 17_CN10160 |  | Diversion Road Stage 6 - Reinstate of original alignment of SMA ready along East C&C | milestone | 0d | 2026-12-21 | 2026-12-21 | 17_CN10710, 17_GN10880, 17_GN10890, 17_GN10920, 17_GN10930, 17_DS10990, 17_CN10720 | 41d | 1d |  |  |  | Milestone | A.07 | UDF_G3 | UDF_G3 | CN | MS | CRBRH | ENA | GENL | GEN | GN | RD | TD6 | N/A | CR | 1 |  |  |  |
| 17_CN10170 |  | Diversion Road Stage 6 - Paving and street furniture for SMA original alignment (2 Weeks) |  | 14d | 2026-12-23 | 2027-01-05 | 17_CN10150, 17_CN10160, 17_CN10140, 17_GN10720, 17_GN10730, 17_GN10740, 17_GN10750, 17_GN10760, 17_GN10770, 17_GN10710 | 40d | 0d | CR117_Cost Loading [162988]; CR117 WEIGHTAGE [2269.76 h] | 162,988 |  |  | A.07 |  | UDF_G3 | CN |  | CRBRH | ENA | GENL | GEN | GN | RD | TD6 | 13 | CR | 1 | 1 |  |  |
| 17_CN10180 |  | Diversion Road Stage 6 - Lane makings & Signages for SMA original alignment (2 Weeks) |  | 14d | 2027-01-06 | 2027-01-19 | 17_CN10170 | 40d | 0d | CR117_Cost Loading [162989]; CR117 WEIGHTAGE [2269.76 h] | 162,989 |  |  | A.07 |  | UDF_G3 | CN |  | CRBRH | ENA | GENL | GEN | GN | RD | TD6 | 13 | CR | 1 | 1 |  |  |
| 17_CN10190 |  | Diversion Road Stage 6 - Open to Traffic for SMA original alignment | milestone | 0d | 2027-01-19 | 2027-01-19 | 17_CN10180, 17_GN10720, 17_GN10730, 17_GN10740, 17_GN10750, 17_GN10760, 17_GN10770 | 40d | 0d |  |  |  | Milestone | A.07 | UDF_G3 | UDF_G3 | CN | MS | CRBRH | ENA | GENL | GEN | GN | RD | TD6 | N/A | CR | 1 | 1 |  |  |
|  | 9 | **STAGE 7 - CONSTRUCTION OF DIVERTED ROAD** |  |  | 2027-04-16 | 2027-04-16 |  |  |  |  |  |  |  |  |  |  |  |  |  |  |  |  |  |  |  |  |  |  |  |  |  |
| 17_CN10200 |  | Diversion Road Stage 7 - Open to traffic (for removal traffic deck at T211 entrance) | milestone | 0d | 2027-04-16 | 2027-04-16 | 17_DS11000, 17_CN14770 | 106d | 0d |  |  |  | Milestone | A.07 | UDF_G3 | UDF_G3 | CN | MS | CRBRH | ENA | GENL | GEN | GN | RD | TD7 | N/A | CR |  |  |  |  |
|  | 10 | **STAGE 8 - CONSTRUCTION OF DIVERTED ROAD** |  |  | 2027-06-20 | 2027-06-20 |  |  |  |  |  |  |  |  |  |  |  |  |  |  |  |  |  |  |  |  |  |  |  |  |  |
| 17_CN10210 |  | Diversion Road Stage 8 - Open to traffic (reinstated T211 entrance centre median) | milestone | 0d | 2027-06-20 | 2027-06-20 | 17_DS11010, 17_CN14820 | 925d | 891d |  |  |  | Milestone | A.07 | UDF_G3 | UDF_G3 | CN | MS | CRBRH | ENA | GENL | GEN | GN | RD | TD8 | N/A | CR |  |  |  |  |
|  | 11 | **STAGE 9 - FINAL REINSTATEMENT OF SMA and SMW** |  |  | 2029-11-27 | 2029-11-27 |  |  |  |  |  |  |  |  |  |  |  |  |  |  |  |  |  |  |  |  |  |  |  |  |  |
| 17_CN10220 |  | Diversion Road Stage 9 - Open to traffic (Final re-alignment of Sin Ming Ave (SMA) after TSA area return for reinstate | milestone | 0d | 2029-11-27 | 2029-11-27 | 17_CN10210, 17_GN10240, 17_GN10250, 17_CN12970 | 34d |  |  |  |  | Milestone | A.07 | UDF_G3 | UDF_G3 | CN | MS | CRBRH | ENA | GENL | GEN | GN | RD | GEN | N/A | CR |  |  | 1 |  |
|  | 2 | **EAST C&C TUNNEL** |  |  | 2022-07-31 | 2029-12-07 |  |  |  |  |  |  |  |  |  |  |  |  |  |  |  |  |  |  |  |  |  |  |  |  |  |
|  | 1 | **EAST C&C-STAGE 0** |  |  | 2022-07-31 | 2023-02-13 |  |  |  |  |  |  |  |  |  |  |  |  |  |  |  |  |  |  |  |  |  |  |  |  |  |
|  | 1 | **EAST C&C-STG0- Tunnel: Preparation Road Diversion for Stage 1** |  |  | 2022-07-31 | 2023-02-13 |  |  |  |  |  |  |  |  |  |  |  |  |  |  |  |  |  |  |  |  |  |  |  |  |  |
| 17_CN10240 |  | East C&C STG0 Site Preparation Works |  | 90d | 2022-07-31 | 2022-10-28 | 17_DS10940, 17_PC10210, 17_PC10220 | 112d | 0d | CR117_Cost Loading [711167]; GW (C&S) [560 h]; CR117 WEIGHTAGE [11504.7 h] | 711,167 |  |  | D2.1 |  | UDF_G3 | CN |  | CRBRH | ENA | GENL | GEN | GN | RD | TD0 | 07 | CR |  |  |  |  |
| 17_CN10250 |  | East C&C STG0 Diversion of Drain; ERSS and Temp Drain Works |  | 90d | 2022-10-29 | 2023-01-26 | 17_CN10240 | 112d | 4d | CR117_Cost Loading [233669]; GW (C&S) [184 h]; CR117 WEIGHTAGE [3754 h] | 233,669 |  |  | D2.1 |  | UDF_G3 | CN |  | CRBRH | ENA | GENL | GEN | GN | RD | TD0 | 07 | CR |  |  |  |  |
| 17_CN10230 |  | East C&CSTG0 Diversion Drain & Road Works |  | 46d | 2022-12-16 | 2023-01-30 | 17_DS10930, 17_DS10770 | 108d | 0d | CR117_Cost Loading [467338]; GW (C&S) [368 h]; CR117 WEIGHTAGE [7546.96 h] | 467,338 |  |  | D2.1 |  | UDF_G3 | CN |  | CRBRH | ENA | GENL | GEN | GN | RD | TD0 | 07 | CR |  |  |  |  |
| 17_CN10260 |  | East C&C STG0 Diversion Road - Preparation to open to Traffic for Stage 1 |  | 14d | 2023-01-31 | 2023-02-13 | 17_CN10230, 17_CN10250 | 108d | 0d | CR117_Cost Loading [142233]; GW (C&S) [112 h]; CR117 WEIGHTAGE [2269.76 h] | 142,233 |  |  | D2.1 | UDF_G3 | UDF_G3 | CN |  | CRBRH | ENA | GENL | GEN | GN | RD | TD0 | 07 | CR |  |  |  |  |
|  | 2 | **EAST C&C STAGE 1** |  |  | 2023-01-22 | 2023-08-26 |  |  |  |  |  |  |  |  |  |  |  |  |  |  |  |  |  |  |  |  |  |  |  |  |  |
|  | 2 | **EAST C&C-STG1-ERSS- SBP Works** |  |  | 2023-01-22 | 2023-07-15 |  |  |  |  |  |  |  |  |  |  |  |  |  |  |  |  |  |  |  |  |  |  |  |  |  |
| 17_CN10350 |  | East CC-STG1-E1 SBP (64 nos with 2 Rig; 0.5/d/ Rig) - to commence from Launch Shaft |  | 64d | 2023-01-22 | 2023-03-26 | 17_DS10690, 17_PC10150, 17_DS10410, 17_PC10070 | 77d | 0d | CR117_Cost Loading [3297836]; SBP Team [512 h]; CR117 WEIGHTAGE [50223.7 h] | 3,297,836 |  |  | D2.4 |  | UDF_G3 | CN |  | CRBRH | ERS | GENL | GEN | ZG | SE | TD1 | 2 | CR |  |  |  | 1 |
| 17_CN19810 |  | Easr CC-STG1-E2 SBP (63 nos with 2 Rigs; 0.5/d/Rig) to continue from Launch Shaft |  | 63d | 2023-03-27 | 2023-05-28 | 17_CN10350 | 77d | 0d | CR117 WEIGHTAGE [63.44 h]; CR117_Cost Loading [4711195]; SBP Team [504 h] | 4,711,195 |  |  |  |  | UDF_G3 | CN |  | CRBRH | ERS | GENL | GEN | ZG | SE | TD1 | 2 | CR |  |  |  | 1 |
| 17_CN10370 |  | East CC-STG1- E3 SBP (48 nos with 2 Rigs; 0.5/d/Rig) |  | 48d | 2023-05-29 | 2023-07-15 | 17_CN10350, 17_CN19810 | 185d | 0d | CR117_Cost Loading [1675091]; SBP Team [464 h]; CR117 WEIGHTAGE [19393.8 h] | 1,675,091 |  |  | D2.4 |  | UDF_G3 | CN |  | CRBRH | ERS | GENL | GEN | ZG | SE | TD1 | 2 | CR |  |  |  | 1 |

| ID | WBS | Activity | Duration | Start | Finish | Predecessors | Total float | Free float | Resources | Cost | BOQ Item | Check | SBP and KP | PHASE | AREA | SUB-PHASE | SUB AREA | LOCATION | LOCATION DETAILS | SUB-LOCATION DETAILS | CR-117 - FOT | LINE | STAGE | MAJOR WORKS | Check 2 (Original Duration) | Text 1 | Cr117 Handover |
| --- | --- | --- | --- | --- | --- | --- | --- | --- | --- | --- | --- | --- | --- | --- | --- | --- | --- | --- | --- | --- | --- | --- | --- | --- | --- | --- | --- |
|  | 4 | **EAST C&C-STG1-ERSS-Fissure Grouting Works** |  | 2023-05-29 | 2023-08-26 |  |  |  |  |  |  |  |  |  |  |  |  |  |  |  |  |  |  |  |  |  |  |
| 17_CN10360 |  | East CC-STG1-Fissure Grouting at E1 & E2 SBP (127 nos; 1.4 no/d) | 90d | 2023-05-29 | 2023-08-26 | 17_CN10350, 17_CN19810, 17_PC10060 | 77d | 0d | CR117_Cost Loading [506005]; Fissure Grouting Team [720 h]; CR117 WEIGHTAGE [9112.32 h] | 506,005 | D2.5 | UDF_G3 | 1 | CN | CRBRH | ERS | GENL | GEN | GN | TD1 | 3 | CR |  |  |  |  |  |
| 17_CN10380 |  | East CC-STG1-Fissure Grouting at E3 SBP (48 nos; 1.4 no/d) | 35d | 2023-07-16 | 2023-08-19 | 17_CN10370 | 185d | 147d | CR117_Cost Loading [191246]; Fissure Grouting Team [368 h]; CR117 WEIGHTAGE [4108.48 h] | 191,246 | D2.5 | UDF_G3 | 1 | CN | CRBRH | ERS | GENL | GEN | GN | TD1 | 3 | CR |  |  |  |  |  |
|  | 3 | **EAST C&C-STG1-Grout Block Works** |  | 2023-05-19 | 2023-06-19 |  |  |  |  |  |  |  |  |  |  |  |  |  |  |  |  |  |  |  |  |  |  |
| 17_CN10390 |  | Zone G -Grout Block Works at Launch shaft | 32d | 2023-05-19 | 2023-06-19 | 17_DS10590, 17_PC10300, 17_PC10050 | 152d | 44d | CR117_Cost Loading [1000000]; GW (C&S) [256 h]; CR117 WEIGHTAGE [1830.64 h] | 1,000,000 | D2.1 | UDF_G3 |  | CN | CRBRH | ERS | GENL | GEN | ZG | TD1 | 04 | CR | ZG | GI |  |  |  |
|  | 3 | **EAST C&C STAGE 3A** |  | 2023-02-14 | 2024-04-22 |  |  |  |  |  |  |  |  |  |  |  |  |  |  |  |  |  |  |  |  |  |  |
|  | 12 | **EAST C&C-STG3A-Preparatory Works for Road Diversion to Stage 3A** |  | 2023-02-14 | 2023-09-26 |  |  |  |  |  |  |  |  |  |  |  |  |  |  |  |  |  |  |  |  |  |  |
| 17_CN10270 |  | East C&C STG1 Prepare ground to proposed road diversion level (North side) | 80d | 2023-02-14 | 2023-05-04 | 17_PC10220, 17_DS10940, 17_CN10260 | 108d | 0d | CR117_Cost Loading [812762]; GW (C&S) [640 h]; CR117 WEIGHTAGE [13153.8 h] | 812,762 | D2.1 | UDF_G3 |  | CN | CRBRH | ENA | GENL | GEN | GN | TD3A | 07 | CR |  | RD |  |  |  |
| 17_CN10280 |  | East C&C STG1 Construct Road (Base course) Diversion for Stage 3A to before Launch shaft area & Sheet pile at north side | 90d | 2023-05-05 | 2023-08-02 | 17_PC10250, 17_CN10270, 17_CN10350 | 108d | 0d | CR117_Cost Loading [914358]; GW (C&S) [720 h]; CR117 WEIGHTAGE [14803 h] | 914,358 | D2.1 | UDF_G3 |  | CN | CRBRH | ENA | GENL | GEN | GN | TD3A | 07 | CR |  | RD |  |  |  |
| 17_CN10290 |  | East C&C STG1 Diversion Roadside Drains for Stage 3A | 80d | 2023-05-29 | 2023-08-16 | 17_PC10250, 17_CN10270, 17_DS11030, 17_CN10350, 17_CN19810 | 108d | 31d | CR117_Cost Loading [812762]; GW (C&S) [720 h]; CR117 WEIGHTAGE [14803 h] | 812,762 | D2.1 | UDF_G3 |  | CN | CRBRH | ENA | GENL | GEN | GN | TD3A | 07 | CR |  | RD |  |  |  |
| 17_CN10320 |  | East C&C STG1 Diverted Road wearing course, Furniture for Stage 3A | 14d | 2023-08-03 | 2023-08-16 | 17_CN10280, 17_CN10390 | 108d | 31d | CR117_Cost Loading [142233]; CR117 WEIGHTAGE [2269.76 h] | 142,233 | D2.1 | UDF_G3 |  | CN | CRBRH | ENA | GENL | GEN | GN | TD3A | 07 | CR |  | RD |  |  |  |
| 17_CN10330 |  | East C&C STG1 Extend and align TTA Temple access road | 21d | 2023-08-27 | 2023-09-16 | 17_CN10360 | 77d | 0d | CR117_Cost Loading [213350]; CR117 WEIGHTAGE [5732.96 h] | 213,350 | D2.1 | UDF_G3 |  | CN | CRBRH | ENA | GENL | GEN | GN | TD3A | 07 | CR |  | RD |  |  |  |
| 17_CN10340 |  | East C&C STG1 Diversion Road - Preparation to open to Traffic for Stage 3A | 10d | 2023-09-17 | 2023-09-26 | 17_CN10290, 17_CN10320, 17_CN10330 | 77d | 0d | CR117_Cost Loading [101595]; CR117 WEIGHTAGE [2269.76 h] | 101,595 | D2.1 | UDF_G3 |  | CN | CRBRH | ENA | GENL | GEN | GN | TD3A | 07 | CR |  | RD | UDF_G3 |  |  |
|  | 1 | **EASTC&C-STG3A-Site Clerance and Setup (East C&C - Road Diversion Stage 3A)** |  | 2023-11-06 | 2023-11-19 |  |  |  |  |  |  |  |  |  |  |  |  |  |  |  |  |  |  |  |  |  |  |
| 17_CN10400 |  | East C&C-STG3A Hoardings Installation, Utilities Detection for Working Area | 7d | 2023-11-06 | 2023-11-12 | 17_CN10340, 17_CN10030 | 37d | 0d | CR117_Cost Loading [70513]; GW (C&S) [88 h]; CR117 WEIGHTAGE [603.76 h] | 70,513 | A.06 | UDF_G3 |  | CN | CRBRH | ENA | GENL | GEN | GN | TD3A | 01 | CR |  | GN |  | 1 | 1 |
| 17_CN10410 |  | East C&C-STG3A Site Clearance Leveling and Plant Setup for Working Area | 7d | 2023-11-13 | 2023-11-19 | 17_CN10400 | 37d | 0d | CR117_Cost Loading [57693]; GW (C&S) [88 h]; CR117 WEIGHTAGE [603.76 h] | 57,693 | D2.1 | UDF_G3 |  | CN | CRBRH | ENA | GENL | GEN | GN | TD3A | 01 | CR |  | GN |  | 1 | 1 |
|  | 2 | **EAST C&C-STG3A-ERSS-SBP Works** |  | 2023-11-20 | 2024-03-20 |  |  |  |  |  |  |  |  |  |  |  |  |  |  |  |  |  |  |  |  |  |  |
| 17_CN10420 |  | East C&C-STG3A E5 SBP (32 nos with 2 Rigs; 0.5/d/Rig) | 32d | 2023-11-20 | 2023-12-21 | 17_CN10410, 17_CN10030 | 38d | 0d | CR117_Cost Loading [2093864]; SBP Team [296 h]; CR117 WEIGHTAGE [12818.8 h] | 2,093,864 | D2.4 | UDF_G3 | 1 | CN | CRBRH | ERS | GENL | GEN | ZF1&2 | TD3A | 2 | CR |  | SE |  | 1 |  |
| 17_CN10460 |  | East C&C-STG3A E4 SBP (90 nos with 2 Rigs; 0.5/d/Rig) | 90d | 2023-11-20 | 2024-02-17 | 17_CN10410, 17_CN10030, 17_CN10260 | 37d | 0d | CR117_Cost Loading [994586]; SBP Team [856 h]; CR117 WEIGHTAGE [36518.1 h] | 994,586 | D2.4 | UDF_G3 | 1 | CN | CRBRH | ERS | GENL | GEN | ZF3 | TD3A | 2 | CR |  | SE |  |  | 1 |
| 17_CN10440 |  | East C&C-STG3A E8 SBP (19 nos with 1 Rig; 0.5/d/Rig) | 38d | 2023-12-22 | 2024-01-28 | 17_CN10410, 17_CN10420, 17_CN10030 | 79d | 0d | CR117_Cost Loading [1361012]; SBP Team [352 h]; CR117 WEIGHTAGE [8949.44 h] | 1,361,012 | D2.4 | UDF_G3 | 1 | CN | CRBRH | ERS | GENL | GEN | ZF1&2 | TD3A | 2 | CR |  | SE |  |  |  |
| 17_CN10480 |  | East C&C-STG3A E6 SBP (40 nos with 1 Rig; 0.5/d/Rig) | 80d | 2023-12-22 | 2024-03-10 | 17_CN10410, 17_CN10420, 17_CN10030 | 79d | 0d | CR117_Cost Loading [680506]; SBP Team [760 h]; CR117 WEIGHTAGE [19059.8 h] | 680,506 | D2.4 | UDF_G3 | 1 | CN | CRBRH | ERS | GENL | GEN | ZF1&2 | TD3A | 2 | CR |  | SE |  |  |  |
| 17_CN10490 |  | East C&C-STG3A E7 SBP (26 nos with 1 Rig; 0.5/d/Rig) | 52d | 2024-01-29 | 2024-03-20 | 17_CN10440 | 79d | 0d | CR117_Cost Loading [2512637]; SBP Team [480 h]; CR117 WEIGHTAGE [12023.4 h] | 2,512,637 | D2.4 | UDF_G3 | 1 | CN | CRBRH | ERS | GENL | GEN | ZF1&2 | TD3A | 2 | CR |  | SE |  |  |  |
|  | 6 | **EAST C&C-STG3A-ERSS-Fissure Grouting Works** |  | 2023-12-22 | 2024-04-22 |  |  |  |  |  |  |  |  |  |  |  |  |  |  |  |  |  |  |  |  |  |  |
| 17_CN10430 |  | East C&C-STG3A Fissure Grouting E5 SBP (32 nos 1.4 no/d) | 23d | 2023-12-22 | 2024-01-13 | 17_CN10420 | 38d | 0d | CR117_Cost Loading [127497]; Fissure Grouting Team [224 h]; CR117 WEIGHTAGE [2570.24 h] | 127,497 | D2.5 | UDF_G3 | 1 | CN | CRBRH | ERS | GENL | GEN | ZF1&2 | TD3A | 3 | CR |  |  |  | 1 |  |
| 17_CN10450 |  | East C&C-STG3A Fissure Grouting E8 SBP (19 nos 1.4 no/d) | 14d | 2024-01-29 | 2024-02-11 | 17_CN10440 | 144d | 60d | CR117_Cost Loading [75701]; Fissure Grouting Team [224 h]; CR117 WEIGHTAGE [2180.88 h] | 75,701 | D2.5 | UDF_G3 | 1 | CN | CRBRH | ERS | GENL | GEN | ZF1&2 | TD3A | 3 | CR |  |  |  |  |  |
| 17_CN10470 |  | East C&C-STG3A Fissure Grouting E4 SBP (90 nos 1.4 no/d) | 65d | 2024-02-18 | 2024-04-22 | 17_CN10460 | 37d | 0d | CR117_Cost Loading [358586]; Fissure Grouting Team [648 h]; CR117 WEIGHTAGE [7451.12 h] | 358,586 | D2.5 | UDF_G3 | 1 | CN | CRBRH | ERS | GENL | GEN | ZF3 | TD3A | 3 | CR |  |  |  |  | 1 |
| 17_CN10500 |  | East C&C-STG3A Fissure Grouting E6 SBP (40 nos 1.4 no/d) | 29d | 2024-03-11 | 2024-04-08 | 17_CN10480 | 79d | 3d | CR117_Cost Loading [159372]; Fissure Grouting Team [464 h]; CR117 WEIGHTAGE [4582.48 h] | 159,372 | D2.5 | UDF_G3 | 1 | CN | CRBRH | ERS | GENL | GEN | ZF1&2 | TD3A | 3 | CR |  |  |  |  |  |
| 17_CN10510 |  | East C&C-STG3A Fissure Grouting E7 SBP (26 nos 1.4 no/d) | 19d | 2024-03-21 | 2024-04-08 | 17_CN10490 | 79d | 3d | CR117_Cost Loading [103592]; Fissure Grouting Team [368 h]; CR117 WEIGHTAGE [3427.2 h] | 103,592 | D2.5 | UDF_G3 | 1 | CN | CRBRH | ERS | GENL | GEN | ZF1&2 | TD3A | 3 | CR |  |  |  |  |  |

| ID | WBS | Activity | Duration | Start | Finish | Predecessors | Total float | Free float | Resources | Cost | BOQ Item | Check | PHASE | AREA | SUB-PHASE | SUB AREA | LOCATION | LOCATION DETAILS | MAJOR WORKS | SUB-LOCATION DETAILS | CR-117 - FOT | LINE | Text 1 | Check 2 (Original Duration) | SBP and KP | Cr117 Handover |
| --- | --- | --- | --- | --- | --- | --- | --- | --- | --- | --- | --- | --- | --- | --- | --- | --- | --- | --- | --- | --- | --- | --- | --- | --- | --- | --- |
|  | 3 | **EAST C&C-STG3A-DFE/King Posts** |  | 2024-02-08 | 2024-02-28 |  |  |  |  |  |  |  |  |  |  |  |  |  |  |  |  |  |  |  |  |  |
| 17_CN10520 |  | Zone F - Install King Post for minimising Tunnel Setttlement | 21d | 2024-02-08 | 2024-02-28 | 17_CN11940, 17_CN10410, 17_CN10030, 17_CN12310 | 119d | 54d | CR117_Cost Loading [775105]; DFE/King Post Team [112 h]; CR117 WEIGHTAGE [6722.64 h] | 775,105 | D2.3 | UDF_G3 | CN | CRBRH | ERS | GENL | GEN | GN | BO | TD3A | 03 | CR |  |  |  |  |
|  | 4 | **EAST C&C-STG3A-Traffic Decking Construction** |  | 2024-01-14 | 2024-02-06 |  |  |  |  |  |  |  |  |  |  |  |  |  |  |  |  |  |  |  |  |  |
| 17_CN10530 |  | East C&C STG4 Construct Traffic Deck for TSA opening - Zone F3 and Escape Shaft - Zone G | 24d | 2024-01-14 | 2024-02-06 | 17_CN10380, 17_CN10430 | 38d | 0d | CR117_Cost Loading [116143]; Excavation Team [192 h]; CR117 WEIGHTAGE [1363.28 h] | 116,143 | D2.2.1/2.4/2.5 | UDF_G3 | CN | CRBRH | RCW | GENL | GEN | GN | DK | TD3A | 2 | CR | 1 |  |  |  |
|  | 4 | **EAST C&C STAGE 3B** |  | 2024-02-07 | 2024-05-26 |  |  |  |  |  |  |  |  |  |  |  |  |  |  |  |  |  |  |  |  |  |
|  | 12 | **East C&C-STG3B-Tunnel: Preparation Road Diversion for Stage 3B** |  | 2024-02-07 | 2024-03-07 |  |  |  |  |  |  |  |  |  |  |  |  |  |  |  |  |  |  |  |  |  |
| 17_CN10540 |  | East C&C Tunnel: Diversion Road Wearing course, Street Furniture for Stage 3B at west of TTA Temple access rd diversion | 16d | 2024-02-07 | 2024-02-22 | 17_CN10530, 17_DS10960 | 38d | 0d | CR117_Cost Loading [162552]; GW (C&S) [128 h]; CR117 WEIGHTAGE [2599.6 h] | 162,552 | D2.1 | UDF_G3 | CN | CRBRH | ENA | GENL | GEN | GN | RD | TD3B | 07 | CR | 1 |  |  |  |
| 17_CN10550 |  | East C&C Tunnel: Diversion Road - Preparation to open to Traffic for Stage 3B | 14d | 2024-02-23 | 2024-03-07 | 17_CN10540 | 38d | 0d | CR117_Cost Loading [142233]; GW (C&S) [112 h]; CR117 WEIGHTAGE [2269.76 h] | 142,233 | D2.1 | UDF_G3 | CN | CRBRH | ENA | GENL | GEN | GN | RD | TD3B | 07 | CR | 1 | UDF_G3 |  |  |
|  | 1 | **EAST C&C-STG3B-ERSS-SBP Works** |  | 2024-03-08 | 2024-04-02 |  |  |  |  |  |  |  |  |  |  |  |  |  |  |  |  |  |  |  |  |  |
| 17_CN10560 |  | East C&C-STG3B- E9 SBP (13 nos with 1 Rig; 0.5/d/Rig) | 26d | 2024-03-08 | 2024-04-02 | 17_DS10690, 17_CN10550, 17_CN10050 | 40d | 0d | CR117_Cost Loading [3350183]; SBP Team [240 h]; CR117 WEIGHTAGE [5992.24 h] | 3,350,183 | D2.4 | UDF_G3 | CN | CRBRH | ERS | GENL | GEN | ZF3 | SE | TD3B | 2 | CR | 1 |  | 1 |  |
|  | 4 | **EAST C&C-STG3B-ERSS-Fissure Grouting Works** |  | 2024-04-03 | 2024-04-11 |  |  |  |  |  |  |  |  |  |  |  |  |  |  |  |  |  |  |  |  |  |
| 17_CN10570 |  | East C&C-STG3B-Fissure Grouting E9 SBP (13 nos 1.4 no/d) | 9d | 2024-04-03 | 2024-04-11 | 17_CN10560 | 40d | 0d | CR117_Cost Loading [51796]; Fissure Grouting Team [240 h]; CR117 WEIGHTAGE [2103.12 h] | 51,796 | D2.5 | UDF_G3 | CN | CRBRH | ERS | GENL | GEN | ZF3 |  | TD3B | 3 | CR | 1 |  | 1 |  |
|  | 2 | **EAST C&C-STG3B-Traffic Decking Construction During Traffic Diversion Stage 3B** |  | 2024-04-12 | 2024-04-27 |  |  |  |  |  |  |  |  |  |  |  |  |  |  |  |  |  |  |  |  |  |
| 17_CN10580 |  | East C&C STG4 Construct Traffic Deck for TSA opening - Zone F3 and Escape Shaft - Zone G | 16d | 2024-04-12 | 2024-04-27 | 17_CN10570, 17_CN10380, 17_CN10060, 17_CN10560 | 40d | 0d | CR117_Cost Loading [77429]; Excavation Team [128 h]; CR117 WEIGHTAGE [895.92 h] | 77,429 | D2.2.1/2.4/2.5 | UDF_G3 | CN | CRBRH | RCW | GENL | GEN | ZF3 | DK | TD3B | 2 | CR | 1 |  |  |  |
|  | 3 | **EAST C&C-STG3B-Tunnel: Preparation Road Diversion for Stage 4** |  | 2024-03-08 | 2024-05-26 |  |  |  |  |  |  |  |  |  |  |  |  |  |  |  |  |  |  |  |  |  |
| 17_CN10590 |  | East C&C STG3B Install Sheetpiles from Minor Diversion Road to Sin Ming Drive for Stage 4 | 21d | 2024-03-08 | 2024-03-28 | 17_CN10550 | 38d | 0d | CR117_Cost Loading [213350]; GW (C&S) [168 h]; Lifting Team [168 h]; CR117 WEIGHTAGE [3424.16 h] | 213,350 | D2.1 | UDF_G3 | CN | CRBRH | ENA | GENL | GEN | GN | RD | TD3B | 07 | CR |  |  |  |  |
| 17_CN10600 |  | East C&C STG3B Excavate South Side of proposed diversion road to required platform levels (+14SHD, +12SHD, +10HSD) for | 24d | 2024-03-29 | 2024-04-21 | 17_CN10590 | 38d | 1d | CR117_Cost Loading [243829]; Excavation Team [192 h]; CR117 WEIGHTAGE [3918.88 h] | 243,829 | D2.2.1/2.4/2.5 | UDF_G3 | CN | CRBRH | ENA | GENL | GEN | GN | RD | TD3B | 07 | CR |  |  |  |  |
| 17_CN10610 |  | East C&C STG3B Modify Road and Drains Alignment and base/wearing course for Stage 4 (outside traffic deck area) | 24d | 2024-04-23 | 2024-05-16 | 17_CN10600, 17_CN10380, 17_CN10470 | 37d | 0d | CR117_Cost Loading [243829]; GW (C&S) [192 h]; CR117 WEIGHTAGE [3918.88 h] | 243,829 | D2.1 | UDF_G3 | CN | CRBRH | ENA | GENL | GEN | GN | RD | TD3B | 07 | CR |  |  |  | 1 |
| 17_CN10620 |  | East C&C STG3B Diversion Road Wearing course, Street Furniture on traffic deck for Stage 4 | 16d | 2024-04-28 | 2024-05-13 | 17_CN10580 | 40d | 3d | CR117_Cost Loading [162552]; GW (C&S) [128 h]; CR117 WEIGHTAGE [2599.6 h] | 162,552 | D2.1 | UDF_G3 | CN | CRBRH | ENA | GENL | GEN | GN | RD | TD3B | 07 | CR | 1 |  |  |  |
| 17_CN10630 |  | East C&C STG3B Diversion Road - Prepare to Open to Traffic for Stage 4 | 10d | 2024-05-17 | 2024-05-26 | 17_CN10620, 17_CN10610 | 37d | 0d | CR117_Cost Loading [101595]; CR117 WEIGHTAGE [1610.16 h] | 101,595 | D2.1 | UDF_G3 | CN | CRBRH | ENA | GENL | GEN | GN | RD | TD3B | 07 | CR | 1 |  |  | 1 |
|  | 5 | **EAST C&C STAGE 4** |  | 2026-03-22 | 2026-09-20 |  |  |  |  |  |  |  |  |  |  |  |  |  |  |  |  |  |  |  |  |  |
|  | 1 | **EAST C&C-STG4 Traffic Decking Construction During Traffic Diversion Stage 5** |  | 2026-03-22 | 2026-09-06 |  |  |  |  |  |  |  |  |  |  |  |  |  |  |  |  |  |  |  |  |  |
| 17_CN10640 |  | East C&C STG4 Dismantle the gantry crane and foundation at launching shaft | 40d | 2026-03-22 | 2026-04-30 | 17_CN11670 | 49d | 0d | CR117_Cost Loading [256413]; Excavation Team [320 h]; Lifting Team [320 h]; CR117 WEIGHTAGE [2298.16 h] | 256,413 | D2.1 | UDF_G3 | CN | CRBRH | ENA | GENL | GEN | GN | DK | TD4 | 01 | CR |  |  |  |  |
| 17_CN10650 |  | East C&C STG4 Construct Traffic Deck for TSA opening - Zone F3 and Escape Shaft - Zone G | 12d | 2026-08-26 | 2026-09-06 | 17_CN11670, 17_CN10640, 17_CN11420, 17_CN11230 | 40d | 0d | CR117_Cost Loading [67750]; GW (C&S) [112 h]; RC Team [112 h]; CR117 WEIGHTAGE [779.04 h] | 67,750 | D2.1 | UDF_G3 | CN | CRBRH | ENA | GENL | GEN | GN | DK | TD4 | 2 | CR | 1 |  |  | 1 |

| ID | WBS | Activity | Duration | Start | Finish | Predecessors | Total float | Free float | Resources | Cost | BOQ Item | Check | PHASE | AREA | SUB-PHASE | SUB AREA | LOCATION | LOCATION DETAILS | MAJOR WORKS | SUB-LOCATION DETAILS | CR-117 - FOT | LINE | Text 1 | Cr117 Handover |
| --- | --- | --- | --- | --- | --- | --- | --- | --- | --- | --- | --- | --- | --- | --- | --- | --- | --- | --- | --- | --- | --- | --- | --- | --- |
|  | 2 | **EAST C&C-STG4 Tunnel: Preparation Road Diversion for Stage 5** |  | 2026-05-01 | 2026-09-20 |  |  |  |  |  |  |  |  |  |  |  |  |  |  |  |  |  |  |  |
| 17_CN10660 |  | East C&C STG4 Dismantle the STP and demolition of the foundation | 30d | 2026-05-01 | 2026-05-30 | 17_DS10980, 17_CN11670, 17_CN10640 | 49d | 0d | CR117_Cost Loading [192309]; GW (C&S) [384 h]; Excavation Team [384 h]; CR117 WEIGHTAGE [7876.72 h] | 192,309 | D2.1 | UDF_G3 | CN | CRBRH | ENA | GENL | GEN | GN | RD | TD4 | 01 | CR |  |  |
| 17_CN10670 |  | East C&C STG4 Excavation South Side of proposed diversion road to required platform levels for Stage 5 | 40d | 2026-05-31 | 2026-07-09 | 17_CN10660 | 49d | 0d | CR117_Cost Loading [465684]; Excavation Team [400 h]; CR117 WEIGHTAGE [8206.56 h] | 465,684 | D2.2.1/2.4/2.5 | UDF_G3 | CN | CRBRH | ENA | GENL | GEN | GN | RD | TD4 | 13 | CR |  |  |
| 17_CN10680 |  | East C&C STG4 Prepare Road base course and Drains Alignment for Stage 5 | 50d | 2026-07-10 | 2026-08-28 | 17_CN10670 | 49d | 9d | CR117_Cost Loading [582105]; GW (C&S) [400 h]; CR117 WEIGHTAGE [8206.56 h] | 582,105 | D2.1 | UDF_G3 | CN | CRBRH | ENA | GENL | GEN | GN | RD | TD4 | 13 | CR |  |  |
| 17_CN10690 |  | East C&C STG4 Diversion Road Wearing course, Street Furniture on traffic deck at TSA opening and Launch Shaft for Sta | 7d | 2026-09-07 | 2026-09-13 | 17_CN10680, 17_CN10650 | 40d | 0d | CR117_Cost Loading [116420]; GW (C&S) [80 h]; CR117 WEIGHTAGE [1610.16 h] | 116,420 | D2.1 | UDF_G3 | CN | CRBRH | ENA | GENL | GEN | GN | RD | TD4 | 13 | CR | 1 | 1 |
| 17_CN10700 |  | East C&C STG4 Diversion Road - Prepare to Open to Traffic for Stage 5 | 7d | 2026-09-14 | 2026-09-20 | 17_CN10690 | 40d | 0d | CR117_Cost Loading [116420]; GW (C&S) [80 h]; CR117 WEIGHTAGE [1610.16 h] | 116,420 | D2.1 | UDF_G3 | CN | CRBRH | ENA | GENL | GEN | GN | RD | TD4 | 13 | CR | 1 | 1 |
|  | 6 | **EAST C&C STAGE 5** |  | 2026-09-21 | 2026-12-21 |  |  |  |  |  |  |  |  |  |  |  |  |  |  |  |  |  |  |  |
|  | 1 | **EAST C&C STG5-Road Diversion for Stage 6 - Original alignment of SMA at East C&C** |  | 2026-09-21 | 2026-12-21 |  |  |  |  |  |  |  |  |  |  |  |  |  |  |  |  |  |  |  |
| 17_CN10710 |  | East C&C STG5 Prepare SMA original alignment and Removal Traffic Deck | 9d | 2026-09-21 | 2026-09-29 | 17_CN10700, 17_CN11230, 17_CN10120 | 40d | 0d | CR117_Cost Loading [102565]; Excavation Team [128 h]; GW (C&S) [128 h]; CR117 WEIGHTAGE [895.92 h] | 102,565 | D2.1 | UDF_G3 | CN | CRBRH | ENA | GENL | GEN | GN | GN | TD5 | 01 | CR | 1 | 1 |
| 17_CN10720 |  | East C&C STG5 Reinstate SMA and Drains to original alignment for areas not occupied by access roads for Stage 6 | 60d | 2026-10-23 | 2026-12-21 | 17_CN10700, 17_CN11230, 17_CN12570, 17_CN10710 | 41d | 0d | CR117_Cost Loading; GW (C&S) [672 h]; CR117 WEIGHTAGE [4868.88 h] |  | D2.1 | UDF_G3 | CN | CRBRH | ENA | GENL | GEN | GN | GN | TD5 | 08 | CR | 1 |  |
|  | 7 | **EAST C&C STAGE 6** |  | 2027-01-20 | 2027-03-18 |  |  |  |  |  |  |  |  |  |  |  |  |  |  |  |  |  |  |  |
|  | 1 | **EAST C&C STG6-Temporary Staging Area (TSA)** |  | 2027-01-20 | 2027-03-18 |  |  |  |  |  |  |  |  |  |  |  |  |  |  |  |  |  |  |  |
| 17_CN10730 |  | East C&C STG6 TSA removal traffic deck at TSA opening and launching shaft | 6d | 2027-01-20 | 2027-01-25 | 17_CN11230, 17_CN10190, 17_CN11420 | 43d | 0d | CR117_Cost Loading [44872]; GW (C&S) [56 h]; Excavation Team [56 h]; CR117 WEIGHTAGE [370 h] | 44,872 |  | UDF_G3 | CN | CRBRH | ENA | GENL | GEN | GN | GN | TD6 | 01 | CR | 1 | 1 |
| 17_CN10740 |  | East C&C STG6 TSA Prepare Ground, access road and sewerage connection to TSA | 18d | 2027-01-26 | 2027-02-12 | 17_CN11230, 17_CN10190, 17_CN11420, 17_CN10730 | 43d | 0d | CR117_Cost Loading [179489]; Excavation Team [224 h]; GW (C&S) [224 h]; CR117 WEIGHTAGE [1596.96 h] | 179,489 |  | UDF_G3 | CN | CRBRH | ENA | GENL | GEN | GN | GN | TD6 | 01 | CR |  | 1 |
| 17_CN10750 |  | East C&C STG6 TSA Construct TSA Slab including required shaft openings and cast in items, Wash bay | 18d | 2027-02-13 | 2027-03-02 | 17_CN10730, 17_CN10740 | 43d | 0d | CR117_Cost Loading [145179]; GW (C&S) [240 h]; RC Team [240 h]; CR117 WEIGHTAGE [1713.84 h] | 145,179 |  | UDF_G3 | CN | CRBRH | ENA | GENL | GEN | GN | DK | TD6 | 2 | CR | 1 | 1 |
| 17_CN10760 |  | East C&C STG6 TSA Foundation for Gantry Cranes | 16d | 2027-03-03 | 2027-03-18 | 17_CN10750 | 43d |  | CR117_Cost Loading [291097]; GW (C&S) [128 h]; RC Team [128 h]; CR117 WEIGHTAGE [895.92 h] | 291,097 |  | UDF_G3 | CN | CRBRH | ENA | GENL | GEN | GN | GN | TD6 | 1 | CR |  | 1 |
| 17_CN10770 |  | East C&C STG6 TSA Installation of utilities points, lighting | 16d | 2027-03-03 | 2027-03-18 | 17_CN10750 | 43d |  | CR117_Cost Loading; GW (M&E) [128 h]; CR117 WEIGHTAGE [895.92 h] |  |  | UDF_G3 | CN | CRBRH | ENA | GENL | GEN | GN | GN | TD6 | N/A | CR |  | 1 |
| 17_CN10780 |  | East C&C STG6 TSA Fencing & hoardings for handover TSA Area | 16d | 2027-03-03 | 2027-03-18 | 17_CN10750 | 43d |  | CR117_Cost Loading [329881]; GW (C&S) [160 h]; CR117 WEIGHTAGE [1129.6 h] | 329,881 | A.06 | UDF_G3 | CN | CRBRH | ENA | GENL | GEN | GN | GN | TD6 | 06 | CR | 1 | 1 |
|  | 8 | **EAST C&C STAGE 7** |  | 2027-01-20 | 2028-04-13 |  |  |  |  |  |  |  |  |  |  |  |  |  |  |  |  |  |  |  |
|  | 1 | **EAST C&C STG7-SWC Storage Areas** |  | 2027-01-20 | 2028-04-13 |  |  |  |  |  |  |  |  |  |  |  |  |  |  |  |  |  |  |  |
| 17_CN10790 |  | East C&C STG7 TSA CR117 dismantles TSA area surface facilities at SWC storage Area | 90d | 2027-01-20 | 2027-04-19 | 17_CN11700, 17_CN10190 | 78d | 0d | CR117_Cost Loading [200000]; Lifting Team [720 h]; GW (C&S) [720 h]; CR117 WEIGHTAGE [5219.36 h] | 200,000 |  | UDF_G3 | CN | CRBRH | ENA | GENL | GEN | GN | GN | TD7 | 01 | CR |  |  |
| 17_CN11050 |  | East C&C STG 7 Preparation for Storage Area by removing other existing setup | 90d | 2027-04-20 | 2027-07-18 | 17_CN10790 | 78d | 0d | CR117 WEIGHTAGE [5322 h]; CR117_Cost Loading [43725]; GW (C&S) [720 h] | 43,725 |  |  | CN | CRBRH | ENA | GENL | GEN | GN | GN | TD7 |  | CR |  |  |
| 17_CN12940 |  | East C&C STG7 Preparation of Storage Area by Carrying out Earthworks | 90d | 2027-07-19 | 2027-10-16 | 17_CN11050 | 78d | 0d | CR117 WEIGHTAGE [5320.96 h]; CR117_Cost Loading [43725]; GW (C&S) [720 h] | 43,725 |  |  | CN | CRBRH | ENA | GENL | GEN | GN | GN | TD7 |  | CR |  |  |
| 17_CN12950 |  | East C&C STG 7 TSA Construction SWC Storage Area RC Works | 90d | 2027-10-17 | 2028-01-14 | 17_CN12940 | 78d | 0d | CR117 WEIGHTAGE [5320.96 h]; CR117_Cost Loading [43725]; GW (C&S) [720 h]; RC Team [720 h] | 43,725 |  |  | CN | CRBRH | ENA | GENL | GEN | GN | GN | TD7 |  | CR |  |  |
| 17_CN10800 |  | East C&C STG7 TSA Prepare and Construct SWC Storage Areas | 90d | 2028-01-15 | 2028-04-13 | 17_CN10790, 17_CN12950 | 78d |  | CR117_Cost Loading [43725]; GW (C&S) [2920 h]; Lifting Team [2920 h]; CR117 WEIGHTAGE [5320.96 h] | 43,725 |  | UDF_G3 | CN | CRBRH | ENA | GENL | GEN | GN | GN | TD7 | 05 | CR |  |  |

| ID | WBS | Activity | Duration | Start | Finish | Predecessors | Total float | Free float | Resources | Cost | PHASE | AREA | SUB-PHASE | SUB AREA | LOCATION | LOCATION DETAILS | MAJOR WORKS | SUB-LOCATION DETAILS | LINE | user_text1 | Check | CR-117 - FOT | Comments | BOQ Item | Check 2 (Original Duration) | [UDF] Chainage Start | [UDF] Chainage Finish | STAGE | Text 1 | Cr117 Handover |
| --- | --- | --- | --- | --- | --- | --- | --- | --- | --- | --- | --- | --- | --- | --- | --- | --- | --- | --- | --- | --- | --- | --- | --- | --- | --- | --- | --- | --- | --- | --- |
|  | 9 | **EAST C&C STAGE 8** |  | 2029-07-01 | 2029-12-07 |  |  |  |  |  |  |  |  |  |  |  |  |  |  |  |  |  |  |  |  |  |  |  |  |  |
| 17_CN12960 |  | East C&C STG8 TSA Reinstatement Works of TSA | 80d | 2029-07-01 | 2029-09-18 | 17_GN10240, 17_GN10250 | 24d | 0d | CR117 WEIGHTAGE [5129.68 h]; CR117_Cost Loading [188464]; GW (C&S) [640 h]; Excavation Team [640 h] | 188,464 | CN | CRBRH | ENA | GENL | GEN | GN | RD | TD8 | CR |  |  |  |  |  |  |  |  |  |  |  |
| 17_CN10810 |  | East C&C STG8 TSA Reinstatement of TSA and SWC Storage Area | 80d | 2029-09-19 | 2029-12-07 | 17_CN12960 | 24d |  | CR117_Cost Loading [188464]; Excavation Team [1400 h]; GW (C&S) [1400 h]; CR117 WEIGHTAGE [5128.72 h] | 188,464 | CN | CRBRH | ENA | GENL | GEN | GN | GN | TD8 | CR | 1 | UDF_G3 | N/A |  |  |  |  |  |  |  |  |
|  | 10 | **EAST C&C TUNNEL EXCAVATION AND STRUTTING-RC WORKS** |  | 2024-04-12 | 2024-12-07 |  |  |  |  |  |  |  |  |  |  |  |  |  |  |  |  |  |  |  |  |  |  |  |  |  |
|  | 4 | **EAST C&C ZONE F3-Excavation and Strutting Works** |  | 2024-04-23 | 2024-10-29 |  |  |  |  |  |  |  |  |  |  |  |  |  |  |  |  |  |  |  |  |  |  |  |  |  |
|  | 1 | **EAST C&C ZONE F3-Excavation Works** |  | 2024-04-23 | 2024-09-29 |  |  |  |  |  |  |  |  |  |  |  |  |  |  |  |  |  |  |  |  |  |  |  |  |  |
| 17_CN18850 |  | Easr C&C-Zone F3 - Excavate to 1m below S1 (Aprox 1508m3, 250m3/day) | 7d | 2024-04-23 | 2024-04-29 | 17_CN10360, 17_CN10380, 17_CN10470, 17_CN10520, 17_CN10530, 17_CN10570, 17_DS10420, 17_DS10280, 17_CN10510, 17_CN10500 | 65d | 0d | Excavation Team [384 h]; CR117_Cost Loading [60310]; CR117 WEIGHTAGE [837.12 h] | 60,310 | CN | CRBRH | EXC | GENL | GEN | ZF3 | EC | GEN | CR |  | UDF_G3 | 1 | To Split Excav and Strut/deck | D2.2.1/2.4/2.5 | UDF_G3 | 50194 | 50260 | ZF3 |  |  |
| 17_CN18860 |  | Easr C&C-Zone F3 - Excavate to 1m below S2 (Approx 5452m3, 300m3/day) | 18d | 2024-05-16 | 2024-06-02 | 17_CN10830 | 65d | 0d | Excavation Team [144 h]; CR117_Cost Loading [218046]; CR117 WEIGHTAGE [2291.04 h] | 218,046 | CN | CRBRH | EXC | GENL | GEN | ZF3 | EC | GEN | CR |  | UDF_G3 | 1 |  |  | UDF_G3 | 50194 | 50260 | ZF3 |  |  |
| 17_CN18870 |  | Easr C&C-Zone F3 - Excavate to 1m below S3 (Approx 5800m3, 300m3/day) | 19d | 2024-06-16 | 2024-07-04 | 17_CN10840 | 65d | 0d | Excavation Team [152 h]; CR117_Cost Loading [231963]; CR117 WEIGHTAGE [2423.2 h] | 231,963 | CN | CRBRH | EXC | GENL | GEN | ZF3 | EC | GEN | CR |  | UDF_G3 | 1 |  |  | UDF_G3 | 50194 | 50260 | ZF3 |  |  |
| 17_CN18880 |  | Easr C&C-Zone F3 - Excavate to 1m below S4 (Approx 5800m3, 300m3/day) | 19d | 2024-07-18 | 2024-08-05 | 17_CN10850 | 65d | 0d | Excavation Team [152 h]; CR117_Cost Loading [231963]; CR117 WEIGHTAGE [2423.2 h] | 231,963 | CN | CRBRH | EXC | GENL | GEN | ZF3 | EC | GEN | CR |  | UDF_G3 | 1 |  |  | UDF_G3 | 50194 | 50260 | ZF3 |  |  |
| 17_CN18890 |  | Easr C&C-Zone F3 - Excavate to 1m below S5 (Approx 4640m3, 300m3/day) | 15d | 2024-08-18 | 2024-09-01 | 17_CN10860 | 65d | 0d | Excavation Team [120 h]; CR117_Cost Loading [185571]; CR117 WEIGHTAGE [1894.56 h] | 185,571 | CN | CRBRH | EXC | GENL | GEN | ZF3 | EC | GEN | CR |  | UDF_G3 | 1 |  |  | UDF_G3 | 50194 | 50260 | ZF3 |  |  |
| 17_CN10880 |  | Easr C&C-Zone F3 - Excavate to FEL (Approx. 2,200 m3 - 250m3day) | 10d | 2024-09-12 | 2024-09-21 | 17_CN10870 | 65d | 0d | Excavation Team [464 h]; CR117_Cost Loading [87986]; CR117 WEIGHTAGE [1233.6 h] | 87,986 | CN | CRBRH | EXC | GENL | GEN | ZF3 | EC | GEN | CR |  | UDF_G3 | 1 | To Split Excav and Strut/deck | D2.2.1/2.4/2.5 | UDF_G3 | 50194 | 50260 | ZF3 |  |  |
| 17_CN10890 |  | East C&C-Zone F3 - Excavation, Rock blasting (600 m3, 150m3/day, 3 days) & Clearance Works | 8d | 2024-09-22 | 2024-09-29 | 17_CN10870, 17_CN10880 | 65d | 0d | Excavation Team [128 h]; CR117_Cost Loading; CR117 WEIGHTAGE [969.36 h] |  | CN | CRBRH | EXC | GENL | GEN | ZF3 | EC | GEN | CR |  | UDF_G3 | 2 |  | D2.2.1/2.4/2.5 | UDF_G3 | 50194 | 50260 | ZF3 |  |  |
|  | 3 | **EAST C&C ZONE F3-Strutting Works for TBM set up** |  | 2024-04-30 | 2024-10-29 |  |  |  |  |  |  |  |  |  |  |  |  |  |  |  |  |  |  |  |  |  |  |  |  |  |
| 17_CN10830 |  | Easr C&C-Zone F3 - Install S1 strut (4 nos), cast Construction Deck | 16d | 2024-04-30 | 2024-05-15 | 17_CN10520, 17_PC10280, 17_CN10530, 17_CN18850 | 65d | 0d | CR117_Cost Loading [80628]; Strutting Team [128 h]; Lifting Team [128 h]; RC Team [128 h]; CR117 WEIGHTAGE [1291.6 h] | 80,628 | CN | CRBRH | ERS | GENL | GEN | ZF3 | ST | GEN | CR |  | UDF_G3 | 1 | To Split Excav and Strut/deck | D2.2.1/2.4/2.5 | UDF_G3 | 50194 | 50260 | ZF3 |  |  |
| 17_CN10840 |  | East C&C-Zone F3 - Install S2 strut (10 nos) and Preload S2 (0.8/day / team) | 13d | 2024-06-03 | 2024-06-15 | 17_CN10580, 17_CN10530, 17_CN10830, 17_CN18860 | 65d | 0d | CR117_Cost Loading [65511]; Strutting Team [104 h]; Lifting Team [104 h]; CR117 WEIGHTAGE [1709.84 h] | 65,511 | CN | CRBRH | ERS | GENL | GEN | ZF3 | ST | GEN | CR |  | UDF_G3 | 1 | To Split Excav and Strut/deck | D2.2.1/2.4/2.5 | UDF_G3 | 50194 | 50260 | ZF3 |  |  |
| 17_CN10850 |  | East C&C-Zone F3 - Install S3 strut (10nos), Preload S3 (0.8/day / team) | 13d | 2024-07-05 | 2024-07-17 | 17_CN10840, 17_CN18870 | 65d | 0d | CR117_Cost Loading [65511]; Strutting Team [400 h]; Lifting Team [104 h]; CR117 WEIGHTAGE [1709.84 h] | 65,511 | CN | CRBRH | ERS | GENL | GEN | ZF3 | ST | GEN | CR |  | UDF_G3 | 1 | To Split Excav and Strut/deck | D2.2.1/2.4/2.5 | UDF_G3 | 50194 | 50260 | ZF3 |  |  |
| 17_CN10860 |  | East C&C-Zone F3 - Install S4 strut (9) and Preload S4 | 12d | 2024-08-06 | 2024-08-17 | 17_CN10850, 17_CN18880 | 65d | 0d | CR117_Cost Loading [60471]; Strutting Team [96 h]; Lifting Team [96 h]; CR117 WEIGHTAGE [1552.48 h] | 60,471 | CN | CRBRH | ERS | GENL | GEN | ZF3 | ST | GEN | CR |  | UDF_G3 | 1 | To Split Excav and Strut/deck | D2.2.1/2.4/2.5 | UDF_G3 | 50194 | 50260 | ZF3 |  |  |
| 17_CN10870 |  | Easr C&C-Zone F3 - Install S5 strut (8) and Preload S5 | 10d | 2024-09-02 | 2024-09-11 | 17_CN10860, 17_CN18890 | 65d | 0d | CR117_Cost Loading [50393]; Strutting Team [200 h]; Lifting Team [80 h]; CR117 WEIGHTAGE [1336.8 h] | 50,393 | CN | CRBRH | ERS | GENL | GEN | ZF3 | ST | GEN | CR |  | UDF_G3 | 1 | To Split Excav and Strut/deck | D2.2.1/2.4/2.5 | UDF_G3 | 50194 | 50260 | ZF3 |  |  |
| 17_CN10900 |  | Easr C&C Zone F3 - Cast Base Slab and concrete plugs | 18d | 2024-09-30 | 2024-10-17 | 17_CN10880, 17_CN10890 | 65d | 0d | CR117_Cost Loading [327484]; Strutting Team [144 h]; Lifting Team [144 h]; CR117 WEIGHTAGE [8396.16 h] | 327,484 | CN | CRBRH | ERS | GENL | BAL | ZF3 | RW | GEN | CR |  | UDF_G3 | 1 |  | D2.6 | UDF_G3 | 50194 | 50260 | ZF3 |  |  |
| 17_CN10910 |  | East C&C Zone F3- Remove S5 Struts | 12d | 2024-10-18 | 2024-10-29 | 17_CN10900 | 65d | 28d | CR117_Cost Loading [90334]; Strutting Team [96 h]; Lifting Team [96 h]; CR117 WEIGHTAGE [1711.12 h] | 90,334 | CN | CRBRH | ERS | GENL | GEN | ZF3 | SR | GEN | CR |  | UDF_G3 | 2 |  | D2.4 | UDF_G3 | 50194 | 50260 | ZF3 |  |  |
|  | 6 | **EAST C&C ZONE G-Luanching Shaft Excavation and Strutting Works** |  | 2024-05-27 | 2024-10-22 |  |  |  |  |  |  |  |  |  |  |  |  |  |  |  |  |  |  |  |  |  |  |  |  |  |
|  | 1 | **EAST C&C ZONE G Launching Shaft Excavation Works** |  | 2024-05-27 | 2024-09-26 |  |  |  |  |  |  |  |  |  |  |  |  |  |  |  |  |  |  |  |  |  |  |  |  |  |
| 17_CN18900 |  | East C&C-Zone G - Excavate to 1m below S1 (Approx 650m3, 250m3/day) | 3d | 2024-05-27 | 2024-05-29 | 17_CN10080, 17_CN10360 | 37d | 0d | Excavation Team [24 h]; CR117_Cost Loading [25996]; CR117 WEIGHTAGE [308.4 h] | 25,996 | CN | CRBRH | EXC | GENL | GEN | ZG | EC | GEN | CR |  | UDF_G3 | 1 |  |  | UDF_G3 | 50260 | 50291 | ZG | 1 | 1 |
| 17_CN18910 |  | East C&C-Zone G - Excavate to 1m below S2 (Approx 2345m3, 300m3/day) | 8d | 2024-06-15 | 2024-06-22 | 17_CN10920 | 37d | 0d | Excavation Team [64 h]; CR117_Cost Loading [93785]; CR117 WEIGHTAGE [969.36 h] | 93,785 | CN | CRBRH | EXC | GENL | GEN | ZG | EC | GEN | CR |  | UDF_G3 | 1 |  |  | UDF_G3 | 50260 | 50291 | ZG | 1 | 1 |
| 17_CN18920 |  | East C&C-Zone G - Excavate to 1m below S3 (Approx 2495m3, 300m3/day) | 9d | 2024-07-09 | 2024-07-17 | 17_CN10930 | 37d | 0d | Excavation Team [72 h]; CR117_Cost Loading [99784]; CR117 WEIGHTAGE [1101.44 h] | 99,784 | CN | CRBRH | EXC | GENL | GEN | ZG | EC | GEN | CR |  | UDF_G3 | 1 |  |  | UDF_G3 | 50260 | 50291 | ZG | 1 | 1 |
| 17_CN18930 |  | East C&C-Zone G - Excavate to 1m below S4 (Approx 2495m3, 300m3/day) | 9d | 2024-08-03 | 2024-08-11 | 17_CN10940 | 37d | 0d | CR117_Cost Loading [99784]; Excavation Team [72 h]; CR117 WEIGHTAGE [1101.44 h] | 99,784 | CN | CRBRH | EXC | GENL | GEN | ZG | EC | GEN | CR |  | UDF_G3 | 1 |  |  | UDF_G3 | 50260 | 50291 | ZG | 1 | 1 |
| 17_CN18940 |  | East C&C-Zone G - Excavate to 1m below S5 (Approx 1996m3, 300m3/day) | 7d | 2024-08-28 | 2024-09-03 | 17_CN10950 | 37d | 0d | Excavation Team [56 h]; CR117_Cost Loading [79827]; CR117 WEIGHTAGE [837.12 h] | 79,827 | CN | CRBRH | EXC | GENL | GEN | ZG | EC | GEN | CR |  | UDF_G3 | 1 |  |  | UDF_G3 | 50260 | 50291 | ZG | 1 | 1 |
| 17_CN10970 |  | Easr C&C-Zone G - Excavate to Base Slab (Approx 1498m3, 250m3/day) | 7d | 2024-09-17 | 2024-09-23 | 17_CN10960 | 37d | 0d | Excavation Team [160 h]; CR117_Cost Loading [50000]; CR117 WEIGHTAGE [1573.36 h] | 50,000 | CN | CRBRH | EXC | GENL | BAL | ZG | EC | GEN | CR |  | UDF_G3 | 1 | To Split Excav and Strut/deck | D2.2.1/2.4/2.5 | UDF_G3 | 50260 | 50291 | ZG | 1 | 1 |
| 17_CN10980 |  | East C&C-Zone G - Rock blasting (119 m3, 150m3/day, 2 days) & Clearance works | 3d | 2024-09-24 | 2024-09-26 | 17_CN10960, 17_CN10970 | 37d | 0d | Excavation Team [128 h]; CR117_Cost Loading [9911]; CR117 WEIGHTAGE [365.44 h] | 9,911 | CN | CRBRH | EXC | GENL | GEN | ZG | EC | GEN | CR |  | UDF_G3 | 2 |  | D2.2.1/2.4/2.5 | UDF_G3 | 50260 | 50291 | ZG | 1 | 1 |

| ID | WBS | Activity | Duration | Start | Finish | Predecessors | Total float | Free float | Resources | Cost | Text 1 | Comments | BOQ Item | Check 2 (Original Duration) | [UDF] Chainage Start | [UDF] Chainage Finish | Cr117 Handover | Check | PHASE | AREA | SUB-PHASE | STAGE | SUB AREA | LOCATION | LOCATION DETAILS | MAJOR WORKS | SUB-LOCATION DETAILS | CR-117 - FOT | LINE |
| --- | --- | --- | --- | --- | --- | --- | --- | --- | --- | --- | --- | --- | --- | --- | --- | --- | --- | --- | --- | --- | --- | --- | --- | --- | --- | --- | --- | --- | --- |
|  | 3 | **EAST C&C ZONE G Launching Shaft Strutting Works TBM set up** |  | 2024-05-30 | 2024-10-22 |  |  |  |  |  |  |  |  |  |  |  |  |  |  |  |  |  |  |  |  |  |  |  |  |
| 17_CN10920 |  | East C&C-Zone G - Construct / Install S1 RC Strut (8 nos) (0.5 no/day/ team) | 16d | 2024-05-30 | 2024-06-14 | 17_PC10280, 17_CN18900 | 37d | 0d | CR117_Cost Loading [80628]; Strutting Team [896 h]; Lifting Team [80 h]; CR117 WEIGHTAGE [1336.8 h] | 80,628 | 1 | To Split Excav and Strut/deck | D2.2.1/2.4/2.5 | UDF_G3 | 50260 | 50291 | 1 | UDF_G3 | CN | CRBRH | ERS | ZG | GENL | GEN | ZG | ST | GEN | 1 | CR |
| 17_CN10930 |  | East C&C-Zone G - Construct / Install S2 RC Strut (8 nos) (0.5no/day/ team) | 16d | 2024-06-23 | 2024-07-08 | 17_CN10920, 17_CN10830, 17_CN18910 | 37d | 0d | CR117_Cost Loading [80628]; Strutting Team [200 h]; Lifting Team [80 h]; CR117 WEIGHTAGE [1336.8 h] | 80,628 | 1 | To Split Excav and Strut/deck | D2.2.1/2.4/2.5 | UDF_G3 | 50260 | 50291 | 1 | UDF_G3 | CN | CRBRH | ERS | ZG | GENL | GEN | ZG | ST | GEN | 1 | CR |
| 17_CN10940 |  | East C&C-Zone G - Construct / Install S3 RC Strut (8 nos) (0.5no/day/ team) | 16d | 2024-07-18 | 2024-08-02 | 17_CN10930, 17_CN18920 | 37d | 0d | CR117_Cost Loading [80628]; Strutting Team [400 h]; Lifting Team [80 h]; CR117 WEIGHTAGE [1336.8 h] | 80,628 | 1 | To Split Excav and Strut/deck | D2.2.1/2.4/2.5 | UDF_G3 | 50260 | 50291 | 1 | UDF_G3 | CN | CRBRH | ERS | ZG | GENL | GEN | ZG | ST | GEN | 1 | CR |
| 17_CN10950 |  | East C&C-Zone G -Construct / Install S4 RC Strut (8 nos) (0.5no/day / team) | 16d | 2024-08-12 | 2024-08-27 | 17_CN10940, 17_CN18930 | 37d | 0d | CR117_Cost Loading [80628]; Strutting Team [400 h]; Lifting Team [80 h]; CR117 WEIGHTAGE [1336.8 h] | 80,628 | 1 | To Split Excav and Strut/deck | D2.2.1/2.4/2.5 | UDF_G3 | 50260 | 50291 | 1 | UDF_G3 | CN | CRBRH | ERS | ZG | GENL | GEN | ZG | ST | GEN | 1 | CR |
| 17_CN10960 |  | East C&C-Zone G - Install S5 Strut (11 nos) (0.8no/day/ team) | 13d | 2024-09-04 | 2024-09-16 | 17_CN10950, 17_CN18940 | 37d | 0d | CR117_Cost Loading [65511]; Strutting Team [300 h]; Lifting Team [104 h]; CR117 WEIGHTAGE [1808.8 h] | 65,511 | 1 | To Split Excav and Strut/deck | D2.2.1/2.4/2.5 | UDF_G3 | 50260 | 50291 | 1 | UDF_G3 | CN | CRBRH | ERS | ZG | GENL | GEN | ZG | ST | GEN | 1 | CR |
| 17_CN10990 |  | East C&C-Zone G - Cast Temporary Base slab | 21d | 2024-09-27 | 2024-10-17 | 17_CN10970, 17_CN10980 | 37d | 0d | CR117_Cost Loading [382064]; RC Team [168 h]; Lifting Team [168 h]; CR117 WEIGHTAGE [9802.08 h] | 382,064 | 1 |  | D2.6 | UDF_G3 | 50260 | 50291 | 1 | UDF_G3 | CN | CRBRH | ERS | ZG | GENL | BAL | ZG | RW | GEN | 1 | CR |
| 17_CN11000 |  | East C&C-Zone G - Remove S5 Struts | 5d | 2024-10-18 | 2024-10-22 | 17_CN10990 | 37d | 0d | CR117_Cost Loading [37639]; Strutting Team [40 h]; CR117 WEIGHTAGE [690.32 h] | 37,639 | 1 |  | D2.4 | UDF_G3 | 50260 | 50291 | 1 | UDF_G3 | CN | CRBRH | ERS | ZG | GENL | GEN | ZG | SR | GEN | 2 | CR |
|  | 5 | **EAST C&C ZONE F1& F2-Excavation and Strutting Works** |  | 2024-04-12 | 2024-12-07 |  |  |  |  |  |  |  |  |  |  |  |  |  |  |  |  |  |  |  |  |  |  |  |  |
|  | 1 | **EAST C&C ZONE F1&F2 Excavation Works** |  | 2024-04-12 | 2024-10-15 |  |  |  |  |  |  |  |  |  |  |  |  |  |  |  |  |  |  |  |  |  |  |  |  |
| 17_CN18960 |  | East C&C-Zone F1&2 - Excavate to 1m below S1 (Approx 1850m3, 250m3/day) | 8d | 2024-04-12 | 2024-04-19 | 17_CN10380, 17_CN10430, 17_CN10450, 17_CN10500, 17_CN10510, 17_CN10570, 17_PC10280 | 405d | 0d | Excavation Team [32 h]; CR117_Cost Loading [73988]; CR117 WEIGHTAGE [440.56 h] | 73,988 |  |  |  | UDF_G3 | 50117 | 50194 |  | UDF_G3 | CN | CRBRH | EXC | ZF1-2 | GENL | GEN | ZF1&2 | EC | GEN | 1 | CR |
| 17_CN18970 |  | East C&C-Zone F1&2 - Excavate to 1m below S2 (Approx 3097m3, 300 m3/day) | 11d | 2024-05-11 | 2024-05-21 | 17_CN11010 | 405d | 0d | Excavation Team [88 h]; CR117_Cost Loading [123860]; CR117 WEIGHTAGE [1365.84 h] | 123,860 |  |  |  | UDF_G3 | 50117 | 50194 |  | UDF_G3 | CN | CRBRH | EXC | ZF1-2 | GENL | GEN | ZF1&2 | EC | GEN | 1 | CR |
| 17_CN18980 |  | East C&C-Zone F1&2 - Excavate to 1m below S3 (Approx 3300m3, 300 m3/day) | 12d | 2024-06-26 | 2024-07-07 | 17_CN11020 | 405d | 0d | Excavation Team [96 h]; CR117_Cost Loading [131979]; CR117 WEIGHTAGE [1498 h] | 131,979 |  |  |  | UDF_G3 | 50117 | 50194 |  | UDF_G3 | CN | CRBRH | EXC | ZF1-2 | GENL | GEN | ZF1&2 | EC | GEN | 1 | CR |
| 17_CN18990 |  | East C&C-Zone F1&2 - Excavate to 1m below S4 (Approx 3300m3, 300 m3/day) | 12d | 2024-08-12 | 2024-08-23 | 17_CN11030 | 405d | 0d | Excavation Team [96 h]; CR117_Cost Loading [131979]; CR117 WEIGHTAGE [1498 h] | 131,979 |  |  |  | UDF_G3 | 50117 | 50194 |  | UDF_G3 | CN | CRBRH | EXC | ZF1-2 | GENL | GEN | ZF1&2 | EC | GEN | 1 | CR |
| 17_CN19000 |  | East C&C-Zone F1&2 - Excavate to Base Slab Level (Approx 2636m3, 250 m3/day) & Clearance Works | 20d | 2024-09-26 | 2024-10-15 | 17_CN11040 | 405d | 0d | CR117_Cost Loading [105423]; Excavation Team [304 h]; CR117 WEIGHTAGE [4934.56 h] | 105,423 |  |  |  | UDF_G3 | 50117 | 50194 |  | UDF_G3 | CN | CRBRH | EXC | ZF1-2 | GENL | GEN | ZF1&2 | EC | GEN | 1 | CR |
|  | 3 | **Excavation for Zone F1& F2 Strutting Works** |  | 2024-04-20 | 2024-12-07 |  |  |  |  |  |  |  |  |  |  |  |  |  |  |  |  |  |  |  |  |  |  |  |  |
| 17_CN11010 |  | East C&C STG4 Construct Traffic Deck for TSA opening - Zone F3 and Escape Shaft - Zone G | 21d | 2024-04-20 | 2024-05-10 | 17_CN18960 | 405d | 0d | CR117_Cost Loading [101625]; Lifting Team [800 h]; Strutting Team [168 h]; RC Team [168 h]; CR117 WEIGHTAGE [1484.8 h] | 101,625 |  | To Split Excav and Strut/deck | D2.2.1/2.4/2.5 | UDF_G3 | 50117 | 50194 |  | UDF_G3 | CN | CRBRH | ERS | ZF1-2 | GENL | GEN | ZF1&2 | ST | GEN | 2 | CR |
| 17_CN11020 |  | Easr C&C-Zone F1&2 - Install S2 strut (14 nos) (0.8no/day/ team) in 2 Areas F1 & F2 | 35d | 2024-05-22 | 2024-06-25 | 17_CN11010, 17_CN18970 | 405d | 0d | CR117_Cost Loading [156218]; Strutting Team [496 h]; Lifting Team [248 h]; CR117 WEIGHTAGE [3157.28 h] | 156,218 |  | To Split Excav and Strut/deck | D2.2.1/2.4/2.5 | UDF_G3 | 50117 | 50194 |  | UDF_G3 | CN | CRBRH | ERS | ZF1-2 | GENL | GEN | ZF1&2 | ST | GEN | 1 | CR |
| 17_CN11030 |  | East C&C-Zone F1&2 - Install S3 strut (14 nos) (0.8no/day/ team) in 2 Areas F1 & F2 | 35d | 2024-07-08 | 2024-08-11 | 17_CN11020, 17_CN18980 | 405d | 0d | CR117_Cost Loading [171335]; Strutting Team [800 h]; Lifting Team [272 h]; CR117 WEIGHTAGE [3332.64 h] | 171,335 |  | To Split Excav and Strut/deck | D2.2.1/2.4/2.5 | UDF_G3 | 50117 | 50194 |  | UDF_G3 | CN | CRBRH | ERS | ZF1-2 | GENL | GEN | ZF1&2 | ST | GEN | 1 | CR |
| 17_CN11040 |  | East C&C-Zone F1&2 - Install S4 strut (13 nos) (0.8no/day/ team) in 2 Areas F1 & F2 | 33d | 2024-08-24 | 2024-09-25 | 17_CN11030, 17_CN18990 | 405d | 0d | CR117_Cost Loading [181414]; Strutting Team [1000 h]; Lifting Team [288 h]; CR117 WEIGHTAGE [3350.48 h] | 181,414 |  | To Split Excav and Strut/deck | D2.2.1/2.4/2.5 | UDF_G3 | 50117 | 50194 |  | UDF_G3 | CN | CRBRH | ERS | ZF1-2 | GENL | GEN | ZF1&2 | ST | GEN | 1 | CR |
| 17_CN11060 |  | East C&C-Zone F1&2 - Cast Base Slab | 44d | 2024-10-16 | 2024-11-28 | 17_CN19000 | 405d | 0d | CR117_Cost Loading [800515]; RC Team [352 h]; CR117 WEIGHTAGE [20580.2 h] | 800,515 |  |  | D2.6 | UDF_G3 | 50117 | 50194 |  | UDF_G3 | CN | CRBRH | ERS | ZF1-2 | GENL | BAL | ZF1&2 | RW | GEN | 1 | CR |
| 17_CN11070 |  | East C&C-Zone F1&2- Remove S4 Struts | 9d | 2024-11-29 | 2024-12-07 | 17_CN11060 | 405d | 0d | CR117_Cost Loading [67750]; Strutting Team [72 h]; Lifting Team [72 h]; CR117 WEIGHTAGE [1273.68 h] | 67,750 |  |  | D2.4 | UDF_G3 | 50117 | 50194 |  | UDF_G3 | CN | CRBRH | ERS | ZF1-2 | GENL | GEN | ZF1&2 | SR | GEN | 2 | CR |
|  | 11 | **EAST C&C TUNNEL STRUCTURAL WORKS** |  | 2024-12-08 | 2029-02-16 |  |  |  |  |  |  |  |  |  |  |  |  |  |  |  |  |  |  |  |  |  |  |  |  |
|  | 1 | **Zone F1&2 Structure** |  | 2024-12-08 | 2025-04-23 |  |  |  |  |  |  |  |  |  |  |  |  |  |  |  |  |  |  |  |  |  |  |  |  |
| 17_CN11080 |  | East C&C-Zone F1&2 - Cast Wall to Roof Slab level | 66d | 2024-12-08 | 2025-02-11 | 17_CN11070 | 405d | 0d | CR117_Cost Loading [420932]; RC Team [528 h]; GW (C&S) [528 h]; CR117 WEIGHTAGE [14649.8 h] | 420,932 |  |  | D2.6 |  | 50117 | 50194 |  | UDF_G3 | CN | CRBRH | RCW | ZF1-2 | GENL | GEN | ZF1&2 | RW | GEN | 2 | CR |
| 17_CN11090 |  | East C&C-Zone F1&2 - Cast Tunnel Roof Slab | 41d | 2025-02-12 | 2025-03-24 | 17_CN11080 | 405d | 0d | CR117_Cost Loading [745935]; RC Team [328 h]; GW (C&S) [328 h]; CR117 WEIGHTAGE [2356.48 h] | 745,935 |  |  | D2.6 |  | 50117 | 50194 |  | UDF_G3 | CN | CRBRH | RCW | ZF1-2 | GENL | ROF | ZF1&2 | RW | GEN | 1 | CR |
| 17_CN11100 |  | East C&C- Zone F1&2 - Backfill to Roof Slab and cast concrete plugs | 16d | 2025-03-25 | 2025-04-09 | 17_CN11090 | 405d | 0d | CR117_Cost Loading [72355]; Excavation Team [128 h]; CR117 WEIGHTAGE [1313.92 h] | 72,355 |  |  | D2.2.3 |  | 50117 | 50194 |  | UDF_G3 | CN | CRBRH | RCW | ZF1-2 | GENL | GEN | ZF1&2 | BF | GEN | 3 | CR |
| 17_CN11110 |  | East C&C-Zone F1&2 - Remove S3 | 14d | 2025-04-10 | 2025-04-23 | 17_CN11090, 17_CN11100 | 405d | 348d | CR117_Cost Loading [105389]; Strutting Team [112 h]; CR117 WEIGHTAGE [2002.88 h] | 105,389 |  |  | D2.4 |  | 50117 | 50194 |  | UDF_G3 | CN | CRBRH | ERS | ZF1-2 | GENL | GEN | ZF1&2 | SR | GEN | 2 | CR |

| ID | WBS | Activity | Duration | Start | Finish | Predecessors | Total float | Free float | Resources | Cost | BOQ Item | [UDF] Chainage Start | [UDF] Chainage Finish | Check | PHASE | AREA | SUB-PHASE | STAGE | SUB AREA | LOCATION | LOCATION DETAILS | MAJOR WORKS | SUB-LOCATION DETAILS | CR-117 - FOT | LINE | Text 1 | Cr117 Handover |
| --- | --- | --- | --- | --- | --- | --- | --- | --- | --- | --- | --- | --- | --- | --- | --- | --- | --- | --- | --- | --- | --- | --- | --- | --- | --- | --- | --- |
|  | 2 | **Zone F3 Structure** |  | 2025-10-16 | 2026-08-08 |  |  |  |  |  |  |  |  |  |  |  |  |  |  |  |  |  |  |  |  |  |  |
| 17_CN11120 |  | Zone F3 - Construct Tunnel Walls, including Central wall to Tunnel Roof level | 66d | 2025-10-16 | 2025-12-20 | 17_CN10910, 17_CN11600 | 57d | 0d | CR117_Cost Loading [420932]; RC Team [528 h]; CR117 WEIGHTAGE [14649.8 h] | 420,932 | D2.6 | 50194 | 50260 | UDF_G3 | CN | CRBRH | RCW | ZF3 | GENL | GEN | ZF3 | RW | GEN | 2 | CR |  |  |
| 17_CN11130 |  | Zone F3 - Cast Tunnel Roof Slab including waterproofing | 37d | 2025-12-21 | 2026-01-26 | 17_CN11120 | 57d | 0d | CR117_Cost Loading [673161]; RC Team [296 h]; CR117 WEIGHTAGE [2122.8 h] | 673,161 | D2.6 | 50194 | 50260 | UDF_G3 | CN | CRBRH | RCW | ZF3 | GENL | ROF | ZF3 | RW | GEN | 1 | CR |  |  |
| 17_CN11140 |  | Zone F3 - Backfill to Tunnel Roof Slab and cast concrete plugs | 16d | 2026-01-27 | 2026-02-11 | 17_CN11120, 17_CN11130 | 57d | 0d | CR117_Cost Loading [72355]; RC Team [128 h]; CR117 WEIGHTAGE [1313.92 h] | 72,355 | D2.2.3 | 50194 | 50260 | UDF_G3 | CN | CRBRH | RCW | ZF3 | GENL | GEN | ZF3 | BF | GEN | 3 | CR |  |  |
| 17_CN11150 |  | Zone F3 - Remove S4 and S3 Struts | 18d | 2026-02-12 | 2026-03-01 | 17_CN11140 | 57d | 0d | CR117_Cost Loading [135501]; Lifting Team [144 h]; Strutting Team [144 h]; CR117 WEIGHTAGE [2586.24 h] | 135,501 | D2.4 | 50194 | 50260 | UDF_G3 | CN | CRBRH | ERS | ZF3 | GENL | GEN | ZF3 | SR | GEN | 2 | CR |  |  |
| 17_CN11160 |  | Zone F3 - Construct TSA Shaft Wall (bottom section: 6.3m height) | 36d | 2026-03-02 | 2026-04-06 | 17_CN11150 | 57d | 0d | CR117_Cost Loading [229599]; GW (C&S) [288 h]; RC Team [288 h]; CR117 WEIGHTAGE [2064.32 h] | 229,599 | D2.6 | 50194 | 50260 | UDF_G3 | CN | CRBRH | RCW | ZF3 | GENL | GEN | ZF3 | RW | GEN | 2 | CR |  |  |
| 17_CN11170 |  | Zone F3 and F 1&2 - Backfill to Top of Bottom section of Shaft wall | 16d | 2026-04-07 | 2026-04-22 | 17_CN11160, 17_CN11110 | 57d | 0d | CR117_Cost Loading [72355]; Excavation Team [128 h]; CR117 WEIGHTAGE [1313.92 h] | 72,355 | D2.2.3 | 50194 | 50260 | UDF_G3 | CN | CRBRH | ERS | ZF3 | GENL | GEN | ZF3 | BF | GEN | 3 | CR |  |  |
| 17_CN11180 |  | Zone F3 and F 1&2 - Remove S2 Struts | 10d | 2026-04-23 | 2026-05-02 | 17_CN11170 | 57d | 0d | CR117_Cost Loading [75278]; Strutting Team [80 h]; Lifting Team [80 h]; CR117 WEIGHTAGE [1419.52 h] | 75,278 | D2.4 | 50194 | 50260 | UDF_G3 | CN | CRBRH | ERS | ZF3 | GENL | GEN | ZF3 | SR | GEN | 2 | CR |  |  |
| 17_CN11190 |  | Zone F3 - Construct TSA Shaft Wall (mid section: 4m height) | 28d | 2026-05-03 | 2026-05-30 | 17_CN11180 | 57d | 0d | CR117_Cost Loading [178577]; RC Team [224 h]; CR117 WEIGHTAGE [1596.96 h] | 178,577 | D2.6 | 50194 | 50260 | UDF_G3 | CN | CRBRH | RCW | ZF3 | GENL | GEN | ZF3 | RW | GEN | 2 | CR |  |  |
| 17_CN11200 |  | Zone F3 and F 1&2 - Backfill to Top of Mid-Section of Shaft Wall | 16d | 2026-05-31 | 2026-06-15 | 17_CN11190 | 57d | 0d | CR117_Cost Loading [72355]; Excavation Team [128 h]; CR117 WEIGHTAGE [1313.92 h] | 72,355 | D2.2.3 | 50194 | 50260 | UDF_G3 | CN | CRBRH | ERS | ZF3 | GENL | GEN | ZF3 | BF | GEN | 3 | CR |  |  |
| 17_CN11210 |  | Zone F3 and F 1&2- Remove S1 Struts | 10d | 2026-06-16 | 2026-06-25 | 17_CN11200 | 57d | 0d | CR117_Cost Loading [75278]; Strutting Team [80 h]; Lifting Team [80 h]; CR117 WEIGHTAGE [1419.52 h] | 75,278 | D2.4 | 50194 | 50260 | UDF_G3 | CN | CRBRH | ERS | ZF3 | GENL | GEN | ZF3 | SR | GEN | 2 | CR |  |  |
| 17_CN11220 |  | Zone F3 - Construct TSA Shaft Wall (top Section: 4.45 height) | 28d | 2026-06-26 | 2026-07-23 | 17_CN11210 | 57d | 0d | CR117_Cost Loading [178577]; RC Team [224 h]; CR117 WEIGHTAGE [1596.96 h] | 178,577 | D2.6 | 50194 | 50260 | UDF_G3 | CN | CRBRH | RCW | ZF3 | GENL | GEN | ZF3 | RW | GEN | 2 | CR |  |  |
| 17_CN11230 |  | Zone F3 and F 1&2 - Backfill to ground level | 16d | 2026-07-24 | 2026-08-08 | 17_CN11220 | 57d | 17d | CR117_Cost Loading [72355]; Strutting Team [128 h]; CR117 WEIGHTAGE [1313.92 h] | 72,355 | D2.2.3 | 50194 | 50260 | UDF_G3 | CN | CRBRH | GDW | ZF3 | GENL | GRD | ZF3 | BF | GEN | 3 | CR |  |  |
|  | 3 | **Zone F3 Structure after return TSA** |  | 2028-12-12 | 2029-02-16 |  |  |  |  |  |  |  |  |  |  |  |  |  |  |  |  |  |  |  |  |  |  |
| 17_CN11240 |  | Zone F3 Shaft - Closing of Tunnel Access Shafts | 35d | 2028-12-12 | 2029-01-15 | 17_GN10220 | 7d | 0d | CR117_Cost Loading [636774]; GW (C&S) [280 h]; Excavation Team [280 h]; CR117 WEIGHTAGE [2006 h] | 636,774 | D2.6 | 50194 | 50260 | UDF_G3 | CN | CRBRH | ENA | ZF3 | GENL | GEN | ZF3 | RW | GEN | 1 | CR |  |  |
| 17_CN11250 |  | Zone F3 Shaft - Waterproofing to Tunnel Roof (shaft areas) | 16d | 2029-01-16 | 2029-01-31 | 17_CN11240, 17_CN11090 | 318d | 0d | CR117_Cost Loading [291097]; CR117 WEIGHTAGE [4038.08 h] | 291,097 | D2.6.2.4 | 50194 | 50260 | UDF_G3 | CN | CRBRH | ENA | ZF3 | GENL | GEN | ZF3 | WP | GEN | 5 | CR |  |  |
| 17_CN11260 |  | Zone F3 - Backfill shaft to Ground Level | 16d | 2029-02-01 | 2029-02-16 | 17_CN11250 | 318d |  | CR117_Cost Loading [72355]; Excavation Team [128 h]; CR117 WEIGHTAGE [1313.92 h] | 72,355 | D2.2.3 | 50194 | 50260 | UDF_G3 | CN | CRBRH | ENA | ZF3 | GENL | GRD | ZF3 | BF | GEN | 3 | CR |  |  |
|  | 4 | **Zone G Launch Shaft Structural Works** |  | 2025-12-21 | 2027-02-28 |  |  |  |  |  |  |  |  |  |  |  |  |  |  |  |  |  |  |  |  |  |  |
| 17_CN11270 |  | Zone G - Construct Launch Shaft Walls (excluding Central Wall) | 60d | 2025-12-21 | 2026-02-18 | 17_CN11000, 17_CN11600, 17_CN11120 | 71d | 31d | CR117_Cost Loading [382665]; RC Team [480 h]; GW (C&S) [480 h]; CR117 WEIGHTAGE [3466.64 h] | 382,665 | D2.6 | 50260 | 50291 | UDF_G3 | CN | CRBRH | RCW | ZG | GENL | GEN | ZG | RW | GEN | 2 | CR |  |  |
| 17_CN11280 |  | Zone G - Cast Permanent Base Slab and Central Wall | 18d | 2026-03-22 | 2026-04-08 | 17_CN11670, 17_CN11270 | 40d | 0d | CR117_Cost Loading [382064]; RC Team [192 h]; GW (C&S) [192 h]; CR117 WEIGHTAGE [1363.28 h] | 382,064 | D2.6 | 50260 | 50291 | UDF_G3 | CN | CRBRH | RCW | ZG | GENL | BAL | ZG | RW | GEN | 1 | CR | 1 | 1 |
| 17_CN11290 |  | Lower Escape Shaft - Cast Walls, Slabs and Stairs to Tunnel Roof Level | 18d | 2026-04-09 | 2026-04-26 | 17_CN11270, 17_CN11280 | 41d | 1d | CR117_Cost Loading [133933]; RC Team [192 h]; GW (C&S) [192 h]; CR117 WEIGHTAGE [1363.28 h] | 133,933 | D2.6 | 50260 | 50291 | UDF_G3 | CN | CRBRH | RCW | ZG | GENL | GEN | ES | RW | GEN | 2 | CR |  |  |
| 17_CN11300 |  | Zone G - Construct Tunnel Roof at Launch Shaft | 12d | 2026-04-09 | 2026-04-20 | 17_CN11270, 17_CN11280 | 40d | 0d | CR117_Cost Loading [382064]; RC Team [192 h]; GW (C&S) [192 h]; CR117 WEIGHTAGE [1363.28 h] | 382,064 | D2.6 | 50260 | 50291 | UDF_G3 | CN | CRBRH | RCW | ZG | GENL | ROF | ZG | RW | GEN | 1 | CR | 1 | 1 |
| 17_CN11310 |  | Zone G - Waterproofing to Launch Shaft Roof | 7d | 2026-04-21 | 2026-04-27 | 17_CN11300 | 40d | 0d | CR117_Cost Loading [270000]; CR117 WEIGHTAGE [503.28 h] | 270,000 | D2.6.2.4 | 50260 | 50291 | UDF_G3 | CN | CRBRH | ENA | ZG | GENL | GEN | ZG | WP | GEN | 4 | CR | 1 | 1 |
| 17_CN11320 |  | Zone G - Backfill to Roof and Construct concrete plugs and remove S4 struts | 7d | 2026-04-28 | 2026-05-04 | 17_CN11310, 17_CN11290 | 40d | 0d | CR117_Cost Loading [31655]; Excavation Team [80 h]; CR117 WEIGHTAGE [806.56 h] | 31,655 | D2.2.3 | 50260 | 50291 | UDF_G3 | CN | CRBRH | RCW | ZG | GENL | GEN | ZG | BF | GEN | 3 | CR | 1 | 1 |
| 17_CN11330 |  | Zone G - 1st Stage Concrete | 10d | 2026-05-05 | 2026-05-14 | 17_CN11320 | 139d | 99d | CR117_Cost Loading [26010]; RC Team [112 h]; CR117 WEIGHTAGE [275.84 h] | 26,010 | D2.6 | 50260 | 50291 | UDF_G3 | CN | CRBRH | RCW | ZG | GENL | GEN | ZG | RW | GEN | 13 | CR |  |  |
| 17_CN11340 |  | Lower Escape Shaft - Cast Walls, Slabs, and Roof of Lower Escape Shaft | 18d | 2026-05-05 | 2026-05-22 | 17_CN11320 | 40d | 0d | CR117_Cost Loading [133933]; RC Team [168 h]; CR117 WEIGHTAGE [1188 h] | 133,933 | D2.6 | 50260 | 50291 | UDF_G3 | CN | CRBRH | RCW | ZG | GENL | GEN | ZG | RW | GEN | 2 | CR | 1 | 1 |
| 17_CN11350 |  | Upper Escape Shaft - Construct Walls and Stairs to 0.5m below S3 struts | 18d | 2026-05-23 | 2026-06-09 | 17_CN11320, 17_CN11340 | 40d | 0d | CR117_Cost Loading [133933]; RC Team [168 h]; CR117 WEIGHTAGE [1188 h] | 133,933 | D2.6 | 50260 | 50291 | UDF_G3 | CN | CRBRH | RCW | ZG | GENL | GEN | ZG | RW | GEN | 2 | CR | 1 | 1 |
| 17_CN11360 |  | Zone G - Backfill 0.5m below S3 struts, Construct concrete plugs and remove S3 struts | 10d | 2026-06-10 | 2026-06-19 | 17_CN11350, 17_CN11340 | 40d | 0d | CR117_Cost Loading [75278]; Excavation Team [80 h]; GW (C&S) [80 h]; CR117 WEIGHTAGE [806.56 h] | 75,278 | D2.2.3 | 50260 | 50291 | UDF_G3 | CN | CRBRH | RCW | ZG | GENL | GEN | ZG | BF | GEN | 2 | CR | 1 | 1 |
| 17_CN11370 |  | Upper Escape Shaft - cast Walls and Stairs to 0.5m below S2 struts | 18d | 2026-06-20 | 2026-07-07 | 17_CN11360 | 40d | 0d | CR117_Cost Loading [133933]; RC Team [168 h]; CR117 WEIGHTAGE [1188 h] | 133,933 | D2.6 | 50260 | 50291 | UDF_G3 | CN | CRBRH | RCW | ZG | GENL | GEN | ZG | RW | GEN | 2 | CR | 1 | 1 |
| 17_CN11380 |  | Zone G - Backfill 0.5m below S2 struts, Construct concrete plugs and remove S2 struts | 10d | 2026-07-08 | 2026-07-17 | 17_CN11370 | 40d | 0d | CR117_Cost Loading [75278]; Excavation Team [80 h]; GW (C&S) [80 h]; CR117 WEIGHTAGE [806.56 h] | 75,278 | D2.2.3 | 50260 | 50291 | UDF_G3 | CN | CRBRH | RCW | ZG | GENL | GEN | ZG | BF | GEN | 2 | CR | 1 | 1 |
| 17_CN11390 |  | Upper Escape Shaft - cast Walls and Stairs to 0.5m below S1 struts | 18d | 2026-07-18 | 2026-08-04 | 17_CN11380 | 40d | 0d | CR117_Cost Loading [133933]; RC Team [168 h]; CR117 WEIGHTAGE [1188 h] | 133,933 | D2.6 | 50260 | 50291 | UDF_G3 | CN | CRBRH | RCW | ZG | GENL | GEN | ZG | RW | GEN | 2 | CR | 1 | 1 |
| 17_CN11400 |  | Zone G - Backfill 0.5m below S1 struts, Construct concrete plugs and remove S1 struts | 10d | 2026-08-05 | 2026-08-14 | 17_CN11390 | 40d | 0d | CR117_Cost Loading [75278]; RC Team [80 h]; CR117 WEIGHTAGE [806.56 h] | 75,278 | D2.2.3 | 50260 | 50291 | UDF_G3 | CN | CRBRH | RCW | ZG | GENL | GEN | ZG | BF | GEN | 2 | CR | 1 | 1 |
| 17_CN11410 |  | Upper Escape Shaft - Construct Walls and Stairs to Ground Level | 7d | 2026-08-15 | 2026-08-21 | 17_CN11400 | 40d | 0d | CR117_Cost Loading [89289]; GW (C&S) [112 h]; RC Team [112 h]; CR117 WEIGHTAGE [779.04 h] | 89,289 | D2.6 | 50260 | 50291 | UDF_G3 | CN | CRBRH | RCW | ZG | GENL | GEN | ZG | RW | GEN | 2 | CR | 1 | 1 |
| 17_CN11420 |  | Zone G - Backfill to Ground Level | 4d | 2026-08-22 | 2026-08-25 | 17_CN11410, 17_CN11330 | 40d | 0d | CR117_Cost Loading [31655]; Excavation Team [80 h]; CR117 WEIGHTAGE [806.56 h] | 31,655 | D2.2.3 | 50260 | 50291 | UDF_G3 | CN | CRBRH | EXC | ZG | GENL | GRD | ZG | BF | GEN | 3 | CR | 1 | 1 |
| 17_CN11430 |  | Upper Escape Shaft - cast Walls, Slabs and Stairs to Roof | 40d | 2027-01-20 | 2027-02-28 | 17_CN11400, 17_CN10190 | 92d |  | CR117_Cost Loading [255110]; RC Team [320 h]; CR117 WEIGHTAGE [2298.16 h] | 255,110 | D2.6 | 50260 | 50291 | UDF_G3 | CN | CRBRH | RCW | ZG | GENL | GEN | ES | RW | GEN | 2 | CR |  |  |

| ID | WBS | Activity | Duration | Start | Finish | Predecessors | Total float | Free float | Resources | Cost | Text 1 | BOQ Item | Check 2 (Original Duration) | [UDF] Chainage Start | [UDF] Chainage Finish | Cr117 Handover | Check | PHASE | AREA | SUB-PHASE | STAGE | SUB AREA | LOCATION | LOCATION DETAILS | MAJOR WORKS | SUB-LOCATION DETAILS | CR-117 - FOT | LINE |
| --- | --- | --- | --- | --- | --- | --- | --- | --- | --- | --- | --- | --- | --- | --- | --- | --- | --- | --- | --- | --- | --- | --- | --- | --- | --- | --- | --- | --- |
|  | 3 | **BORED TUNNEL WORKS** |  | 2024-10-23 | 2026-10-01 |  |  |  |  |  |  |  |  |  |  |  |  |  |  |  |  |  |  |  |  |  |  |  |
|  | 1 | **TBM Launching** |  | 2024-10-23 | 2025-01-23 |  |  |  |  |  |  |  |  |  |  |  |  |  |  |  |  |  |  |  |  |  |  |  |
| 17_CN11440 |  | Zone G - Cradle for TBM (5 Weeks) & Thrust Frame Installation | 35d | 2024-10-23 | 2024-11-26 | 17_MF10020, 17_CN10990, 17_DS10430, 17_CN11000 | 37d | 0d | CR117_Cost Loading [1133022]; CR117 WEIGHTAGE [2006 h]; Tunnel Crew Team [280 h] | 1,133,022 | 1 | D3.2 | UDF_G3 | 50260 | 50291 | 1 | UDF_G3 | CN | CRT12 | ASM | ZG | GENL | GEN | ZG | GN | GEN | 02 | CR |
| 17_CN19820 |  | Zone G - Install TBM Shield (Lowering) | 7d | 2024-11-27 | 2024-12-03 | 17_CN11440, 17_CN10910 | 37d | 0d | CR117_Cost Loading [226604]; CR117 WEIGHTAGE [7.12 h]; Lifting Team [56 h]; Tunnel Crew Team [56 h] | 226,604 |  |  |  | 50260 | 50291 | 1 | UDF_G3 | CN | CRT12 | ASM | ZG | GENL | GEN | ZG | GN | GEN | 02 | CR |
| 17_CN11450 |  | Zone G - Install TBM and Backup | 35d | 2024-12-04 | 2025-01-07 | 17_MF10020, 17_CN11440, 17_PC10200, 17_CN19820 | 37d | 0d | CR117_Cost Loading [1133022]; CR117 WEIGHTAGE [143682 h]; Tunnel Crew Team [280 h] | 1,133,022 | 1 | D3.2 | UDF_G3 | 50260 | 50291 | 1 | UDF_G3 | CN | CRT12 | ASM | ZG | GENL | GEN | ZG | GN | GEN | 02 | CR |
| 17_CN19830 |  | Zone G - Install Noise Enclosure | 35d | 2024-12-04 | 2025-01-07 | 17_CN19820 | 53d | 16d | Lifting Team [280 h]; CR117 WEIGHTAGE [35.28 h]; CR117_Cost Loading [824569] | 824,569 |  |  |  | 50260 | 50291 |  | UDF_G3 | CN | CRT12 | ASM | ZG | GENL | GEN | ZG | GN | GEN | 04 | CR |
| 17_CN12980 |  | Zone G - TBM Testing and Commissioning (Before Launching) | 14d | 2025-01-08 | 2025-01-21 | 17_CN11450 | 37d | 0d | CR117 WEIGHTAGE |  |  |  |  | 50260 | 50291 | 1 |  | CN | CRT12 | ASM | ZG | GENL | GEN | ZG | GN | GEN |  | CR |
| 17_CN12990 |  | Zone G - Temporary Ring Installation | 2d | 2025-01-22 | 2025-01-23 | 17_CN12980 | 37d | 0d |  |  |  |  |  | 50260 | 50291 | 1 |  |  | CRT12 | ASM | ZG | GENL | GEN | ZG | GN | GEN |  | CR |
|  | 2 | **WB Drive 569m (4m/d)** |  | 2025-01-24 | 2025-11-19 |  |  |  |  |  |  |  |  |  |  |  |  |  |  |  |  |  |  |  |  |  |  |  |
| 17_CN11460 |  | West Bound Drive from Ch. 50291 To Ch. 50331 (40m) (4m/day) | 10d | 2025-01-24 | 2025-02-02 | 17_MF10060, 17_PC10090, 17_CN10390, 17_CN11450, 17_CN19830, 17_CN12990 | 37d | 0d | CR117_Cost Loading [323720]; CR117 WEIGHTAGE [6112.96 h]; Tunnel Crew Team [80 h] | 323,720 | 1 | D3.4~7 | UDF_G3 | 50291 | 50331 | 1 | UDF_G3 | CN | CRT12 |  |  | GENL | WEB | ZG | TD | GEN | 02 | CR |
| 17_CN11470 |  | West Bound - Perform CHI and Drive from Ch. 50331 to Ch. 50433 (102m) (4m/day) | 26d | 2025-02-03 | 2025-02-28 | 17_CN11460 | 37d | 0d | CR117_Cost Loading [841673]; CR117 WEIGHTAGE [15955.9 h]; Tunnel Crew Team [208 h] | 841,673 | 1 | D3.4~7 | UDF_G3 | 50331 | 50433 | 1 | UDF_G3 | CN | CRT12 |  |  | GENL | WEB | ZG | TD | GEN | 02 | CR |
| 17_CN11480 |  | West Bound - Perform CHI and Drive from Ch. 50433 To Ch. 50469 (36m) (4m/day) | 9d | 2025-03-01 | 2025-03-09 | 17_CN11470 | 37d | 0d | CR117_Cost Loading [291348]; CR117 WEIGHTAGE [5497.68 h]; Tunnel Crew Team [72 h] | 291,348 | 1 | D3.4~7 | UDF_G3 | 50433 | 50469 | 1 | UDF_G3 | CN | CRT12 |  |  | GENL | WEB | ZG | TD | GEN | 02 | CR |
| 17_CN11490 |  | West Bound - Perform CHI and Drive from Ch. 50469 To Ch. 50508 (39m) (4m/day) | 10d | 2025-03-10 | 2025-03-19 | 17_CN11480 | 37d | 0d | CR117_Cost Loading [323720]; CR117 WEIGHTAGE [6112.96 h]; Tunnel Crew Team [80 h] | 323,720 | 1 | D3.4~7 | UDF_G3 | 50469 | 50508 | 1 | UDF_G3 | CN | CRT12 |  |  | GENL | WEB | ZG | TD | GEN | 02 | CR |
| 17_CN11500 |  | West Bound - Perform CHI and Drive from Ch. 50508 To Ch. 50729 (221m) (4m/day) | 55d | 2025-03-20 | 2025-05-13 | 17_CN11490 | 37d | 0d | CR117_Cost Loading [1780463]; CR117 WEIGHTAGE [34411.4 h]; Tunnel Crew Team [440 h] | 1,780,463 | 1 | D3.4~7 | UDF_G3 | 50508 | 50729 | 1 | UDF_G3 | CN | CRT12 |  |  | GENL | WEB | ZG | TD | GEN | 02 | CR |
| 17_CN11510 |  | West Bound - Perform CHI and Drive from Ch. 50729 To Ch. 50769 (40m) (4m/day) | 10d | 2025-05-14 | 2025-05-23 | 17_CN11500 | 37d | 0d | CR117_Cost Loading [323720]; CR117 WEIGHTAGE [6112.96 h]; Tunnel Crew Team [80 h] | 323,720 | 1 | D3.4~7 | UDF_G3 | 50729 | 50769 | 1 | UDF_G3 | CN | CRT12 |  |  | GENL | WEB | ZG | TD | GEN | 02 | CR |
| 17_CN11520 |  | West Bound - Perform CHI and Drive from Ch. 50769 To Ch. 50809 (40m) (4m/day) | 10d | 2025-05-24 | 2025-06-02 | 17_CN11510 | 37d | 0d | CR117_Cost Loading [323720]; CR117 WEIGHTAGE [6112.96 h]; Tunnel Crew Team [80 h] | 323,720 | 1 | D3.4~7 | UDF_G3 | 50769 | 50809 | 1 | UDF_G3 | CN | CRT12 |  |  | GENL | WEB | ZG | TD | GEN | 02 | CR |
| 17_CN11530 |  | West Bound - Perform CHI and Drive from Ch. 50809 To Ch. 50849 (40m) (4m/day) | 10d | 2025-06-03 | 2025-06-12 | 17_CN11520 | 37d | 0d | CR117_Cost Loading [323720]; CR117 WEIGHTAGE [6112.96 h]; Tunnel Crew Team [80 h] | 323,720 | 1 | D3.4~7 | UDF_G3 | 50809 | 50849 | 1 | UDF_G3 | CN | CRT12 |  |  | GENL | WEB | ZG | TD | GEN | 02 | CR |
| 17_CN11540 |  | West Bound - Perform CHI and Drive from Ch. 50849 To Ch. 50860 (11m) (4m/day) | 3d | 2025-06-13 | 2025-06-15 | 17_CN11530 | 37d | 0d | CR117_Cost Loading [97116]; CR117 WEIGHTAGE [1806.56 h]; Tunnel Crew Team [24 h] | 97,116 | 1 | D3.4~7 | UDF_G3 | 50849 | 50860 | 1 | UDF_G3 | CN | CRT12 |  |  | GENL | WEB | ZG | TD | GEN | 02 | CR |
| 17_CN11550 |  | Dismantle at End of Tunnel 1 (4 Weeks) | 28d | 2025-06-16 | 2025-07-13 | 17_CN11540 | 37d | 0d | CR117_Cost Loading [906417]; Lifting Team [224 h]; GW (M&E) [224 h]; CR117 WEIGHTAGE [12033.4 h]; Tunnel Crew Team [224 h] | 906,417 | 1 | D3.3 | UDF_G3 |  |  | 1 | UDF_G3 | CN | CRT12 |  |  | GENL | WEB | ZG | TD | GEN | 02 | CR |
| 17_CN11560 |  | Rebuild to TBM2 with Refub Cutterhead & Assemly at Surface (8 Weeks) | 56d | 2025-07-14 | 2025-09-07 | 17_CN11550 | 37d | 0d | CR117_Cost Loading [1812835]; GW (M&E) [448 h]; Lifting Team [448 h]; CR117 WEIGHTAGE [3232.88 h]; Tunnel Crew Team [448 h] | 1,812,835 | 1 | D3.3 | UDF_G3 |  |  | 1 | UDF_G3 | CN | CRT12 |  |  | GENL | WEB | ZG | TD | GEN | 02 | CR |
| 17_CN11570 |  | Construct 1st Stage Concrete at Tunnel 1 (Approx. 1,165m3 - 16 m3/day) | 72d | 2025-07-14 | 2025-09-23 | 17_CN11550 | 449d | 0d | CR117_Cost Loading [345186]; RC Team [560 h]; CR117 WEIGHTAGE [6697.84 h]; Tunnel Crew Team [576 h] | 345,186 |  | D3.13 | UDF_G3 | 50291 | 50860 |  | UDF_G3 | CN | CRT12 | RCW |  | GENL | TRK | ZG | RW | GEN | 13 | CR |
| 17_CN11580 |  | Assembly of TBM2 (4 Weeks) | 28d | 2025-09-08 | 2025-10-05 | 17_CN11560 | 37d | 0d | CR117_Cost Loading [906417]; Lifting Team [224 h]; GW (M&E) [224 h]; CR117 WEIGHTAGE [12033.4 h]; Tunnel Crew Team [224 h] | 906,417 | 1 | D3.3 | UDF_G3 |  |  | 1 | UDF_G3 | CN | CRT12 |  |  | GENL | EAB | ZG | TD | GEN | 02 | CR |
| 17_CN11590 |  | Install SWC Brackets at Tunnel 1 (Approx. 569 m - 10 mm/day) | 57d | 2025-09-24 | 2025-11-19 | 17_CN11570 | 449d | 261d | CR117_Cost Loading; CR117 WEIGHTAGE [3291.36 h]; Tunnel Crew Team [456 h] |  |  |  | UDF_G3 |  |  |  | UDF_G3 | CN | CRT12 |  |  | GENL | WEB | ZG | TD | GEN | 17 | CR |
|  | 3 | **EB Drive 545m (4m/d)** |  | 2025-10-06 | 2026-10-01 |  |  |  |  |  |  |  |  |  |  |  |  |  |  |  |  |  |  |  |  |  |  |  |
| 17_CN11600 |  | East Bound - Drive from Ch. 50291 To Ch. 50331 (40m) (4m/day) | 10d | 2025-10-06 | 2025-10-15 | 17_MF10070, 17_CN11580 | 37d | 0d | CR117_Cost Loading [323720]; CR117 WEIGHTAGE [6112.96 h]; Tunnel Crew Team [80 h] | 323,720 | 1 | D3.4~7 | UDF_G3 | 50291 | 50331 | 1 | UDF_G3 | CN | CRT12 |  |  | GENL | EAB | ZG | TD | GEN | 02 | CR |
| 17_CN11610 |  | East Bound - Perform CHI and Drive from Ch. 50331 To Ch. 50506 (175m) (4m/day) | 44d | 2025-10-16 | 2025-11-28 | 17_CN11600 | 37d | 0d | CR117_Cost Loading [1424370]; CR117 WEIGHTAGE [27029.2 h]; Tunnel Crew Team [352 h] | 1,424,370 | 1 | D3.4~7 | UDF_G3 | 50331 | 50506 | 1 | UDF_G3 | CN | CRT12 |  |  | GENL | EAB | ZG | TD | GEN | 02 | CR |
| 17_CN11620 |  | East Bound - Perform CHI and Drive from Ch. 50506 To Ch. 50695 (189m) (4m/day) | 48d | 2025-11-29 | 2026-01-15 | 17_CN11610 | 37d | 0d | CR117_Cost Loading [1553858]; CR117 WEIGHTAGE [29490 h]; Tunnel Crew Team [384 h] | 1,553,858 | 1 | D3.4~7 | UDF_G3 | 50506 | 50695 | 1 | UDF_G3 | CN | CRT12 |  |  | GENL | EAB | ZG | TD | GEN | 02 | CR |
| 17_CN11630 |  | East Bound - Perform CHI and Drive from Ch. 50695 To Ch. 50739 (44m) (4m/day) | 11d | 2026-01-16 | 2026-01-26 | 17_CN11620 | 37d | 0d | CR117_Cost Loading [356093]; CR117 WEIGHTAGE [6728.08 h]; Tunnel Crew Team [88 h] | 356,093 | 1 | D3.4~7 | UDF_G3 | 50695 | 50739 | 1 | UDF_G3 | CN | CRT12 |  |  | GENL | EAB | ZG | TD | GEN | 02 | CR |
| 17_CN11640 |  | East Bound - Perform CHI and Drive from Ch. 50739 To Ch. 50779 (40m) (4m/day) | 10d | 2026-01-27 | 2026-02-05 | 17_CN11630 | 37d | 0d | CR117_Cost Loading [323720]; CR117 WEIGHTAGE [6112.96 h]; Tunnel Crew Team [80 h] | 323,720 | 1 | D3.4~7 | UDF_G3 | 50739 | 50779 | 1 | UDF_G3 | CN | CRT12 |  |  | GENL | EAB | ZG | TD | GEN | 02 | CR |
| 17_CN11650 |  | East Bound - Perform CHI and Drive from Ch. 50779 To Ch. 50819 (40m) (4m/day) | 10d | 2026-02-06 | 2026-02-15 | 17_CN11640 | 37d | 0d | CR117_Cost Loading [323720]; CR117 WEIGHTAGE [6112.96 h]; Tunnel Crew Team [80 h] | 323,720 | 1 | D3.4~7 | UDF_G3 | 50779 | 50819 | 1 | UDF_G3 | CN | CRT12 |  |  | GENL | EAB | ZG | TD | GEN | 02 | CR |
| 17_CN11660 |  | East Bound - Perform CHI and Drive from Ch. 50819 To Ch. 50841 (22m) (4m/day) | 6d | 2026-02-16 | 2026-02-21 | 17_CN11650 | 37d | 0d | CR117_Cost Loading [194232]; CR117 WEIGHTAGE [3652.16 h]; Tunnel Crew Team [48 h] | 194,232 | 1 | D3.4~7 | UDF_G3 | 50819 | 50841 | 1 | UDF_G3 | CN | CRT12 |  |  | GENL | EAB | ZG | TD | GEN | 02 | CR |
| 17_CN11670 |  | Dismantle at End of Tunnel 2 (4 Weeks) | 28d | 2026-02-22 | 2026-03-21 | 17_CN11660 | 40d | 0d | CR117_Cost Loading [906417]; GW (M&E) [224 h]; Lifting Team [224 h]; CR117 WEIGHTAGE [12033.4 h]; Tunnel Crew Team [224 h] | 906,417 | 1 | D3.3 | UDF_G3 |  |  | 1 | UDF_G3 | CN | CRT12 |  |  | GENL | EAB | ZG | TD | GEN | 02 | CR |
| 17_CN11680 |  | Hacking of N109A for breakthrough and Making Good | 60d | 2026-03-31 | 2026-05-29 | 17_GN10190, 17_CN11670 | 62d | 0d | CR117_Cost Loading; GW (C&S) [480 h]; CR117 WEIGHTAGE [3466.64 h]; Tunnel Crew Team [480 h] |  |  |  | UDF_G3 |  |  |  | UDF_G3 | CN | CRT12 |  |  | GENL | GEN | ZG | TD | GEN | 10 | CR |
| 17_CN11690 |  | Construct 1st Stage Concrete at Tunnel 2 (Approx. 1,125m3 - 16 m3/day) | 70d | 2026-05-30 | 2026-08-07 | 17_CN11680 | 188d | 0d | CR117_Cost Loading [345186]; RC Team [568 h]; CR117 WEIGHTAGE [6756.24 h]; Tunnel Crew Team [560 h] | 345,186 |  | D3.13 | UDF_G3 | 50291 | 50841 |  | UDF_G3 | CN | CRT12 | RCW |  | GENL | TRK | ZG | RW | GEN | 13 | CR |
| 17_CN12930 |  | Construct Insitu Lining and Ring Beam (after hacking) | 60d | 2026-05-30 | 2026-07-28 | 17_CN11680 | 198d | 10d | CR117 WEIGHTAGE [60.4 h]; CR117_Cost Loading [1942323]; RC Team [480 h]; Tunnel Crew Team [480 h] | 1,942,323 |  |  |  |  |  |  | UDF_G3 | CN | CRT12 | RCW |  | GENL | GEN | ZG | TS | GEN | 02 | CR |
| 17_CN11700 |  | Install SWC Brackets at Tunnel 2 (Approx. 550 m - 10 mm/day) | 55d | 2026-08-08 | 2026-10-01 | 17_CN11590, 17_CN11690, 17_CN12930 | 188d | 110d | CR117_Cost Loading; CR117 WEIGHTAGE [3174.56 h]; Tunnel Crew Team [440 h] |  |  |  | UDF_G3 |  |  |  | UDF_G3 | CN | CRT12 |  |  | GENL | EAB | ZG | TD | GEN | 17 | CR |

| ID | WBS | Activity | Duration | Start | Finish | Predecessors | Total float | Free float | Resources | Cost | Text 1 | Text 3 | Text 2 | Check | SBP and KP | PHASE | AREA | SUB-PHASE | SUB AREA | LOCATION | LOCATION DETAILS | MAJOR WORKS | SUB-LOCATION DETAILS | CR-117 - FOT | LINE | Utility Programme | STAGE |
| --- | --- | --- | --- | --- | --- | --- | --- | --- | --- | --- | --- | --- | --- | --- | --- | --- | --- | --- | --- | --- | --- | --- | --- | --- | --- | --- | --- |
|  | 4 | **STATION** |  | 2023-01-22 | 2027-04-23 |  |  |  |  |  |  |  |  |  |  |  |  |  |  |  |  |  |  |  |  |  |  |
|  | 1 | **STATION-STAGE 0 to 2** |  | 2023-01-22 | 2023-11-09 |  |  |  |  |  |  |  |  |  |  |  |  |  |  |  |  |  |  |  |  |  |  |
|  | 1 | **STATION-STG0-2-ERSS-SBP and D Wall Works** |  | 2023-01-22 | 2023-08-07 |  |  |  |  |  |  |  |  |  |  |  |  |  |  |  |  |  |  |  |  |  |  |
| 17_CN11730 |  | STN-STG0-2- S1 SBP (30 nos with 1 Rig; 0.5/d/Rig) | 60d | 2023-01-22 | 2023-03-22 | 17_PC10070, 17_DS10590, 17_DS11440 | 69d | 0d | CR117_Cost Loading [1366627]; SBP Team [520 h]; CR117 WEIGHTAGE [13973.8 h] | 1,366,627 | 1 | 1 | 1 | UDF_G3 | 1 | CN | CRBRH | ERS | GENL | GEN | ZC1 | SE | TD0 | 2 | CR |  |  |
| 17_CN11830 |  | STN-STG0-2- S2 SBP (45 nos with 1 Rigs; 0.5//d/Rig) | 90d | 2023-01-22 | 2023-04-21 | 17_PC10070, 17_DS10590, 17_DS11440 | 95d | 0d | CR117_Cost Loading [2049941]; SBP Team [1792 h]; CR117 WEIGHTAGE [48071.8 h] | 2,049,941 |  |  |  | UDF_G3 | 1 | CN | CRBRH | ERS | GENL | GEN | ZB | SE | TD0 | 2 | CR |  |  |
| 17_CN11850 |  | STN-STG0-2- S4 SBP (43 nos with 1 Rig; 0.5/d/Rig) | 86d | 2023-01-22 | 2023-04-17 | 17_DS10590, 17_PC10070, 17_DS11440 | 309d | 0d | CR117_Cost Loading [1958833]; SBP Team [2352 h]; CR117 WEIGHTAGE [63106.4 h] | 1,958,833 |  |  |  | UDF_G3 | 1 | CN | CRBRH | ERS | GENL | GEN | ZE | SE | TD0 | 2 | CR |  |  |
| 17_CN11710 |  | STN-STG0-2- S6 SBP (13 nos with 1 Rig; 0.5/d/Rig) | 26d | 2023-03-23 | 2023-04-17 | 17_DS10590, 17_DS11440, 17_CN11730 | 104d | 0d | CR117_Cost Loading [592205]; SBP Team [240 h]; CR117 WEIGHTAGE [6091.76 h] | 592,205 |  |  |  | UDF_G3 | 1 | CN | CRBRH | ERS | GENL | GEN | ZB | SE | TD0 | 2 | CR |  |  |
| 17_CN11750 |  | STN-STG0-2- S8 SBP (13 nos with 1 Rig; 0.5/d/Rig) | 26d | 2023-04-18 | 2023-05-13 | 17_CN11710 | 104d | 0d | CR117_Cost Loading [592205]; SBP Team [240 h]; CR117 WEIGHTAGE [6091.76 h] | 592,205 |  |  |  | UDF_G3 | 1 | CN | CRBRH | ERS | GENL | GEN | ZA | SE | TD0 | 2 | CR |  |  |
| 17_CN11770 |  | STN-STG0-2- S7 SBP (44 nos with 1 Rig; 0.5/d/Rig) | 88d | 2023-04-18 | 2023-07-14 | 17_CN11710 | 104d | 0d | CR117_Cost Loading [2004387]; SBP Team [848 h]; CR117 WEIGHTAGE [21112.1 h] | 2,004,387 |  |  |  | UDF_G3 | 1 | CN | CRBRH | ERS | GENL | GEN | ZD | SE | TD0 | 2 | CR |  |  |
| 17_CN19840 |  | STN-STG0-2- S5 SBP (90 nos with 2 Rigs; 0.5/d/Rig) | 45d | 2023-04-18 | 2023-06-01 | 17_CN11850 | 309d | 0d | CR117_Cost Loading [4099882]; CR117 WEIGHTAGE [45.36 h]; SBP Team [360 h] | 4,099,882 |  |  |  | UDF_G3 | 1 | CN | CRBRH | ERS | GENL | GEN | ZE | SE | TD0 | 2 | CR |  |  |
| 17_CN19850 |  | STN-STG0-2 S3 SBP (57 nos with 2 Rig; 0.5/d/Rig) | 57d | 2023-04-22 | 2023-06-17 | 17_CN11830 | 95d | 0d | CR117_Cost Loading [2596592]; CR117 WEIGHTAGE [57.44 h]; SBP Team [456 h] | 2,596,592 |  |  |  | UDF_G3 | 1 | CN | CRBRH | ERS | GENL | GEN | ZB | SE | TD0 | 2 | CR |  |  |
| 17_CN11780 |  | STN-STG0-2- S9 SBP (35 nos with 1 Rig; 0.5/d/Rig) | 70d | 2023-05-14 | 2023-07-22 | 17_CN11750 | 104d | 0d | CR117_Cost Loading [1594399]; SBP Team [648 h]; CR117 WEIGHTAGE [16732.9 h] | 1,594,399 |  |  |  | UDF_G3 | 1 | CN | CRBRH | ERS | GENL | GEN | ZA | SE | TD0 | 2 | CR |  |  |
| 17_CN11810 |  | STN-STG0-2- S10 SBP (12 nos with 1 Rig; 0.5/d/Rig) | 24d | 2023-07-15 | 2023-08-07 | 17_CN11770 | 104d | 0d | CR117_Cost Loading [546651]; SBP Team [520 h]; CR117 WEIGHTAGE [12514.6 h] | 546,651 |  |  |  | UDF_G3 | 1 | CN | CRBRH | ERS | GENL | GEN | ZC2 | SE | TD0 | 2 | CR |  |  |
|  | 5 | **STATION-STG0-2-ERSS-Fissure Grouting Works** |  | 2023-03-23 | 2023-08-30 |  |  |  |  |  |  |  |  |  |  |  |  |  |  |  |  |  |  |  |  |  |  |
| 17_CN11740 |  | STN-STG0-2-Fissure Grouting S1 SBP (30 nos, 1.4 no/d) | 22d | 2023-03-23 | 2023-04-13 | 17_CN11730, 17_PC10060 | 137d | 0d | CR117_Cost Loading [165676]; Fissure Grouting Team [392 h]; CR117 WEIGHTAGE [4283.28 h] | 165,676 |  |  |  | UDF_G3 | 1 | CN | CRBRH | ERS | GENL | GEN | ZC1 |  | TD0 | 3 | CR |  |  |
| 17_CN11720 |  | STN-STG0-2-Fissure Grouting S6 SBP (13 nos, 1.4 no/d) | 10d | 2023-04-18 | 2023-04-27 | 17_CN11710 | 173d | 104d | CR117_Cost Loading [75307]; Fissure Grouting Team [168 h]; CR117 WEIGHTAGE [1813.44 h] | 75,307 |  |  |  | UDF_G3 | 1 | CN | CRBRH | ERS | GENL | GEN | ZB |  | TD0 | 3 | CR |  |  |
| 17_CN11760 |  | STN-STG0-2-Fissure Grouting S8 SBP (26 nos 1/4/d) | 19d | 2023-05-14 | 2023-06-01 | 17_CN11750 | 138d | 69d | CR117_Cost Loading [143084]; Fissure Grouting Team [240 h]; CR117 WEIGHTAGE [2339.28 h] | 143,084 |  |  |  | UDF_G3 | 1 | CN | CRBRH | ERS | GENL | GEN | ZA |  | TD0 | 3 | CR |  |  |
| 17_CN11860 |  | STN-STG0-2-Fissure Grouting S4 & S5 SBP (133 nos 1.4 no/d) | 90d | 2023-06-02 | 2023-08-30 | 17_CN11850, 17_CN19840 | 309d | 268d | CR117_Cost Loading [677766]; Fissure Grouting Team [1768 h]; CR117 WEIGHTAGE [19440.3 h] | 677,766 |  |  |  | UDF_G3 | 1 | CN | CRBRH | ERS | GENL | GEN | ZE |  | TD0 | 3 | CR |  |  |
| 17_CN11840 |  | STN-STG0-2-Fissure Grouting S2 & S3 SBP (102 nos 1.4 no/d) | 69d | 2023-06-18 | 2023-08-25 | 17_CN11830, 17_CN19850 | 95d | 26d | CR117_Cost Loading [519621]; Fissure Grouting Team [1488 h]; CR117 WEIGHTAGE [15831.8 h] | 519,621 |  |  |  | UDF_G3 | 1 | CN | CRBRH | ERS | GENL | GEN | ZB |  | TD0 | 3 | CR |  |  |
| 17_CN11790 |  | STN-STG0-2-Fissure Grouting S7 SBP (44 nos 1.4 no/d) | 32d | 2023-07-15 | 2023-08-15 | 17_CN11770 | 105d | 36d | CR117_Cost Loading [240984]; Fissure Grouting Team [640 h]; CR117 WEIGHTAGE [6772.08 h] | 240,984 |  |  |  | UDF_G3 | 1 | CN | CRBRH | ERS | GENL | GEN | ZD |  | TD0 | 3 | CR |  |  |
| 17_CN11800 |  | STN-STG0-2-Fissure Grouting S9 SBP (35 nos 1.4 no/d) | 25d | 2023-07-23 | 2023-08-16 | 17_CN11780 | 104d | 35d | CR117_Cost Loading [188268]; Fissure Grouting Team [480 h]; CR117 WEIGHTAGE [5186.56 h] | 188,268 |  |  |  | UDF_G3 | 1 | CN | CRBRH | ERS | GENL | GEN | ZA |  | TD0 | 3 | CR |  |  |
| 17_CN11820 |  | STN-STG0-2-Fissure Grouting S10 SBP 12 nos 1.4 no/d) | 9d | 2023-08-08 | 2023-08-16 | 17_CN11810 | 104d | 35d | CR117_Cost Loading [67777]; Fissure Grouting Team [384 h]; CR117 WEIGHTAGE [4016.4 h] | 67,777 |  |  |  | UDF_G3 | 1 | CN | CRBRH | ERS | GENL | GEN | ZC2 |  | TD0 | 3 | CR |  |  |
|  | 2 | **STATION-STG0-2-ERSS at utilities gap (North)** |  | 2023-05-19 | 2023-07-08 |  |  |  |  |  |  |  |  |  |  |  |  |  |  |  |  |  |  |  |  |  |  |
| 17_CN11870 |  | STN-STG0-2-Zone D - North - Ground Improvement (GIW) at utilities gap | 24d | 2023-05-19 | 2023-06-11 | 17_DS10590, 17_PC10300, 17_PC10050 | 143d | 0d | CR117_Cost Loading [277300]; GW (C&S) [192 h]; CR117 WEIGHTAGE [1363.28 h] | 277,300 |  |  |  | UDF_G3 | 1 | CN | CRBRH | ENA | GENL | GEN | ZD | GI | TD0 | 01 | CR | 1 | ZD |
| 17_CN11880 |  | STN-STG0-2-Zone D - North - 5nos. H Pile at utilities gap | 19d | 2023-06-12 | 2023-06-30 | 17_CN11870, 17_DS10590 | 143d | 0d | CR117_Cost Loading [125775]; Lifting Team [152 h]; Excavation Team [152 h]; CR117 WEIGHTAGE [2895.28 h] | 125,775 |  |  |  | UDF_G3 | 1 | CN | CRBRH | ENA | GENL | GEN | ZD | SE | TD0 | 03 | CR | 1 | ZD |
| 17_CN11890 |  | STN-STG0-2-Zone D - North - Capping Beam of 5nos. H Pile at utilities gap | 8d | 2023-07-01 | 2023-07-08 | 17_CN11880 | 143d | 74d | CR117_Cost Loading [52958]; RC Team [64 h]; CR117 WEIGHTAGE [428.48 h] | 52,958 |  |  |  | UDF_G3 | 1 | CN | CRBRH | ENA | GENL | GEN | ZD | RW | TD0 | 03 | CR | 1 | ZD |

| ID | WBS | Activity | Duration | Start | Finish | Predecessors | Total float | Free float | Resources | Cost | Check | SBP and KP | PHASE | AREA | SUB-PHASE | STAGE | SUB AREA | LOCATION | LOCATION DETAILS | MAJOR WORKS | SUB-LOCATION DETAILS | CR-117 - FOT | LINE | Text 1 | Text 3 | Text 2 | BOQ Item | Check 2 (Original Duration) | Utility Programme | Cr117 BSC Stn |
| --- | --- | --- | --- | --- | --- | --- | --- | --- | --- | --- | --- | --- | --- | --- | --- | --- | --- | --- | --- | --- | --- | --- | --- | --- | --- | --- | --- | --- | --- | --- |
|  | 3 | **STATION-STG0-2 DFE/King Posts** |  | 2023-08-12 | 2023-11-09 |  |  |  |  |  |  |  |  |  |  |  |  |  |  |  |  |  |  |  |  |  |  |  |  |  |
| 17_CN11900 |  | STN-STG0-2-Zone C1 - DFE/King Posts - (9/28 no.) | 23d | 2023-08-12 | 2023-09-03 | 17_CN15280, 17_DS11440 | 94d | 0d | CR117_Cost Loading [221306]; DFE/King Post Team [184 h]; CR117 WEIGHTAGE [3904.8 h] | 221,306 | UDF_G3 | 1 | CN | CRBRH | ERS | ZC1 | GENL | GEN | ZC1 | KP | TD0 | 1 | CR |  |  |  |  |  |  |  |
| 17_CN11930 |  | STN-STG0-2-Zone E - DFE/King Posts - (43/88 no) and BP at Entrance 7 (2no.) | 90d | 2023-08-12 | 2023-11-09 | 17_CN15280 | 119d | 0d | CR117_Cost Loading [1057351]; DFE/King Post Team [832 h]; CR117 WEIGHTAGE [17793.7 h] | 1,057,351 | UDF_G3 | 1 | CN | CRBRH | ERS | ZE | GENL | GEN | ZE | KP | TD0 | 1 | CR |  |  |  |  |  |  |  |
| 17_CN11940 |  | STN-STG0-2-Zone B - DFE/King Posts - (51/108 no.) | 90d | 2023-08-12 | 2023-11-09 | 17_CN15280 | 144d | 0d | CR117_Cost Loading [1254067]; DFE/King Post Team [872 h]; CR117 WEIGHTAGE [18651 h] | 1,254,067 | UDF_G3 | 1 | CN | CRBRH | ERS | ZB | GENL | GEN | ZB | KP | TD0 | 1 | CR |  |  |  |  |  |  |  |
| 17_CN11910 |  | STN-STG0-2-Zone D - DFE/King Posts - (8/32 no.) | 21d | 2023-09-04 | 2023-09-24 | 17_CN11900 | 94d | 0d | CR117_Cost Loading [196716]; DFE/King Post Team [168 h]; CR117 WEIGHTAGE [3561.84 h] | 196,716 | UDF_G3 | 1 | CN | CRBRH | ERS | ZD | GENL | GEN | ZD | KP | TD0 | 1 | CR |  |  |  |  |  |  |  |
| 17_CN11920 |  | STN-STG0-2-Zone C2 - DFE/King Posts - (7/26 no.) | 18d | 2023-09-25 | 2023-10-12 | 17_CN11910 | 94d | 24d | CR117_Cost Loading [172127]; DFE/King Post Team [144 h]; CR117 WEIGHTAGE [3047.44 h] | 172,127 | UDF_G3 | 1 | CN | CRBRH | ERS | ZC2 | GENL | GEN | ZC2 | KP | TD0 | 1 | CR |  |  |  |  |  |  |  |
|  | 2 | **STATION-STAGE 3A** |  | 2023-03-23 | 2024-06-04 |  |  |  |  |  |  |  |  |  |  |  |  |  |  |  |  |  |  |  |  |  |  |  |  |  |
|  | 8 | **STATION-STG3A-Preparation for Road Diversion Stage 3A at Sin Ming Ave newalignment** |  | 2023-03-23 | 2023-10-04 |  |  |  |  |  |  |  |  |  |  |  |  |  |  |  |  |  |  |  |  |  |  |  |  |  |
| 17_CN11950 |  | Station North for SMA diversion: Prepare ground for Stage 3A road alignment | 50d | 2023-03-23 | 2023-05-11 | 17_DS10950, 17_PC10210, 17_PC10220, 17_CN11730 | 69d | 0d | CR117_Cost Loading [507976]; GW (C&S) [400 h]; Excavation Team [400 h]; CR117 WEIGHTAGE [2882.4 h] | 507,976 | UDF_G3 |  | CN | CRBRH | ENA |  | GENL | GEN | GN | RD | TD3A | 07 | CR | 1 | 1 | 1 | A.07 |  |  |  |
| 17_CN11980 |  | Station North for SMA diversion: Construct BHR access Road to Stage 3A Diverted Road | 60d | 2023-04-14 | 2023-06-12 | 17_CN11740 | 137d | 58d | CR117_Cost Loading [609572]; GW (C&S) [480 h]; CR117 WEIGHTAGE [3466.64 h] | 609,572 | UDF_G3 |  | CN | CRBRH | ENA |  | GENL | GEN | GN | RD | TD3A | 07 | CR |  |  |  | A.07 |  |  |  |
| 17_CN11960 |  | Station North for SMA diversion: Construct Road (Base course) Diversion for Stage 3A | 90d | 2023-05-12 | 2023-08-09 | 17_CN11950 | 79d | 0d | CR117_Cost Loading [914358]; GW (C&S) [880 h]; CR117 WEIGHTAGE [6387.92 h] | 914,358 | UDF_G3 |  | CN | CRBRH | ENA |  | GENL | GEN | GN | RD | TD3A | 07 | CR |  |  |  | A.07 |  |  |  |
| 17_CN11970 |  | Station North for SMA diversion: Diversion Road Drains for Stage 3A | 90d | 2023-05-12 | 2023-08-09 | 17_CN11950, 17_DS10930, 17_DS10770 | 69d | 0d | CR117_Cost Loading [914358]; GW (C&S) [880 h]; CR117 WEIGHTAGE [6387.92 h] | 914,358 | UDF_G3 |  | CN | CRBRH | ENA |  | GENL | GEN | GN | RD | TD3A | 07 | CR | 1 | 1 | 1 | A.07 |  |  |  |
| 17_CN11990 |  | Station North for SMA diversion: Construct Blk 408CP access road to Stage 3A Diverted Road | 42d | 2023-08-10 | 2023-09-20 | 17_CN11720, 17_CN11760, 17_CN11970 | 69d | 0d | CR117_Cost Loading [426700]; GW (C&S) [336 h]; CR117 WEIGHTAGE [2414.96 h] | 426,700 | UDF_G3 |  | CN | CRBRH | ENA |  | GENL | GEN | GN | RD | TD3A | 07 | CR | 1 | 1 | 1 | A.07 |  |  |  |
| 17_CN12000 |  | Station North for SMA diversion: Diversion Road Wearing course, Street Furniture for Stage 3A | 32d | 2023-08-10 | 2023-09-10 | 17_CN11950, 17_CN11960, 17_CN11970, 17_CN11980 | 79d | 10d | CR117_Cost Loading [325105]; GW (C&S) [256 h]; CR117 WEIGHTAGE [1830.64 h] | 325,105 | UDF_G3 |  | CN | CRBRH | ENA |  | GENL | GEN | GN | RD | TD3A | 07 | CR | 1 | 1 | 1 | A.07 |  |  |  |
| 17_CN12010 |  | Station: Diversion Road - Preparation to open to Traffic for Stage 3A | 14d | 2023-09-21 | 2023-10-04 | 17_CN12000, 17_CN11980, 17_CN11990, 17_CN11820, 17_CN11840, 17_CN11800, 17_CN11790, 17_CN11890 | 69d | 32d | CR117_Cost Loading [142233]; GW (C&S) [112 h]; CR117 WEIGHTAGE [779.04 h] | 142,233 | UDF_G3 |  | CN | CRBRH | ENA |  | GENL | GEN | GN | RD | TD3A | 07 | CR | 1 | 1 | 1 | A.07 | UDF_G3 |  |  |
|  | 1 | **STATION-STG 3A-Site Clerance and Setup Works** |  | 2023-11-06 | 2023-11-19 |  |  |  |  |  |  |  |  |  |  |  |  |  |  |  |  |  |  |  |  |  |  |  |  |  |
| 17_CN12020 |  | STN-STG3A-Hoardings Installation, Utilities Detection for Working Area | 7d | 2023-11-06 | 2023-11-12 | 17_CN12010, 17_CN10030 | 50d | 0d | CR117_Cost Loading [164941]; Lifting Team [88 h]; GW (C&S) [88 h]; CR117 WEIGHTAGE [603.76 h] | 164,941 | UDF_G3 |  | CN | CRBRH | ENA |  | GENL | GEN | GN | SI | TD3A | 06 | CR |  | 1 | 1 | A.06 |  |  |  |
| 17_CN12030 |  | STN-STG3A-Site Clearance Leveling and Plant Setup for Working Area | 7d | 2023-11-13 | 2023-11-19 | 17_CN12020 | 50d | 0d | CR117_Cost Loading [92433]; Excavation Team [64 h]; GW (C&S) [64 h]; CR117 WEIGHTAGE [428.48 h] | 92,433 | UDF_G3 |  | CN | CRBRH | ENA |  | GENL | GEN | GN | SI | TD3A | 01 | CR |  | 1 | 1 |  |  |  |  |
|  | 3 | **STATION-STG3A-ERSS at utilities gap (South)** |  | 2023-11-20 | 2024-01-14 |  |  |  |  |  |  |  |  |  |  |  |  |  |  |  |  |  |  |  |  |  |  |  |  |  |
| 17_CN12240 |  | STN-STG3A-Zone D - South - Ground Improvement (GIW) at utilities gap | 21d | 2023-11-20 | 2023-12-10 | 17_DS10590, 17_PC10050, 17_CN11870, 17_CN12030, 17_CN10030 | 50d | 0d | CR117_Cost Loading [277300]; GW (C&S) [192 h]; CR117 WEIGHTAGE [1363.28 h] | 277,300 | UDF_G3 |  | CN | CRBRH | ENA | ZD | GENL | GEN | ZD | GI | TD3A | 01 | CR |  |  |  |  |  | 1 |  |
| 17_CN12250 |  | STN-STG3A-Zone D - South - 5nos. H Pile at utilities gap | 19d | 2023-12-11 | 2023-12-29 | 17_CN12240, 17_DS10590, 17_CN11880, 17_CN10030 | 50d | 0d | CR117_Cost Loading [125775]; Lifting Team [152 h]; Excavation Team [152 h]; CR117 WEIGHTAGE [2895.28 h] | 125,775 | UDF_G3 |  | CN | CRBRH | ENA | ZD | GENL | GEN | ZD | BO | TD3A | 03 | CR |  |  |  |  |  | 1 |  |
| 17_CN12260 |  | STN-STG3A-Zone D - South - Capping Beam of 5nos. H Pile at utilities gap | 16d | 2023-12-30 | 2024-01-14 | 17_CN12250 | 50d | 0d | CR117_Cost Loading [105916]; RC Team [128 h]; CR117 WEIGHTAGE [895.92 h] | 105,916 | UDF_G3 |  | CN | CRBRH | ENA | ZD | GENL | GEN | ZD | RW | TD3A | 03 | CR |  |  |  |  |  | 1 |  |
|  | 2 | **STATION-STG3A-ERSS-SBP or D Wall Works** |  | 2023-11-20 | 2024-05-05 |  |  |  |  |  |  |  |  |  |  |  |  |  |  |  |  |  |  |  |  |  |  |  |  |  |
| 17_CN12040 |  | STN-STG3A- S12 SBP (52 nos with 2 Rigs; 0.5/d/Rig) | 52d | 2023-11-20 | 2024-01-10 | 17_CN12030, 17_CN10030 | 52d | 0d | CR117_Cost Loading [2368821]; SBP Team [416 h]; CR117 WEIGHTAGE [21343.1 h] | 2,368,821 | UDF_G3 | 1 | CN | CRBRH | ERS |  | GENL | GEN | ZB | SE | TD3A | 2 | CR |  |  |  |  |  |  |  |
| 17_CN12110 |  | STN-STG3A- S11 SBP (93 nos with 3 Rigs; 0.5/d/Rig) | 62d | 2023-11-20 | 2024-01-20 | 17_CN12030, 17_CN10030 | 60d | 0d | CR117_Cost Loading [4236545]; SBP Team [840 h]; CR117 WEIGHTAGE [38200.5 h] | 4,236,545 | UDF_G3 | 1 | CN | CRBRH | ERS |  | GENL | GEN | ZB | SE | TD3A | 2 | CR |  |  |  |  |  |  |  |
| 17_CN12060 |  | STN-STG3A- S13 DW (62 m with 1 Rig; 0.8/d/Rig) | 77d | 2023-12-14 | 2024-02-28 | 17_CN12030, 17_CN15350 | 41d | 0d | CR117_Cost Loading [2604215]; D Wall Team [624 h]; CR117 WEIGHTAGE [61266.4 h] | 2,604,215 | UDF_G3 | 1 | CN | CRBRH | ERS |  | GENL | GEN | ZE | DW | TD3A | 1 | CR |  | 1 | 1 |  |  |  | 1 |
| 17_CN12070 |  | STN-STG3A- S15 SBP (14 nos with 1 Rig; 0.5/d/Rig) | 28d | 2024-01-11 | 2024-02-07 | 17_CN12030, 17_CN10030, 17_CN12040 | 87d | 0d | CR117_Cost Loading [637759]; SBP Team [256 h]; CR117 WEIGHTAGE [6573.44 h] | 637,759 | UDF_G3 | 1 | CN | CRBRH | ERS |  | GENL | GEN | ZA | SE | TD3A | 2 | CR |  |  |  |  |  |  |  |
| 17_CN12090 |  | STN-STG3A- S14 SBP (15 nos with 1 Rig; 0.5/d/Rig) | 30d | 2024-01-11 | 2024-02-09 | 17_CN12030, 17_CN10030, 17_CN12040 | 52d | 0d | CR117_Cost Loading [683314]; SBP Team [280 h]; CR117 WEIGHTAGE [7113.52 h] | 683,314 | UDF_G3 | 1 | CN | CRBRH | ERS |  | GENL | GEN | ZA | SE | TD3A | 2 | CR |  |  |  |  |  |  |  |
| 17_CN12180 |  | STN-STG3A- S16 SBP (17 nos with 1 Rig; 0.5/d/Rig) | 34d | 2024-01-21 | 2024-02-23 | 17_CN12110 | 141d | 0d | CR117_Cost Loading [774422]; SBP Team [312 h]; CR117 WEIGHTAGE [8076.88 h] | 774,422 | UDF_G3 | 1 | CN | CRBRH | ERS |  | GENL | GEN | ZC1 | SE | TD3A | 2 | CR |  |  |  |  |  |  |  |
| 17_CN12140 |  | STN-STG3A- S18 SBP (11 nos with 1 Rig; 0.5/d/Rig) | 22d | 2024-02-08 | 2024-02-29 | 17_CN12030, 17_CN10030, 17_CN12070 | 106d | 0d | CR117_Cost Loading [501097]; SBP Team [200 h]; CR117 WEIGHTAGE [5069.92 h] | 501,097 | UDF_G3 | 1 | CN | CRBRH | ERS |  | GENL | GEN | ZA | SE | TD3A | 2 | CR |  |  |  |  |  |  |  |
| 17_CN12220 |  | STN-STG3A- S20 SBP (44 nos with 1 Rig; 0.5/d/Rig) | 86d | 2024-02-10 | 2024-05-05 | 17_CN12030, 17_CN10030, 17_CN12090 | 52d | 0d | CR117_Cost Loading [2004387]; SBP Team [800 h]; CR117 WEIGHTAGE [20396.7 h] | 2,004,387 | UDF_G3 | 1 | CN | CRBRH | ERS |  | GENL | GEN | ZD | SE | TD3A | 2 | CR |  |  |  |  |  |  |  |
| 17_CN12460 |  | STN-STG3A- S19 SBP (Part in B Zone) (14 nos with 1 Rig; 0.5/d/Rig) | 28d | 2024-02-10 | 2024-03-08 | 17_CN12090 | 78d | 0d | CR117_Cost Loading [637759]; SBP Team [208 h]; CR117 WEIGHTAGE [5858.08 h] | 637,759 | UDF_G3 | 1 | CN | CRBRH | ERS |  | GENL | GEN | ZA | SE | TD3A | 2 | CR |  |  |  |  |  |  |  |
| 17_CN12100 |  | STN-STG3A- S17 DW (54m with 1 Rig; 0.8/d/Rig) | 67d | 2024-02-29 | 2024-05-05 | 17_CN12030, 17_CN10030, 17_CN12060 | 41d | 0d | CR117_Cost Loading [2268187]; D Wall Team [184 h]; CR117 WEIGHTAGE [16108.6 h] | 2,268,187 | UDF_G3 | 1 | CN | CRBRH | ERS |  | GENL | GEN | ZC2 | DW | TD3A | 1 | CR |  | 1 | 1 |  |  |  | 1 |
| 17_CN12190 |  | STN-STG3A- S21SBP (15 nos with 1 Rig; 0.5/d/Rig) | 30d | 2024-03-01 | 2024-03-30 | 17_CN12030, 17_CN10030, 17_CN12140 | 106d | 0d | CR117_Cost Loading [683314]; SBP Team [240 h]; CR117 WEIGHTAGE [6821.44 h] | 683,314 | UDF_G3 | 1 | CN | CRBRH | ERS |  | GENL | GEN | ZA | SE | TD3A | 2 | CR |  |  |  |  |  |  |  |

| ID | WBS | Activity | Duration | Start | Finish | Predecessors | Total float | Free float | Resources | Cost | Check | SBP and KP | PHASE | AREA | SUB-PHASE | SUB AREA | LOCATION | LOCATION DETAILS | SUB-LOCATION DETAILS | CR-117 - FOT | LINE | Cr117 BSC Stn | MAJOR WORKS | BOQ Item | Check 2 (Original Duration) |
| --- | --- | --- | --- | --- | --- | --- | --- | --- | --- | --- | --- | --- | --- | --- | --- | --- | --- | --- | --- | --- | --- | --- | --- | --- | --- |
|  | 7 | **STATION-STG3A-ERSS-Fissure Grouting Works** |  | 2024-01-11 | 2024-06-04 |  |  |  |  |  |  |  |  |  |  |  |  |  |  |  |  |  |  |  |  |
| 17_CN12050 |  | STN-STG3A-Fissure Grouting S12 SBP (52 nos, 1.4 no/d) | 44d | 2024-01-11 | 2024-02-23 | 17_CN12040 | 92d | 32d | CR117_Cost Loading [2368821]; Fissure Grouting Team [352 h]; CR117 WEIGHTAGE [5085.6 h] | 2,368,821 | UDF_G3 | 1 | CN | CRBRH | ERS | GENL | GEN | ZB | TD3A | 2 | CR |  |  |  |  |
| 17_CN12160 |  | STN-STG3A-Fissure Grouting S11 SBP (93 nos; 1.4 no/d) | 66d | 2024-01-21 | 2024-03-26 | 17_CN12110 | 60d | 0d | CR117_Cost Loading [497029]; Fissure Grouting Team [648 h]; CR117 WEIGHTAGE [9280.08 h] | 497,029 | UDF_G3 | 1 | CN | CRBRH | ERS | GENL | GEN | ZB | TD3A | 3 | CR |  |  |  |  |
| 17_CN12120 |  | STN-STG3A-Fissure Grouting S15 SBP (14 nos; 1.4 no/d) | 21d | 2024-02-08 | 2024-02-28 | 17_CN12070 | 87d | 27d | CR117_Cost Loading [158146]; Fissure Grouting Team [168 h]; CR117 WEIGHTAGE [1865.52 h] | 158,146 | UDF_G3 | 1 | CN | CRBRH | ERS | GENL | GEN | ZA | TD3A | 3 | CR |  |  |  |  |
| 17_CN12130 |  | STN-STG3A-Fissure Grouting S14 SBP (15 nos; 1.4 no/d) | 24d | 2024-02-10 | 2024-03-04 | 17_CN12090 | 82d | 22d | CR117_Cost Loading [180738]; Fissure Grouting Team [192 h]; CR117 WEIGHTAGE [2092.96 h] | 180,738 | UDF_G3 | 1 | CN | CRBRH | ERS | GENL | GEN | ZA | TD3A | 3 | CR |  |  |  |  |
| 17_CN12200 |  | STN-STG3A-Fissure Grouting S16 SBP (17 nos; 1.4 no/d) | 13d | 2024-02-24 | 2024-03-07 | 17_CN12180 | 141d | 61d | CR117_Cost Loading [97900]; Fissure Grouting Team [128 h]; CR117 WEIGHTAGE [1729.76 h] | 97,900 | UDF_G3 | 1 | CN | CRBRH | ERS | GENL | GEN | ZC1 | TD3A | 3 | CR |  |  |  |  |
| 17_CN12080 |  | STN-STG3A-Fissure Grouting S13 DW (72m; 1.4m/d) | 51d | 2024-02-29 | 2024-04-19 | 17_CN12060 | 76d | 0d | CR117_Cost Loading [489498]; Fissure Grouting Team [448 h]; CR117 WEIGHTAGE [8027.92 h] | 489,498 | UDF_G3 | 1 | CN | CRBRH | ERS | GENL | GEN | ZE | TD3A | 3 | CR |  |  |  |  |
| 17_CN12170 |  | STN-STG3A-Fissure Grouting S18 SBP (11 nos; 1.4 no/d) | 8d | 2024-03-01 | 2024-03-08 | 17_CN12140 | 240d | 190d | CR117_Cost Loading [60246]; Fissure Grouting Team [128 h]; CR117 WEIGHTAGE [1417.04 h] | 60,246 | UDF_G3 | 1 | CN | CRBRH | ERS | GENL | GEN | ZA | TD3A | 3 | CR |  |  |  |  |
| 17_CN12470 |  | STN-STG3A-Fissure Grouting S19 (Part in B Zone) SBP (14 nos; 1.4 no/d) | 10d | 2024-03-09 | 2024-03-18 | 17_CN12460 | 92d | 32d | CR117_Cost Loading [75307]; Fissure Grouting Team [128 h]; CR117 WEIGHTAGE [1521.28 h] | 75,307 | UDF_G3 | 1 | CN | CRBRH | ERS | GENL | GEN | ZA | TD3A | 3 | CR |  |  |  |  |
| 17_CN12210 |  | STN-STG3A-Fissure Grouting S21 SBP (15 nos; 1.4 no/d) | 11d | 2024-03-31 | 2024-04-10 | 17_CN12190 | 207d | 110d | CR117_Cost Loading [82838]; Fissure Grouting Team [192 h]; CR117 WEIGHTAGE [2092.96 h] | 82,838 | UDF_G3 | 1 | CN | CRBRH | ERS | GENL | GEN | ZA | TD3A | 3 | CR |  |  |  |  |
| 17_CN12150 |  | STN-STG3A-Fissure Grouting S17 DW (54m; 1.4m/d / 2 teams) | 19d | 2024-05-06 | 2024-05-24 | 17_CN12100 | 41d | 0d | CR117_Cost Loading [120492]; Fissure Grouting Team [128 h]; CR117 WEIGHTAGE [2146.72 h] | 120,492 | UDF_G3 | 1 | CN | CRBRH | ERS | GENL | GEN | ZC2 | TD3A | 3 | CR | 1 |  |  |  |
| 17_CN12230 |  | STN-STG3A-Fissure Grouting S20SBP (44 nos; 1.4 no/d) | 30d | 2024-05-06 | 2024-06-04 | 17_CN12220 | 52d | 0d | CR117_Cost Loading [225922]; Fissure Grouting Team [568 h]; CR117 WEIGHTAGE [6194.08 h] | 225,922 | UDF_G3 | 1 | CN | CRBRH | ERS | GENL | GEN | ZD | TD3A | 3 | CR |  |  |  |  |
|  | 4 | **STATION-STG3A-DFE/King Posts** |  | 2023-11-06 | 2024-04-01 |  |  |  |  |  |  |  |  |  |  |  |  |  |  |  |  |  |  |  |  |
| 17_CN12270 |  | STN-STG3A-Zone B - DFE/King Posts - (36/105 no.) for traffic deck | 84d | 2023-11-06 | 2024-01-28 | 17_CN10030, 17_CN11920 | 70d | 0d | CR117_Cost Loading [885224]; DFE/King Post Team [672 h]; CR117 WEIGHTAGE [14364.2 h] | 885,224 | UDF_G3 | 1 | CN | CRBRH | ERS | GENL | GEN | ZB | TD3A | 1 | CR |  | KP |  |  |
| 17_CN12280 |  | STN-STG3A-Zone C1 - DFE/King Posts - (19/28 no.) for traffic deck | 44d | 2023-11-10 | 2023-12-23 | 17_CN10030, 17_CN11940 | 144d | 0d | CR117_Cost Loading [467201]; DFE/King Post Team [352 h]; CR117 WEIGHTAGE [7505.6 h] | 467,201 | UDF_G3 | 1 | CN | CRBRH | ERS | GENL | GEN | ZC1 | TD3A | 1 | CR |  | KP |  |  |
| 17_CN12310 |  | STN-STG3A-Zone E - DFE/King Posts - (45/88 no.) remainder | 90d | 2023-11-10 | 2024-02-07 | 17_CN10030, 17_CN11930 | 119d | 0d | CR117_Cost Loading [1106530]; DFE/King Post Team [840 h]; CR117 WEIGHTAGE [17965.1 h] | 1,106,530 | UDF_G3 | 1 | CN | CRBRH | ERS | GENL | GEN | ZE | TD3A | 1 | CR |  | KP |  |  |
| 17_CN12290 |  | STN-STG3A-Zone D - DFE/King Posts - (6/32 no.) for traffic deck | 14d | 2023-12-24 | 2024-01-06 | 17_CN10030, 17_CN12280 | 144d | 0d | CR117_Cost Loading [147537]; DFE/King Post Team [112 h]; CR117 WEIGHTAGE [2361.6 h] | 147,537 | UDF_G3 | 1 | CN | CRBRH | ERS | GENL | GEN | ZD | TD3A | 1 | CR |  | KP |  |  |
| 17_CN12320 |  | STN-STG3A-Zone D - DFE/King Posts - (18/32 no.) remainder | 42d | 2024-01-07 | 2024-02-17 | 17_CN10030, 17_CN12290 | 144d | 0d | CR117_Cost Loading [442612]; DFE/King Post Team [336 h]; CR117 WEIGHTAGE [7162.64 h] | 442,612 | UDF_G3 | 1 | CN | CRBRH | ERS | GENL | GEN | ZD | TD3A | 1 | CR |  | KP |  |  |
| 17_CN12300 |  | STN-STG3A-Zone B - DFE/King Posts - (21/105 no.) remainder | 48d | 2024-01-29 | 2024-03-16 | 17_CN10030, 17_CN12270 | 70d | 10d | CR117_Cost Loading [516381]; DFE/King Post Team [384 h]; CR117 WEIGHTAGE [8191.44 h] | 516,381 | UDF_G3 | 1 | CN | CRBRH | ERS | GENL | GEN | ZB | TD3A | 1 | CR |  | KP |  |  |
| 17_CN12330 |  | STN-STG3A-Zone C2 - DFE/King Posts - (19/26 no.) remainder | 44d | 2024-02-18 | 2024-04-01 | 17_CN10030, 17_CN12320 | 144d | 0d | CR117_Cost Loading [467201]; DFE/King Post Team [352 h]; CR117 WEIGHTAGE [7505.6 h] | 467,201 | UDF_G3 | 1 | CN | CRBRH | ERS | GENL | GEN | ZC2 | TD3A | 1 | CR |  | KP |  |  |
|  | 3 | **STATION-STAGE 3B** |  | 2024-01-15 | 2024-05-07 |  |  |  |  |  |  |  |  |  |  |  |  |  |  |  |  |  |  |  |  |
|  | 7 | **STATION-STG3B-Road Diversion for Stage 3B at BHR diversion** |  | 2024-01-15 | 2024-04-01 |  |  |  |  |  |  |  |  |  |  |  |  |  |  |  |  |  |  |  |  |
| 17_CN12340 |  | Station BRH Diversion: Construct Road (Base course) Diversion for Stage 3B | 32d | 2024-01-15 | 2024-02-15 | 17_CN12260, 17_CN11890 | 50d | 0d | CR117_Cost Loading [325105]; GW (C&S) [256 h]; CR117 WEIGHTAGE [5238.16 h] | 325,105 | UDF_G3 |  | CN | CRBRH | ENA | GENL | GEN | GN | TD3B | 07 | CR |  | RD | A.07 |  |
| 17_CN12350 |  | Station BRH Diversion: Diversion Road Drains for Stage 3B | 21d | 2024-02-16 | 2024-03-07 | 17_CN12340 | 50d | 0d | CR117_Cost Loading [213350]; GW (C&S) [256 h]; CR117 WEIGHTAGE [5238.16 h] | 213,350 | UDF_G3 |  | CN | CRBRH | ENA | GENL | GEN | GN | TD3B | 07 | CR |  | RD | A.07 |  |
| 17_CN12360 |  | Station BRH Diversion: Diversion Road Wearing course, Street Furniture for Stage 3B | 11d | 2024-03-08 | 2024-03-18 | 17_CN12350 | 50d | 0d | CR117_Cost Loading [111755]; GW (C&S) [88 h]; CR117 WEIGHTAGE [1775.12 h] | 111,755 | UDF_G3 |  | CN | CRBRH | ENA | GENL | GEN | GN | TD3B | 07 | CR |  | RD | A.07 |  |
| 17_CN12370 |  | Station BRH Diversion: Diversion Road - Preparation to open to Traffic for Stage 3B | 14d | 2024-03-19 | 2024-04-01 | 17_CN12360 | 50d | 0d | CR117_Cost Loading [142233]; GW (C&S) [112 h]; CR117 WEIGHTAGE [2269.76 h] | 142,233 | UDF_G3 |  | CN | CRBRH | ENA | GENL | GEN | GN | TD3B | 07 | CR |  | RD | A.07 | UDF_G3 |

| ID | WBS | Activity | Duration | Start | Finish | Predecessors | Total float | Free float | Resources | Cost | Check | PHASE | AREA | SUB-PHASE | SUB AREA | LOCATION | LOCATION DETAILS | MAJOR WORKS | SUB-LOCATION DETAILS | CR-117 - FOT | LINE | BOQ Item | Check 2 (Original Duration) |
| --- | --- | --- | --- | --- | --- | --- | --- | --- | --- | --- | --- | --- | --- | --- | --- | --- | --- | --- | --- | --- | --- | --- | --- |
|  | 1 | **STATION-STG3B-ERSS-SBP Works** |  | 2024-04-02 | 2024-04-27 |  |  |  |  |  |  |  |  |  |  |  |  |  |  |  |  |  |  |
| 17_CN12390 |  | STN-STG3B- S22 SBP (13 nos with 1 Rig; 0.5/d/Rig) | 26d | 2024-04-02 | 2024-04-27 | 17_CN12110, 17_CN12370, 17_CN10060 | 50d | 0d | CR117_Cost Loading [592205]; SBP Team [240 h]; CR117 WEIGHTAGE [6091.76 h] | 592,205 | UDF_G3 | CN | CRBRH | ERS | GENL | GEN | ZC1 | SE | TD3B | 2 | CR |  |  |
|  | 4 | **STATION-STG3B-ERSS-Fissure Grouting Works** |  | 2024-04-28 | 2024-05-07 |  |  |  |  |  |  |  |  |  |  |  |  |  |  |  |  |  |  |
| 17_CN12400 |  | STN-STG3B-Fissure Grouting S22 SBP (13 nos; 1.4 no/d) | 10d | 2024-04-28 | 2024-05-07 | 17_CN12390 | 50d | 0d | CR117_Cost Loading [75307]; Fissure Grouting Team [168 h]; CR117 WEIGHTAGE [1813.44 h] | 75,307 | UDF_G3 | CN | CRBRH | ERS | GENL | GEN | ZC1 |  | TD3B | 3 | CR |  |  |
|  | 5 | **STATION-STG3B-Traffic Decking Construction** |  | 2024-03-27 | 2024-04-25 |  |  |  |  |  |  |  |  |  |  |  |  |  |  |  |  |  |  |
| 17_CN12380 |  | Excavation and Construction of Traffic Decking at Stn for Blk 408CP access rd diversion for Stage 4 | 30d | 2024-03-27 | 2024-04-25 | 17_CN12160, 17_CN12280, 17_CN12270, 17_CN12290 | 86d | 36d | CR117_Cost Loading [372547]; Excavation Team [256 h]; GW (C&S) [256 h]; Lifting Team [256 h]; CR117 WEIGHTAGE [1830.64 h] | 372,547 | UDF_G3 | CN | CRBRH | RCW | GENL | GEN | GN | DK | TD3B | 13 | CR |  |  |
|  | 4 | **STATION-STAGE 4** |  | 2024-05-08 | 2024-09-14 |  |  |  |  |  |  |  |  |  |  |  |  |  |  |  |  |  |  |
|  | 7 | **STATION-STG4-Traffic Decking Construction for Stg 4** |  | 2024-05-08 | 2024-05-31 |  |  |  |  |  |  |  |  |  |  |  |  |  |  |  |  |  |  |
| 17_CN12410 |  | Excavation and Construction of Traffic Decking at Stn for BRH and Blk 408CP access rd diversion for Stage 4 | 24d | 2024-05-08 | 2024-05-31 | 17_CN12400, 17_CN11740 | 50d | 0d | CR117_Cost Loading [279410]; Lifting Team [192 h]; Excavation Team [192 h]; GW (C&S) [192 h]; CR117 WEIGHTAGE [1363.28 h] | 279,410 | UDF_G3 | CN | CRBRH | RCW | GENL | GEN | GN | DK | TD4 | 13 | CR |  |  |
|  | 8 | **STATION-STG4-Road Diversion for Stage 4 at BRH and Blk 408CP access rd diversion** |  | 2024-06-01 | 2024-07-27 |  |  |  |  |  |  |  |  |  |  |  |  |  |  |  |  |  |  |
| 17_CN12420 |  | Station BRH and Blk 408CP access rd Diversion: Construct Road (Base course) Diversion for Stage 4 | 16d | 2024-06-01 | 2024-06-16 | 17_CN12380, 17_CN12410 | 50d | 0d | CR117_Cost Loading [186274]; GW (C&S) [128 h]; CR117 WEIGHTAGE [2599.6 h] | 186,274 | UDF_G3 | CN | CRBRH | ENA | GENL | GEN | GN | RD | TD4 | 13 | CR | A.07 |  |
| 17_CN12430 |  | Station BRH and Blk 408CP access rd Diversion: Diversion Road Drains for Stage 4 | 16d | 2024-06-17 | 2024-07-02 | 17_CN12420 | 50d | 0d | CR117_Cost Loading [186274]; Lifting Team [128 h]; CR117 WEIGHTAGE [2599.6 h] | 186,274 | UDF_G3 | CN | CRBRH | ENA | GENL | GEN | GN | RD | TD4 | 13 | CR | A.07 |  |
| 17_CN12440 |  | Station BRH and Blk 408CP access rd Diversion: Diversion Road Wearing course, Street Furniture for Stage 4 | 11d | 2024-07-03 | 2024-07-13 | 17_CN12430 | 50d | 0d | CR117_Cost Loading [128063]; GW (C&S) [88 h]; CR117 WEIGHTAGE [1775.12 h] | 128,063 | UDF_G3 | CN | CRBRH | ENA | GENL | GEN | GN | RD | TD4 | 13 | CR | A.07 |  |
| 17_CN12450 |  | Station BRH and Blk 408CP access rd Diversion: Diversion Road - Preparation to open to Traffic for Stage 4 | 14d | 2024-07-14 | 2024-07-27 | 17_CN12440 | 50d | 0d | CR117_Cost Loading [162989]; GW (C&S) [112 h]; CR117 WEIGHTAGE [2269.76 h] | 162,989 | UDF_G3 | CN | CRBRH | ENA | GENL | GEN | GN | RD | TD4 | 13 | CR | A.07 | UDF_G3 |
|  | 1 | **STATION-STG4-ERSS- SBP Works (diverted Blk 408CP access rd)** |  | 2024-07-28 | 2024-08-22 |  |  |  |  |  |  |  |  |  |  |  |  |  |  |  |  |  |  |
| 17_CN12480 |  | STN-STG4- S23 SBP (13 no with 1 Rig; 0.5/d/Rig) | 26d | 2024-07-28 | 2024-08-22 | 17_CN10090 | 63d | 0d | CR117_Cost Loading [592205]; SBP Team [224 h]; CR117 WEIGHTAGE [5974.88 h] | 592,205 | UDF_G3 | CN | CRBRH | ERS | GENL | GEN | ZA | SE | TD4 | 2 | CR |  |  |
|  | 4 | **STATION-STG4-ERSS-Fissure Grouting Works (diverted Blk 408CP access rd)** |  | 2024-08-23 | 2024-09-01 |  |  |  |  |  |  |  |  |  |  |  |  |  |  |  |  |  |  |
| 17_CN12490 |  | STN-STG4-Fissure Grouting S23 SBP (13 nos; 1.4 no/d) | 10d | 2024-08-23 | 2024-09-01 | 17_CN12480 | 63d | 13d | CR117_Cost Loading [75307]; Fissure Grouting Team [128 h]; CR117 WEIGHTAGE [1521.28 h] | 75,307 | UDF_G3 | CN | CRBRH | ERS | GENL | GEN | ZA |  | TD4 | 3 | CR |  |  |
|  | 2 | **STATION-STG4-DFE/King Posts** |  | 2024-07-28 | 2024-09-14 |  |  |  |  |  |  |  |  |  |  |  |  |  |  |  |  |  |  |
| 17_CN12500 |  | STN-STG4-Zone A - DFE/King Posts - (21/21no.) | 49d | 2024-07-28 | 2024-09-14 | 17_CN10090, 17_CN12410, 17_CN12330, 17_CN14680 | 50d | 0d | CR117_Cost Loading [516381]; DFE/King Post Team [392 h]; CR117 WEIGHTAGE [2823.92 h] | 516,381 | UDF_G3 | CN | CRBRH | ERS | GENL | GEN | ZA | DK | TD4 | 1 | CR |  |  |
|  | 5 | **STATION-STAGE 5 & 6** |  | 2026-04-12 | 2026-10-22 |  |  |  |  |  |  |  |  |  |  |  |  |  |  |  |  |  |  |
|  | 7 | **STATION-STG5-Road Diversion for Stage 5 at Blk 408CP access rd diversion** |  | 2026-04-12 | 2026-06-23 |  |  |  |  |  |  |  |  |  |  |  |  |  |  |  |  |  |  |
| 17_CN12510 |  | Station BRH and Blk 408CP access rd Diversion: Prepare ground for Stage 5 road alignment | 16d | 2026-04-12 | 2026-04-27 | 17_CN13980, 17_CN13850, 17_CN13640, 17_CN13530 | 50d | 0d | CR117_Cost Loading [186274]; GW (C&S) [128 h]; CR117 WEIGHTAGE [2599.6 h] | 186,274 | UDF_G3 | CN | CRBRH | ENA | GENL | GEN | GN | RD | TD5 | 13 | CR | A.07 |  |
| 17_CN12520 |  | Station BRH and Blk 408CP access rd Diversion: Construct Road (Base course) Diversion for Stage 5 | 32d | 2026-04-28 | 2026-05-29 | 17_CN12510 | 50d | 0d | CR117_Cost Loading [372547]; GW (C&S) [256 h]; CR117 WEIGHTAGE [5238.16 h] | 372,547 | UDF_G3 | CN | CRBRH | ENA | GENL | GEN | GN | RD | TD5 | 13 | CR | A.07 |  |
| 17_CN12530 |  | Station BRH and Blk 408CP access rd Diversion: Diversion Road Drains for Stage 5 | 32d | 2026-04-28 | 2026-05-29 | 17_CN12510 | 50d | 0d | CR117_Cost Loading [372547]; GW (C&S) [256 h]; CR117 WEIGHTAGE [5238.16 h] | 372,547 | UDF_G3 | CN | CRBRH | ENA | GENL | GEN | GN | RD | TD5 | 13 | CR | A.07 |  |
| 17_CN12540 |  | Station BRH and Blk 408CP access rd Diversion: Diversion Road Wearing course, Street Furniture for Stage 5 | 11d | 2026-05-30 | 2026-06-09 | 17_CN12520, 17_CN12530 | 50d | 0d | CR117_Cost Loading [128063]; GW (C&S) [88 h]; CR117 WEIGHTAGE [1775.12 h] | 128,063 | UDF_G3 | CN | CRBRH | ENA | GENL | GEN | GN | RD | TD5 | 13 | CR | A.07 |  |
| 17_CN12550 |  | Station BRH and Blk 408CP access rd Diversion: Preparation to open to Traffic for Stage 5 | 14d | 2026-06-10 | 2026-06-23 | 17_CN12540 | 50d | 0d | CR117_Cost Loading [162989]; GW (C&S) [112 h]; CR117 WEIGHTAGE [2269.76 h] | 162,989 | UDF_G3 | CN | CRBRH | ENA | GENL | GEN | GN | RD | TD5 | 13 | CR |  | UDF_G3 |

| ID | WBS | Activity | Duration | Start | Finish | Predecessors | Total float | Free float | Resources | Cost | BOQ Item | Check | PHASE | AREA | SUB-PHASE | SUB AREA | LOCATION | LOCATION DETAILS | MAJOR WORKS | SUB-LOCATION DETAILS | CR-117 - FOT | LINE | Comments | Check 2 (Original Duration) | [UDF] Chainage Start | [UDF] Chainage Finish | Cr117 BSC Stn | STAGE |
| --- | --- | --- | --- | --- | --- | --- | --- | --- | --- | --- | --- | --- | --- | --- | --- | --- | --- | --- | --- | --- | --- | --- | --- | --- | --- | --- | --- | --- |
|  | 1 | **STATION-STG6-Road Diversion for Stage 6 - Final realignment of SMA at Station Area** |  | 2026-06-24 | 2026-10-22 |  |  |  |  |  |  |  |  |  |  |  |  |  |  |  |  |  |  |  |  |  |  |  |
| 17_CN12560 |  | Station SMA Road Diversion: Removal of Traffic & Construction Deck at Station and prepare SMA to original alignment | 28d | 2026-06-24 | 2026-07-21 | 17_CN12550, 17_CN10110 | 50d | 9d | CR117_Cost Loading [325979]; GW (C&S) [224 h]; CR117 WEIGHTAGE [1596.96 h] | 325,979 | A.07 | UDF_G3 | CN | CRBRH | ENA | GENL | GEN | GN | DK | TD6 | 13 | CR |  |  |  |  |  |  |
| 17_CN12570 |  | Station SMA Road Diversion: Reinstate SMA and Drains to original alignment (12 Weeks) | 84d | 2026-07-31 | 2026-10-22 | 17_CN12560, 17_CN13270, 17_CN13370, 17_CN13530, 17_CN13640, 17_CN13850, 17_CN13980 | 41d | 0d | CR117_Cost Loading [977936]; GW (C&S) [672 h]; CR117 WEIGHTAGE [4868.88 h] | 977,936 | A.07 | UDF_G3 | CN | CRBRH | ENA | GENL | GEN | GN | RD | TD6 | 13 | CR |  |  |  |  |  |  |
|  | 6 | **STATION-EXCAVATION AND STRUCTURAL WORKS** |  | 2024-03-27 | 2027-04-23 |  |  |  |  |  |  |  |  |  |  |  |  |  |  |  |  |  |  |  |  |  |  |  |
|  | 1 | **STATION-EXCAVATION & STRUTTING WORKS** |  | 2024-03-27 | 2025-07-10 |  |  |  |  |  |  |  |  |  |  |  |  |  |  |  |  |  |  |  |  |  |  |  |
|  | 7 | **STN-Zone E-Excavation Works** |  | 2024-05-25 | 2025-04-07 |  |  |  |  |  |  |  |  |  |  |  |  |  |  |  |  |  |  |  |  |  |  |  |
| 17_CN19220 |  | STN-Zone E - Excavate to 1m below S1 (Aprox 6550m3, 250m3/day, 2 team) | 13d | 2024-05-25 | 2024-06-06 | 17_CN10450, 17_CN11860, 17_CN11930, 17_CN12080, 17_CN12150, 17_CN12310, 17_PC10280 | 41d | 0d | CR117_Cost Loading [207934]; Excavation Team [104 h]; CR117 WEIGHTAGE [1897.2 h] | 207,934 |  | UDF_G3 | CN | CRBRH | EXC | GENL | GEN | ZE | EC | GEN | 1 | CR | To Split Excav and Strut/deck | UDF_G3 | 50080 | 50117 | 1 | ZE |
| 17_CN19230 |  | STN-Zone E - Excavate to 1m below S2 (Aprox 23,321m3, 300m3/day, 2 team) | 38d | 2024-06-28 | 2024-08-04 | 17_CN12580 | 41d | 0d | CR117_Cost Loading [740339]; Excavation Team [304 h]; CR117 WEIGHTAGE [5742.8 h] | 740,339 |  | UDF_G3 | CN | CRBRH | EXC | GENL | GEN | ZE | EC | GEN | 1 | CR | To Split Excav and Strut/deck | UDF_G3 | 50080 | 50117 | 1 | ZE |
| 17_CN19240 |  | STN-Zone E - Excavate to 1m below S3 (Aprox 24,810m3, 300m3/day, 2 team) | 41d | 2024-09-04 | 2024-10-14 | 17_CN19230, 17_CN12590 | 41d | 0d | CR117_Cost Loading [787608]; Excavation Team [328 h]; CR117 WEIGHTAGE [6204.32 h] | 787,608 |  | UDF_G3 | CN | CRBRH | EXC | GENL | GEN | ZE | EC | GEN | 1 | CR | To Split Excav and Strut/deck | UDF_G3 | 50080 | 50117 | 1 | ZE |
| 17_CN19250 |  | STN-Zone E - Excavate to 1m below S4 (Aprox 24,810m3, 300m3/day, 2 team) | 41d | 2024-11-14 | 2024-12-24 | 17_CN12600 | 41d | 0d | CR117_Cost Loading [787608]; Excavation Team [328 h]; CR117 WEIGHTAGE [4666.08 h] | 787,608 |  | UDF_G3 | CN | CRBRH | EXC | GENL | GEN | ZE | EC | GEN | 1 | CR | To Split Excav and Strut/deck | UDF_G3 | 50080 | 50117 | 1 | ZE |
| 17_CN19260 |  | STN-Zone E - Excavate to 1m below S5 (Aprox 19,848m3, 300m3/day, 2 team) | 33d | 2025-01-26 | 2025-02-27 | 17_CN12610 | 41d | 0d | CR117_Cost Loading [630087]; Excavation Team [264 h]; CR117 WEIGHTAGE [4973.68 h] | 630,087 |  | UDF_G3 | CN | CRBRH | EXC | GENL | GEN | ZE | EC | GEN | 1 | CR | To Split Excav and Strut/deck | UDF_G3 | 50080 | 50117 | 1 | ZE |
| 17_CN12640 |  | Zone E - Excavation 10000m3; 300m3/d, 2 team Rock blasting (4765m3, 150 m3/day, 2 team) | 32d | 2025-02-28 | 2025-03-31 | 17_CN19260 | 48d | 7d | CR117_Cost Loading [973250]; Excavation Team [256 h]; CR117 WEIGHTAGE [4666.08 h] | 973,250 |  | UDF_G3 | CN | CRBRH | EXC | GENL | GEN | ZE | EC | GEN | 2 | CR |  | UDF_G3 | 50080 | 50117 |  | ZE |
| 17_CN12630 |  | Zone E - Excavate to FEL (2054 m3; 250m3/day, 2 team) & Clearance Works | 7d | 2025-04-01 | 2025-04-07 | 17_CN12620 | 41d | 0d | CR117_Cost Loading [103987]; Excavation Team [72 h]; CR117 WEIGHTAGE [974.24 h] | 103,987 |  | UDF_G3 | CN | CRBRH | EXC | GENL | GEN | ZE | EC | GEN | 01 | CR | To Split Excav and Strut/deck | UDF_G3 | 50080 | 50117 | 1 | ZE |
|  | 1 | **STN-Zone E- Strutting-RC Works (Priorty)** |  | 2024-06-07 | 2025-05-28 |  |  |  |  |  |  |  |  |  |  |  |  |  |  |  |  |  |  |  |  |  |  |  |
| 17_CN12580 |  | STN-Zone E - Install S1, Install Construction Decking | 21d | 2024-06-07 | 2024-06-27 | 17_CN11930, 17_CN12310, 17_CN10450, 17_CN11860, 17_CN12080, 17_CN12150, 17_PC10280, 17_CN19220 | 41d | 0d | CR117_Cost Loading [519311]; RC Team [184 h]; Strutting Team [184 h]; CR117 WEIGHTAGE [1304.88 h] | 519,311 |  | UDF_G3 | CN | CRBRH | ERS | GENL | GEN | ZE | DK | GEN | 2 | CR | To Split Excav and Strut/deck | UDF_G3 | 50080 | 50117 | 1 | ZE |
| 17_CN12590 |  | STN-Zone E - Install S2, Install and Preload S2 (24 nos) (0.8no/d/ team) | 30d | 2024-08-05 | 2024-09-03 | 17_CN12580, 17_CN19230 | 41d | 0d | CR117_Cost Loading [538867]; Strutting Team [240 h]; CR117 WEIGHTAGE [9143.52 h] | 538,867 |  | UDF_G3 | CN | CRBRH | ERS | GENL | GEN | ZE | ST | GEN | 1 | CR | To Split Excav and Strut/deck | UDF_G3 | 50080 | 50117 | 1 | ZE |
| 17_CN12600 |  | STN-Zone E - Install S3, Install and Preload S3 (24 nos) (0.8no/d/ team) | 30d | 2024-10-15 | 2024-11-13 | 17_CN12590, 17_CN19240 | 41d | 0d | CR117_Cost Loading [538867]; Strutting Team [240 h]; Lifting Team [240 h]; CR117 WEIGHTAGE [9143.52 h] | 538,867 |  | UDF_G3 | CN | CRBRH | ERS | GENL | GEN | ZE | ST | GEN | 1 | CR | To Split Excav and Strut/deck | UDF_G3 | 50080 | 50117 | 1 | ZE |
| 17_CN12610 |  | STN-Zone E - Install S4, Install and Preload S4 (27 nos) (0.8no/d/ team) | 32d | 2024-12-25 | 2025-01-25 | 17_CN12600, 17_CN19250 | 41d | 0d | CR117_Cost Loading [574791]; Strutting Team [256 h]; Lifting Team [256 h]; CR117 WEIGHTAGE [10189 h] | 574,791 |  | UDF_G3 | CN | CRBRH | ERS | GENL | GEN | ZE | ST | GEN | 1 | CR | To Split Excav and Strut/deck | UDF_G3 | 50080 | 50117 | 1 | ZE |
| 17_CN12620 |  | STN-Zone E- Install S5, Install and Preload S5 (27 nos) (0.8no/d/ team) | 32d | 2025-02-28 | 2025-03-31 | 17_CN12610, 17_CN19260 | 41d | 0d | CR117_Cost Loading [574791]; Strutting Team [256 h]; Lifting Team [256 h]; CR117 WEIGHTAGE [10189 h] | 574,791 |  | UDF_G3 | CN | CRBRH | ERS | GENL | GEN | ZE | ST | GEN | 1 | CR | To Split Excav and Strut/deck | UDF_G3 | 50080 | 50117 | 1 | ZE |
| 17_CN12650 |  | STN-Zone E - Cast Base slab including waterproofing, concrete plugs and Earthing mat (area: 5011m2) | 30d | 2025-04-08 | 2025-05-07 | 17_CN12630, 17_CN12640 | 41d | 0d | CR117_Cost Loading [1848209]; RC Team [320 h]; Lifting Team [320 h]; CR117 WEIGHTAGE [12018.2 h] | 1,848,209 |  | UDF_G3 | CN | CRBRH | RCW | GENL | BAL | ZE | RW | GEN | 3 | CR |  | UDF_G3 | 50080 | 50117 | 1 | ZE |
| 17_CN12660 |  | STN-Zone E - Construct Pits (2no.) | 21d | 2025-05-08 | 2025-05-28 | 17_CN12640, 17_CN12650 | 68d | 27d | CR117_Cost Loading [1078122]; RC Team [168 h]; CR117 WEIGHTAGE [6291.04 h] | 1,078,122 |  | UDF_G3 | CN | CRBRH | RCW | GENL | GEN | ZE | RW | GEN | 3 | CR | To Split Excav and Strut/deck | UDF_G3 | 50080 | 50117 |  | ZE |
|  | 8 | **STN-Zone C2-Excavation Works** |  | 2024-06-28 | 2025-01-05 |  |  |  |  |  |  |  |  |  |  |  |  |  |  |  |  |  |  |  |  |  |  |  |
| 17_CN19270 |  | STN-Zone C2 - Excavate to 1m below S1 (Approx 1260m3, 250m3/day) | 6d | 2024-06-28 | 2024-07-03 | 17_CN11820, 17_CN11920, 17_CN12080, 17_CN12150, 17_CN12230, 17_CN12330, 17_CN12580, 17_PC10280 | 162d | 0d | CR117_Cost Loading [39999]; Excavation Team [48 h]; CR117 WEIGHTAGE [820.4 h] | 39,999 |  | UDF_G3 | CN | CRBRH | EXC | GENL | GEN | ZC2 | EC | GEN | 1 | CR | To Split Excav and Strut/deck | UDF_G3 | 50060 | 50080 |  | ZC2 |
| 17_CN19280 |  | STN-Zone C2 - Excavate to 1m below S2 (Approx 4,544m3, 300m3/day) | 15d | 2024-07-04 | 2024-07-18 | 17_CN19270 | 171d | 9d | CR117_Cost Loading [144252]; Excavation Team [120 h]; CR117 WEIGHTAGE [2204.88 h] | 144,252 |  | UDF_G3 | CN | CRBRH | EXC | GENL | GEN | ZC2 | EC | GEN | 1 | CR | To Split Excav and Strut/deck | UDF_G3 | 50060 | 50080 |  | ZC2 |
| 17_CN19290 |  | STN-Zone C2 - Excavate to 1m below S3 (Approx 4,840m3, 300m3/day) | 17d | 2024-08-07 | 2024-08-23 | 17_CN12680 | 162d | 82d | CR117_Cost Loading [153649]; Excavation Team [136 h]; CR117 WEIGHTAGE [2512.48 h] | 153,649 |  | UDF_G3 | CN | CRBRH | EXC | GENL | GEN | ZC2 | EC | GEN | 1 | CR | To Split Excav and Strut/deck | UDF_G3 | 50060 | 50080 |  | ZC2 |
| 17_CN19300 |  | STN-Zone C2 - Excavate to 1m below S4 (Approx 4,840m3, 300m3/day) | 17d | 2024-11-24 | 2024-12-10 | 17_CN12690 | 80d | 0d | CR117_Cost Loading [153649]; Excavation Team [136 h]; CR117 WEIGHTAGE [2512.48 h] | 153,649 |  | UDF_G3 | CN | CRBRH | EXC | GENL | GEN | ZC2 | EC | GEN | 1 | CR | To Split Excav and Strut/deck | UDF_G3 | 50060 | 50080 |  | ZC2 |
| 17_CN19310 |  | STN-Zone C2 - Excavate to FEL Approx 3868 m3, 250m3/day) | 16d | 2024-12-21 | 2025-01-05 | 17_CN12700 | 80d | 0d | CR117_Cost Loading [122792]; Excavation Team [120 h]; CR117 WEIGHTAGE [2204.88 h] | 122,792 |  | UDF_G3 | CN | CRBRH | EXC | GENL | GEN | ZC2 | EC | GEN | 1 | CR | To Split Excav and Strut/deck | UDF_G3 | 50060 | 50080 |  | ZC2 |

| ID | WBS | Activity | Duration | Start | Finish | Predecessors | Total float | Free float | Resources | Cost | Comments | Check 2 (Original Duration) | [UDF] Chainage Start | [UDF] Chainage Finish | Check | PHASE | AREA | SUB-PHASE | STAGE | SUB AREA | LOCATION | LOCATION DETAILS | MAJOR WORKS | SUB-LOCATION DETAILS | CR-117 - FOT | LINE | Utility Programme |
| --- | --- | --- | --- | --- | --- | --- | --- | --- | --- | --- | --- | --- | --- | --- | --- | --- | --- | --- | --- | --- | --- | --- | --- | --- | --- | --- | --- |
|  | 2 | **STN-Zone C2-Struting-RC Works** |  | 2024-07-04 | 2025-03-29 |  |  |  |  |  |  |  |  |  |  |  |  |  |  |  |  |  |  |  |  |  |  |
| 17_CN12670 |  | STN-Zone C2 - Install Construction Decking | 24d | 2024-07-04 | 2024-07-27 | 17_PC10280, 17_CN11920, 17_CN12330, 17_CN12150, 17_CN11820, 17_CN12080, 17_CN12230, 17_CN12580, 17_CN19270 | 162d | 0d | CR117_Cost Loading [593498]; RC Team [192 h]; CR117 WEIGHTAGE [1363.28 h] | 593,498 | To Split Excav and Strut/deck | UDF_G3 | 50060 | 50080 | UDF_G3 | CN | CRBRH | ERS | ZC2 | GENL | GEN | ZC2 | DK | GEN | 2 | CR |  |
| 17_CN12680 |  | STN-Zone C2 - Install Strut S2 and Preload S2 (8nos) (0.8/d/team) | 10d | 2024-07-28 | 2024-08-06 | 17_CN12670, 17_CN19280 | 162d | 0d | CR117_Cost Loading [179622]; Strutting Team [80 h]; Lifting Team [80 h]; CR117 WEIGHTAGE [3021.84 h] | 179,622 | To Split Excav and Strut/deck | UDF_G3 | 50060 | 50080 | UDF_G3 | CN | CRBRH | ERS | ZC2 | GENL | GEN | ZC2 | ST | GEN | 1 | CR |  |
| 17_CN12690 |  | STN-Zone C2 - Install Strut S3 and Preload S3 (8nos) (0.8/d/team) | 10d | 2024-11-14 | 2024-11-23 | 17_CN12680, 17_CN12600, 17_CN19290 | 80d | 0d | CR117_Cost Loading [179622]; Strutting Team [80 h]; Lifting Team [80 h]; CR117 WEIGHTAGE [3021.84 h] | 179,622 | To Split Excav and Strut/deck | UDF_G3 | 50060 | 50080 | UDF_G3 | CN | CRBRH | ERS | ZC2 | GENL | GEN | ZC2 | ST | GEN | 1 | CR |  |
| 17_CN12700 |  | STN-Zone C2 - Install Strut S4 and Preload S4 | 10d | 2024-12-11 | 2024-12-20 | 17_CN12690, 17_CN12600, 17_CN12730, 17_CN19300 | 80d | 0d | CR117_Cost Loading [179622]; Lifting Team [80 h]; Strutting Team [80 h]; CR117 WEIGHTAGE [3021.84 h] | 179,622 | To Split Excav and Strut/deck | UDF_G3 | 50060 | 50080 | UDF_G3 | CN | CRBRH | ERS | ZC2 | GENL | GEN | ZC2 | ST | GEN | 1 | CR |  |
| 17_CN12710 |  | STN-Zone C2 - Cast Base slab including waterproofing, Concrete Plugs and Earthing mat (area: 1174m2) | 83d | 2025-01-06 | 2025-03-29 | 17_CN12700, 17_CN19310 | 80d | 0d | CR117_Cost Loading [4261147]; RC Team [664 h]; CR117 WEIGHTAGE [24979.8 h] | 4,261,147 | To Split Excav and Strut/deck | UDF_G3 | 50060 | 50080 | UDF_G3 | CN | CRBRH | RCW | ZC2 | GENL | BAL | ZC2 | EA | GEN | 3 | CR |  |
|  | 9 | **STN-Zone D-Excavation Works** |  | 2024-06-05 | 2025-03-23 |  |  |  |  |  |  |  |  |  |  |  |  |  |  |  |  |  |  |  |  |  |  |
| 17_CN19330 |  | STN-Zone D - Excavate to 1m below S1 (Aprox 3470m3, 250m3/day) | 13d | 2024-06-05 | 2024-06-17 | 17_CN11790, 17_CN11820, 17_CN11890, 17_CN11910, 17_CN12180, 17_CN12200, 17_CN12230, 17_CN12260, 17_CN12290, 17_CN12320, 17_PC10280 | 52d | 0d | Excavation Team [512 h]; CR117_Cost Loading [110157]; CR117 WEIGHTAGE [1743.36 h] | 110,157 | To Split Excav and Strut/deck | UDF_G3 | 49867 | 50060 | UDF_G3 | CN | CRBRH | EXC | ZD | GENL | GEN | ZD | EC | GEN | 1 | CR | 1 |
| 17_CN19340 |  | STN-Zone D - Excavate to 1m below S2 (Aprox 12500m3, 300m3/day, 2 teams) | 21d | 2024-07-18 | 2024-08-07 | 17_CN12720 | 154d | 102d | Excavation Team [512 h]; CR117_Cost Loading [396820]; CR117 WEIGHTAGE [6204.32 h] | 396,820 | To Split Excav and Strut/deck | UDF_G3 | 49867 | 50060 | UDF_G3 | CN | CRBRH | EXC | ZD | GENL | GEN | ZD | EC | GEN | 1 | CR |  |
| 17_CN19350 |  | STN-Zone D - Excavate to 1m below S3 (Aprox 13,300m3, 300m3/day. 2 teams) | 23d | 2024-11-28 | 2024-12-20 | 17_CN12730 | 52d | 0d | Excavation Team [512 h]; CR117_Cost Loading [422216]; CR117 WEIGHTAGE [6358.16 h] | 422,216 | To Split Excav and Strut/deck | UDF_G3 | 49867 | 50060 | UDF_G3 | CN | CRBRH | EXC | ZD | GENL | GEN | ZD | EC | GEN | 1 | CR |  |
| 17_CN19360 |  | STN-Zone D - Excavate to 1m below S4 (Aprox 13,300m3, 300m3/day, 2 teams) | 23d | 2024-12-31 | 2025-01-22 | 17_CN12740 | 52d | 0d | Excavation Team [512 h]; CR117_Cost Loading [422216]; CR117 WEIGHTAGE [6358.16 h] | 422,216 | To Split Excav and Strut/deck | UDF_G3 | 49867 | 50060 | UDF_G3 | CN | CRBRH | EXC | ZD | GENL | GEN | ZD | EC | GEN | 1 | CR |  |
| 17_CN19370 |  | STN-Zone D - Excavate to 1m below S5 (Aprox 10500m3, 300m3/day, 2 teams) | 18d | 2025-02-02 | 2025-02-19 | 17_CN12750 | 52d | 0d | Excavation Team [512 h]; CR117_Cost Loading [333329]; CR117 WEIGHTAGE [4512.24 h] | 333,329 | To Split Excav and Strut/deck | UDF_G3 | 49867 | 50060 | UDF_G3 | CN | CRBRH | EXC | ZD | GENL | GEN | ZD | EC | GEN | 1 | CR |  |
| 17_CN12760 |  | STN-Zone D - Excavate to FEL (Aprox 8000m3, 250m3/day) | 32d | 2025-02-20 | 2025-03-23 | 17_CN12750, 17_CN19370 | 52d | 0d | Excavation Team [672 h]; CR117_Cost Loading [253965]; CR117 WEIGHTAGE [3896.96 h] | 253,965 | To Split Excav and Strut/deck | UDF_G3 | 49867 | 50060 | UDF_G3 | CN | CRBRH | EXC | ZD | GENL | GEN | ZD | EC | GEN | 1 | CR |  |
|  | 3 | **STN-Zone D-Struting-RC Works** |  | 2024-06-18 | 2025-05-24 |  |  |  |  |  |  |  |  |  |  |  |  |  |  |  |  |  |  |  |  |  |  |
| 17_CN12720 |  | STN-Zone D - Install S1, Construction Decking | 30d | 2024-06-18 | 2024-07-17 | 17_CN11910, 17_CN12320, 17_CN12260, 17_CN11890, 17_CN12230, 17_CN11790, 17_CN12180, 17_CN12200, 17_CN11820, 17_PC10280, 17_CN12290, 17_CN19330 | 52d | 0d | CR117_Cost Loading [741873]; Strutting Team [256 h]; CR117 WEIGHTAGE [1830.64 h] | 741,873 | To Split Excav and Strut/deck | UDF_G3 | 49867 | 50060 | UDF_G3 | CN | CRBRH | ERS | ZD | GENL | GEN | ZD | DK | GEN | 2 | CR | 1 |
| 17_CN12730 |  | STN-Zone D - Install S2 and Preload S2 (8no) (0.8no/d/team) | 10d | 2024-11-18 | 2024-11-27 | 17_CN12720, 17_CN12820, 17_CN19340 | 52d | 0d | CR117_Cost Loading [179622]; Strutting Team [80 h]; Lifting Team [80 h]; CR117 WEIGHTAGE [3021.84 h] | 179,622 | To Split Excav and Strut/deck | UDF_G3 | 49867 | 50060 | UDF_G3 | CN | CRBRH | ERS | ZD | GENL | GEN | ZD | ST | GEN | 1 | CR |  |
| 17_CN12740 |  | STN-Zone D - Install S3 and Preload S3 (8no) (0.8no/d/team) | 10d | 2024-12-21 | 2024-12-30 | 17_CN12730, 17_CN19350 | 52d | 0d | CR117_Cost Loading [179622]; Strutting Team [80 h]; Lifting Team [80 h]; CR117 WEIGHTAGE [3021.84 h] | 179,622 | To Split Excav and Strut/deck | UDF_G3 | 49867 | 50060 | UDF_G3 | CN | CRBRH | ERS | ZD | GENL | GEN | ZD | ST | GEN | 1 | CR |  |
| 17_CN12750 |  | STN-Zone D - Install S4 and Preload S4 (8no) (0.8no/d/team) | 10d | 2025-01-23 | 2025-02-01 | 17_CN12740, 17_CN19360 | 52d | 0d | CR117_Cost Loading [179622]; Strutting Team [80 h]; Lifting Team [80 h]; CR117 WEIGHTAGE [3021.84 h] | 179,622 | To Split Excav and Strut/deck | UDF_G3 | 49867 | 50060 | UDF_G3 | CN | CRBRH | ERS | ZD | GENL | GEN | ZD | ST | GEN | 1 | CR |  |
| 17_CN12770 |  | STN-Zone D - Install S5 Cast Base slab including waterproofing, Concrete Plugs and Earthing mat | 32d | 2025-03-24 | 2025-04-24 | 17_CN12760, 17_CN19370 | 52d | 0d | CR117_Cost Loading [1642852]; RC Team [272 h]; CR117 WEIGHTAGE [10209.7 h] | 1,642,852 |  | UDF_G3 | 49867 | 50060 | UDF_G3 | CN | CRBRH | RCW | ZD | GENL | BAL | ZD | EA | GEN | 3 | CR |  |
| 17_CN12780 |  | STN-Zone D - Construct Pits | 30d | 2025-04-25 | 2025-05-24 | 17_CN12760, 17_CN12770 | 52d | 0d | CR117_Cost Loading [1540174]; RC Team [280 h]; CR117 WEIGHTAGE [10511.1 h] | 1,540,174 |  | UDF_G3 | 49867 | 50060 | UDF_G3 | CN | CRBRH | RCW | ZD | GENL | GEN | ZD | RW | GEN | 3 | CR |  |
|  | 2 | **STN-Zone D - Utilities Gap (GL 14-16)** |  | 2024-07-18 | 2024-11-17 |  |  |  |  |  |  |  |  |  |  |  |  |  |  |  |  |  |  |  |  |  |  |
| 17_CN12790 |  | Zone D - Excavate Utilities Gap area and Installation lagging with C-channel until utilities level | 30d | 2024-07-18 | 2024-08-16 | 17_CN12720 | 52d | 0d | CR117_Cost Loading [346625]; Excavation Team [184 h]; CR117 WEIGHTAGE [3435.44 h] | 346,625 | To Split Excav and Strut/deck | UDF_G2 | 49867 | 50060 | UDF_G3 | CN | CRBRH | ENA | ZD | GENL | GEN | ZD | EC | GEN | 01 | CR | 1 |
| 17_CN12800 |  | Zone D - Installation of utilities support structures below construction decking | 24d | 2024-08-17 | 2024-09-09 | 17_CN12790 | 52d | 0d | CR117_Cost Loading [277300]; Excavation Team [184 h]; Lifting Team [184 h]; CR117 WEIGHTAGE [1304.88 h] | 277,300 |  |  | 49867 | 50060 | UDF_G3 | CN | CRBRH | ENA | ZD | GENL | GEN | ZD | UD | GEN | 01 | CR | 1 |
| 17_CN12810 |  | Zone D - Excavate Utilities Gap area and Installation lagging with C-channel until micro pile platform level | 24d | 2024-09-10 | 2024-10-03 | 17_CN12800 | 52d | 0d | CR117_Cost Loading [277300]; Excavation Team [152 h]; CR117 WEIGHTAGE [2820.08 h] | 277,300 | To Split Excav and Strut/deck | UDF_G2 | 49867 | 50060 | UDF_G3 | CN | CRBRH | ENA | ZD | GENL | GEN | ZD | EC | GEN | 01 | CR | 1 |
| 17_CN12820 |  | Zone D - installation of micropiles - Approx. 40 nos at North and 40 nos at South | 45d | 2024-10-04 | 2024-11-17 | 17_CN12810 | 52d | 0d | CR117_Cost Loading [519937]; GW (C&S) [320 h]; CR117 WEIGHTAGE [2298.16 h] | 519,937 |  |  | 49867 | 50060 | UDF_G3 | CN | CRBRH | ENA | ZD | GENL | GEN | ZD | PI | GEN | 01 | CR | 1 |

| ID | WBS | Activity | Duration | Start | Finish | Predecessors | Total float | Free float | Resources | Cost | Comments | Check 2 (Original Duration) | [UDF] Chainage Start | [UDF] Chainage Finish | Check | PHASE | AREA | SUB-PHASE | STAGE | SUB AREA | LOCATION | LOCATION DETAILS | MAJOR WORKS | SUB-LOCATION DETAILS | CR-117 - FOT | LINE |
| --- | --- | --- | --- | --- | --- | --- | --- | --- | --- | --- | --- | --- | --- | --- | --- | --- | --- | --- | --- | --- | --- | --- | --- | --- | --- | --- |
|  | 10 | **STN-Zone C1-Excavation Works** |  | 2024-05-08 | 2025-02-20 |  |  |  |  |  |  |  |  |  |  |  |  |  |  |  |  |  |  |  |  |  |
| 17_CN19380 |  | STN-Zone C1 - Excavate to 1m below S1 (1350m3, 250m3/day) | 6d | 2024-05-08 | 2024-05-13 | 17_CN11740, 17_CN11900, 17_CN12180, 17_CN12200, 17_CN12280, 17_CN12400, 17_PC10280 | 200d | 0d | CR117_Cost Loading [42857]; Excavation Team [224 h]; CR117 WEIGHTAGE [4204.56 h] | 42,857 | To Split Excav and Strut/deck | UDF_G3 | 49845 | 49867 | UDF_G3 | CN | CRBRH | EXC | ZC1 | GENL | GEN | ZC1 | EC | GEN | 1 | CR |
| 17_CN19390 |  | STN-Zone C1 - Excavate to 1m below S2 (4890 m3, 300m3/day) | 17d | 2024-06-11 | 2024-06-27 | 17_CN12830 | 200d | 0d | CR117_Cost Loading [155236]; Excavation Team [224 h]; CR117 WEIGHTAGE [4204.56 h] | 155,236 | To Split Excav and Strut/deck | UDF_G3 | 49845 | 49867 | UDF_G3 | CN | CRBRH | EXC | ZC1 | GENL | GEN | ZC1 | EC | GEN | 1 | CR |
| 17_CN19400 |  | STN-Zone C1 - Excavate to 1m below S3 (5200 m3, 300m3/day) | 17d | 2024-07-28 | 2024-08-13 | 17_CN12840 | 200d | 0d | CR117_Cost Loading [165077]; Excavation Team [224 h]; CR117 WEIGHTAGE [4204.56 h] | 165,077 | To Split Excav and Strut/deck | UDF_G3 | 49845 | 49867 | UDF_G3 | CN | CRBRH | EXC | ZC1 | GENL | GEN | ZC1 | EC | GEN | 1 | CR |
| 17_CN19410 |  | STN-Zone C1 - Excavate to 1m below S4 (5200 m3, 300m3/day) | 17d | 2024-09-16 | 2024-10-02 | 17_CN12850 | 200d | 0d | CR117_Cost Loading [165077]; Excavation Team [224 h]; CR117 WEIGHTAGE [4204.56 h] | 165,077 | To Split Excav and Strut/deck | UDF_G3 | 49845 | 49867 | UDF_G3 | CN | CRBRH | EXC | ZC1 | GENL | GEN | ZC1 | EC | GEN | 1 | CR |
| 17_CN19420 |  | STN-Zone C1 - Excavate to 1m below S5 (4100 m3, 300m3/day) | 14d | 2024-10-03 | 2024-10-16 | 17_CN19410 | 221d | 111d | CR117_Cost Loading [130157]; Excavation Team [224 h]; CR117 WEIGHTAGE [4204.56 h] | 130,157 | To Split Excav and Strut/deck | UDF_G3 | 49845 | 49867 | UDF_G3 | CN | CRBRH | EXC | ZC1 | GENL | GEN | ZC1 | EC | GEN | 1 | CR |
| 17_CN19430 |  | STN-Zone C1 - Excavate to FEL (3622m3, 250m3/day) and Clearance Works | 16d | 2025-02-05 | 2025-02-20 | 17_CN19410, 17_CN12860, 17_CN19420 | 110d | 50d | CR117_Cost Loading [114983]; Excavation Team [224 h]; CR117 WEIGHTAGE [4204.56 h] | 114,983 | To Split Excav and Strut/deck | UDF_G3 | 49845 | 49867 | UDF_G3 | CN | CRBRH | EXC | ZC1 | GENL | GEN | ZC1 | EC | GEN | 1 | CR |
|  | 4 | **STN-Zone C1-Struting-RC Works** |  | 2024-05-14 | 2025-07-10 |  |  |  |  |  |  |  |  |  |  |  |  |  |  |  |  |  |  |  |  |  |
| 17_CN12830 |  | STN-Zone C1 - Install Construction Decking | 28d | 2024-05-14 | 2024-06-10 | 17_CN11900, 17_CN12280, 17_CN12200, 17_CN12400, 17_CN11740, 17_CN12180, 17_PC10280, 17_CN19380 | 200d | 0d | CR117_Cost Loading [692415]; RC Team [224 h]; CR117 WEIGHTAGE [1596.96 h] | 692,415 | To Split Excav and Strut/deck | UDF_G3 | 49845 | 49867 | UDF_G3 | CN | CRBRH | RCW | ZC1 | GENL | GEN | ZC1 | DK | GEN | 2 | CR |
| 17_CN12840 |  | STN-Zone C1 - Install S2, Install and Preload S2 | 30d | 2024-06-28 | 2024-07-27 | 17_CN12830, 17_CN12890, 17_CN19390 | 200d | 0d | CR117_Cost Loading [538867]; Strutting Team [240 h]; Lifting Team [240 h]; CR117 WEIGHTAGE [9143.52 h] | 538,867 | To Split Excav and Strut/deck | UDF_G3 | 49845 | 49867 | UDF_G3 | CN | CRBRH | ERS | ZC1 | GENL | GEN | ZC1 | ST | GEN | 1 | CR |
| 17_CN12850 |  | STN-Zone C1 - Install S3 Install and Preload S3 | 33d | 2024-08-14 | 2024-09-15 | 17_CN12840, 17_CN19400 | 200d | 0d | CR117_Cost Loading [592753]; Strutting Team [264 h]; Lifting Team [264 h]; CR117 WEIGHTAGE [9318.8 h] | 592,753 | To Split Excav and Strut/deck | UDF_G3 | 49845 | 49867 | UDF_G3 | CN | CRBRH | ERS | ZC1 | GENL | GEN | ZC1 | ST | GEN | 1 | CR |
| 17_CN12860 |  | STN-Zone C1 - Install S4, Install and Preload S4 | 35d | 2025-01-01 | 2025-02-04 | 17_CN12850, 17_CN12920, 17_CN12730, 17_CN19410 | 110d | 0d | CR117_Cost Loading [628678]; Strutting Team [280 h]; Lifting Team [280 h]; CR117 WEIGHTAGE [9435.68 h] | 628,678 | To Split Excav and Strut/deck | UDF_G3 | 49845 | 49867 | UDF_G3 | CN | CRBRH | ERS | ZC1 | GENL | GEN | ZC1 | ST | GEN | 1 | CR |
| 17_CN12870 |  | STN-Zone C1 - Install S5, Cast Base slab including waterproofing, Concrete plugs and Earthing mat (area: 1564m2) | 90d | 2025-04-12 | 2025-07-10 | 17_CN12860, 17_CN13690, 17_CN19430 | 60d | 0d | CR117_Cost Loading [1616600]; Strutting Team [720 h]; Lifting Team [720 h]; CR117 WEIGHTAGE [27089.7 h] | 1,616,600 | To Split Excav and Strut/deck | UDF_G3 | 49845 | 49867 | UDF_G3 | CN | CRBRH | RCW | ZC1 | GENL | BAL | ZC1 | EA | GEN | 1 | CR |
|  | 11 | **STN-Zone B-Excavation Works** |  | 2024-03-27 | 2024-12-30 |  |  |  |  |  |  |  |  |  |  |  |  |  |  |  |  |  |  |  |  |  |
| 17_CN19440 |  | STN-Zone B - Excavate to 1m below S1 (Aprox 6100 m3, 250m3/day, 2 teams) | 12d | 2024-03-27 | 2024-04-07 | 17_CN11720, 17_CN11760, 17_CN11840, 17_CN11940, 17_CN12050, 17_CN12120, 17_CN12130, 17_CN12160, 17_CN12270, 17_CN12300, 17_PC10280, 17_CN12460 | 60d | 0d | CR117_Cost Loading [193648]; Excavation Team [112 h]; CR117 WEIGHTAGE [2050.96 h] | 193,648 | To Split Excav and Strut/deck | UDF_G3 | 40750 | 49845 | UDF_G3 | CN | CRBRH | EXC | ZB | GENL | GEN | ZB | EC | GEN | 1 | CR |
| 17_CN19450 |  | STN-Zone B - Excavate to 1m below S2 (Aprox 20050 m3, 300m3/day, 2 teams) | 32d | 2024-04-20 | 2024-05-21 | 17_CN12880, 17_CN12470 | 60d | 0d | CR117_Cost Loading [693641]; Excavation Team [288 h]; CR117 WEIGHTAGE [5435.2 h] | 693,641 | To Split Excav and Strut/deck | UDF_G3 | 40750 | 49845 | UDF_G3 | CN | CRBRH | EXC | ZB | GENL | GEN | ZB | EC | GEN | 1 | CR |
| 17_CN19460 |  | STN-Zone B - Excavate to 1m below S3 (Aprox 21250 m3, 300m3/day, 2 teams) | 34d | 2024-06-21 | 2024-07-24 | 17_CN12890 | 60d | 0d | CR117_Cost Loading [738085]; Excavation Team [312 h]; CR117 WEIGHTAGE [5896.72 h] | 738,085 | To Split Excav and Strut/deck | UDF_G3 | 40750 | 49845 | UDF_G3 | CN | CRBRH | EXC | ZB | GENL | GEN | ZB | EC | GEN | 1 | CR |
| 17_CN19470 |  | STN-Zone B - Excavate to 1m below S4 (Aprox 21250 m3, 300m3/day, 2 teams) | 34d | 2024-08-24 | 2024-09-26 | 17_CN12900 | 60d | 0d | CR117_Cost Loading [738085]; Excavation Team [248 h]; CR117 WEIGHTAGE [4666.08 h] | 738,085 | To Split Excav and Strut/deck | UDF_G3 | 40750 | 49845 | UDF_G3 | CN | CRBRH | EXC | ZB | GENL | GEN | ZB | EC | GEN | 1 | CR |
| 17_CN19480 |  | STN-Zone B - Excavate to 1m below S5 (Aprox 18000 m3, 300m3/day, 2 teams) | 29d | 2024-10-29 | 2024-11-26 | 17_CN12910 | 60d | 0d | CR117_Cost Loading [587293]; Excavation Team [208 h]; CR117 WEIGHTAGE [3896.96 h] | 587,293 | To Split Excav and Strut/deck | UDF_G3 | 40750 | 49845 | UDF_G3 | CN | CRBRH | EXC | ZB | GENL | GEN | ZB | EC | GEN | 1 | CR |
| 17_CN19490 |  | STN-Zone B - Excavate to FEL(Aprox 16500 m3, 250m3/day) Rock blasting (331 m3, 150m3/day, 2days) | 34d | 2024-11-27 | 2024-12-30 | 17_CN19470, 17_CN19480 | 61d | 1d | CR117_Cost Loading [523802]; Excavation Team [208 h]; CR117 WEIGHTAGE [3896.96 h] | 523,802 | To Split Excav and Strut/deck | UDF_G3 | 40750 | 49845 | UDF_G3 | CN | CRBRH | EXC | ZB | GENL | GEN | ZB | EC | GEN | 1 | CR |
|  | 5 | **STN-Zone B-Struting-RC Works** |  | 2024-04-08 | 2025-01-26 |  |  |  |  |  |  |  |  |  |  |  |  |  |  |  |  |  |  |  |  |  |
| 17_CN12880 |  | STN-Zone B Install Construction Decking | 12d | 2024-04-08 | 2024-04-19 | 17_CN11940, 17_CN12300, 17_CN12160, 17_CN12050, 17_CN11840, 17_CN11720, 17_CN11760, 17_CN12130, 17_PC10280, 17_CN12120, 17_CN12270, 17_CN19440 | 60d | 0d | CR117_Cost Loading [519311]; Strutting Team [224 h]; RC Team [224 h]; CR117 WEIGHTAGE [1596.96 h] | 519,311 | To Split Excav and Strut/deck | UDF_G3 | 40750 | 49845 | UDF_G3 | CN | CRBRH | RCW | ZB | GENL | GEN | ZB | DK | GEN | 2 | CR |
| 17_CN12890 |  | STN-Zone B Install S2 and Preload S2 (24 nos) (0.8no/d/team) | 30d | 2024-05-22 | 2024-06-20 | 17_CN12880, 17_CN19450 | 60d | 0d | CR117_Cost Loading [538867]; Strutting Team [240 h]; Lifting Team [240 h]; CR117 WEIGHTAGE [9143.52 h] | 538,867 | To Split Excav and Strut/deck | UDF_G3 | 40750 | 49845 | UDF_G3 | CN | CRBRH | ERS | ZB | GENL | GEN | ZB | ST | GEN | 1 | CR |
| 17_CN12900 |  | STN-Zone B Install S3 and Preload S3 (24 nos) (0.8no/d/team) | 30d | 2024-07-25 | 2024-08-23 | 17_CN11940, 17_CN12300, 17_CN11760, 17_CN12130, 17_PC10280, 17_CN12120, 17_CN12270, 17_CN12470, 17_CN19460 | 60d | 0d | CR117_Cost Loading [538867]; Lifting Team [240 h]; Strutting Team [240 h]; CR117 WEIGHTAGE [9143.52 h] | 538,867 | To Split Excav and Strut/deck | UDF_G3 | 40750 | 49845 | UDF_G3 | CN | CRBRH | ERS | ZB | GENL | GEN | ZB | ST | GEN | 1 | CR |
| 17_CN12910 |  | STN-Zone B Install S4 and Preload S4 (28 nos) (0.8no/d/team) | 32d | 2024-09-27 | 2024-10-28 | 17_CN12900, 17_CN19470 | 60d | 0d | CR117_Cost Loading [574791]; Strutting Team [248 h]; Lifting Team [248 h]; CR117 WEIGHTAGE [10440.2 h] | 574,791 | To Split Excav and Strut/deck | UDF_G3 | 40750 | 49845 | UDF_G3 | CN | CRBRH | ERS | ZB | GENL | GEN | ZB | ST | GEN | 1 | CR |
| 17_CN12920 |  | STN-Zone B Install S5 and Preload S5 (28 nos) (0.8no/d/team) | 35d | 2024-11-27 | 2024-12-31 | 17_CN12900, 17_CN19480 | 60d | 0d | CR117_Cost Loading [628678]; Lifting Team [248 h]; Strutting Team [248 h]; CR117 WEIGHTAGE [10440.2 h] | 628,678 | To Split Excav and Strut/deck | UDF_G3 | 40750 | 49845 | UDF_G3 | CN | CRBRH | ERS | ZB | GENL | GEN | ZB | ST | GEN | 1 | CR |
| 17_CN13010 |  | STN-Zone B - Cast Base Slab including waterproofing and Earthing mat (area: 3984m2) | 16d | 2025-01-01 | 2025-01-16 | 17_CN19490, 17_CN12920 | 60d | 0d | CR117_Cost Loading [1026783]; RC Team [248 h]; Lifting Team [248 h]; CR117 WEIGHTAGE [9305.36 h] | 1,026,783 |  | UDF_G3 | 40750 | 49845 | UDF_G3 | CN | CRBRH | RCW | ZB | GENL | BAL | ZB | EA | GEN | 3 | CR |
| 17_CN13020 |  | STN-Zone B - Construct Pits (2 no.) | 10d | 2025-01-17 | 2025-01-26 | 17_CN13010, 17_CN12920, 17_CN19490 | 70d | 0d | CR117_Cost Loading [718748]; RC Team [168 h]; CR117 WEIGHTAGE [6291.04 h] | 718,748 | To Split Excav and Strut/deck | UDF_G3 | 40750 | 49845 | UDF_G3 | CN | CRBRH | RCW | ZB | GENL | GEN | ZB | RW | GEN | 3 | CR |

| ID | WBS | Activity | Duration | Start | Finish | Predecessors | Total float | Free float | Resources | Cost | Comments | Check 2 (Original Duration) | [UDF] Chainage Start | [UDF] Chainage Finish | Check | PHASE | AREA | SUB-PHASE | STAGE | SUB AREA | LOCATION | LOCATION DETAILS | MAJOR WORKS | SUB-LOCATION DETAILS | CR-117 - FOT | LINE | Cr117 BSC Stn |
| --- | --- | --- | --- | --- | --- | --- | --- | --- | --- | --- | --- | --- | --- | --- | --- | --- | --- | --- | --- | --- | --- | --- | --- | --- | --- | --- | --- |
|  | 12 | **STN-Zone A-Excavation Works** |  | 2024-09-15 | 2025-02-19 |  |  |  |  |  |  |  |  |  |  |  |  |  |  |  |  |  |  |  |  |  |  |
| 17_CN19500 |  | STN-Zone A - Excavate to 1m below S1 (Aprox 2412m3, 250m3/day) | 10d | 2024-09-15 | 2024-09-24 | 17_CN11720, 17_CN11760, 17_CN11800, 17_CN12120, 17_CN12170, 17_CN12210, 17_CN12470, 17_CN12490, 17_CN12500, 17_CN12900, 17_PC10280 | 50d | 0d | CR117_Cost Loading [76570]; Excavation Team [80 h]; CR117 WEIGHTAGE [1435.76 h] | 76,570 | To Split Excav and Strut/deck | UDF_G3 | 49709.1 | 49750 | UDF_G3 | CN | CRBRH | EXC | ZA | GENL | GEN | ZA | EC | GEN | 1 | CR |  |
| 17_CN19510 |  | STN-Zone A - Excavate to 1m below S2 (Aprox 8723m3, 300m3/day) | 29d | 2024-10-16 | 2024-11-13 | 17_CN13030 | 50d | 0d | CR117_Cost Loading [276917]; Excavation Team [240 h]; CR117 WEIGHTAGE [4512.24 h] | 276,917 | To Split Excav and Strut/deck | UDF_G3 | 49709.1 | 49750 | UDF_G3 | CN | CRBRH | EXC | ZA | GENL | GEN | ZA | EC | GEN | 1 | CR |  |
| 17_CN19520 |  | STN-Zone A - Excavate to 1m below S3 (Aprox 9280m3, 300m3/day) | 30d | 2024-12-05 | 2025-01-03 | 17_CN13040 | 50d | 0d | CR117_Cost Loading [294599]; Excavation Team [216 h]; CR117 WEIGHTAGE [4050.8 h] | 294,599 | To Split Excav and Strut/deck | UDF_G3 | 49709.1 | 49750 | UDF_G3 | CN | CRBRH | EXC | ZA | GENL | GEN | ZA | EC | GEN | 1 | CR |  |
| 17_CN19530 |  | STN-Zone A - Excavate to FEL (Aprox 6589m3, 250m3/day) | 26d | 2025-01-25 | 2025-02-19 | 17_CN13050 | 50d | 0d | CR117_Cost Loading [209172]; Excavation Team [168 h]; CR117 WEIGHTAGE [3127.84 h] | 209,172 | To Split Excav and Strut/deck | UDF_G3 | 49709.1 | 49750 | UDF_G3 | CN | CRBRH | EXC | ZA | GENL | GEN | ZA | EC | GEN | 1 | CR |  |
|  | 6 | **STN-Zone A-Struting-RC Works** |  | 2024-09-25 | 2025-04-30 |  |  |  |  |  |  |  |  |  |  |  |  |  |  |  |  |  |  |  |  |  |  |
| 17_CN13030 |  | STN-Zone A - Install Construction Decking | 21d | 2024-09-25 | 2024-10-15 | 17_CN12500, 17_CN12470, 17_CN12490, 17_CN11760, 17_CN11800, 17_CN12120, 17_CN12170, 17_CN12210, 17_PC10280, 17_CN11720, 17_CN12900, 17_CN19500 | 50d | 0d | CR117_Cost Loading [519311]; RC Team [216 h]; CR117 WEIGHTAGE [1538.56 h] | 519,311 | To Split Excav and Strut/deck | UDF_G3 | 49709.1 | 49750 | UDF_G3 | CN | CRBRH | RCW | ZA | GENL | GEN | ZA | DK | GEN | 2 | CR |  |
| 17_CN13040 |  | STN-Zone A - Install S2 Struts and Preload S2 | 21d | 2024-11-14 | 2024-12-04 | 17_CN13030, 17_CN12910, 17_CN19510 | 50d | 0d | CR117_Cost Loading [502942]; Strutting Team [232 h]; Lifting Team [232 h]; CR117 WEIGHTAGE [9085.12 h] | 502,942 | To Split Excav and Strut/deck | UDF_G3 | 49709.1 | 49750 | UDF_G3 | CN | CRBRH | ERS | ZA | GENL | GEN | ZA | ST | GEN | 1 | CR |  |
| 17_CN13050 |  | STN-Zone A - Install S3 Struts and preload S3 | 21d | 2025-01-04 | 2025-01-24 | 17_CN13040, 17_CN19520 | 50d | 0d | CR117_Cost Loading [538867]; Strutting Team [248 h]; Lifting Team [248 h]; CR117 WEIGHTAGE [10440.2 h] | 538,867 | To Split Excav and Strut/deck | UDF_G3 | 49709.1 | 49750 | UDF_G3 | CN | CRBRH | ERS | ZA | GENL | GEN | ZA | ST | GEN | 1 | CR |  |
| 17_CN13060 |  | STN-Zone A- Cast Base Slab including waterproofing and Earthing mat (area: 1856m2) | 70d | 2025-02-20 | 2025-04-30 | 17_CN13050, 17_CN19530 | 50d | 0d | CR117_Cost Loading [4107130]; RC Team [704 h]; CR117 WEIGHTAGE [26486.8 h] | 4,107,130 | To Split Excav and Strut/deck | UDF_G3 | 49709.1 | 49750 | UDF_G3 | CN | CRBRH | RCW | ZA | GENL | BAL | ZA | EA | GEN | 3 | CR |  |
|  | 2 | **STATION STRUCTURAL WORKS** |  | 2025-01-17 | 2026-07-30 |  |  |  |  |  |  |  |  |  |  |  |  |  |  |  |  |  |  |  |  |  |  |
|  | 6 | **STN-Zone A-Structure** |  | 2025-05-01 | 2026-03-16 |  |  |  |  |  |  |  |  |  |  |  |  |  |  |  |  |  |  |  |  |  |  |
| 17_CN13860 |  | Zone A - Remove S3 Struts | 12d | 2025-05-01 | 2025-05-12 | 17_CN13060 | 50d | 0d | CR117_Cost Loading [383016]; Strutting Team [104 h]; Lifting Team [104 h]; CR117 WEIGHTAGE [4064 h] | 383,016 |  |  | 49709.1 | 49750 | UDF_G3 | CN | CRBRH | ERS | ZA | GENL | GEN | ZA | SR | GEN | 2 | CR |  |
| 17_CN13870 |  | Zone A - Construct Internal Partition Walls, Skin walls and Shaft Walls @ Base slab level | 30d | 2025-05-13 | 2025-06-11 | 17_CN13860 | 82d | 32d | CR117_Cost Loading [446801]; RC Team [240 h]; GW (C&S) [240 h]; CR117 WEIGHTAGE [1713.84 h] | 446,801 |  |  | 49709.1 | 49750 | UDF_G3 | CN | CRBRH | RCW | ZA | GENL | GEN | ZA | PW | GEN | 4 | CR |  |
| 17_CN13880 |  | Zone A - Cast Walls including waterproofing to Transfer Slab Level (Entrance 5) and Roof Level (C&C Tunnel) | 62d | 2025-05-13 | 2025-07-13 | 17_CN13860 | 50d | 0d | CR117_Cost Loading [968069]; GW (C&S) [552 h]; RC Team [552 h]; CR117 WEIGHTAGE [12839.1 h] | 968,069 |  |  | 49709.1 | 49750 | UDF_G3 | CN | CRBRH | RCW | ZA | GENL | GEN | ZA | RW | GEN | 4 | CR |  |
| 17_CN13890 |  | Zone A - Cast Transfer Slab at Entrance 5 | 60d | 2025-07-14 | 2025-09-11 | 17_CN13880, 17_CN13870 | 50d | 0d | CR117_Cost Loading [1401382]; RC Team [336 h]; GW (C&S) [336 h]; CR117 WEIGHTAGE [12621.1 h] | 1,401,382 |  |  | 49709.1 | 49750 | UDF_G3 | CN | CRBRH | RCW | ZA | GENL | GEN | ZA | RW | GEN | 2 | CR |  |
| 17_CN13900 |  | Zone A - Cast Roof Slab at Station | 30d | 2025-09-12 | 2025-10-11 | 17_CN13890, 17_CN13880 | 50d | 0d | CR117_Cost Loading [1366752]; RC Team [240 h]; GW (C&S) [240 h]; CR117 WEIGHTAGE [9003.92 h] | 1,366,752 |  |  | 49709.1 | 49750 | UDF_G3 | CN | CRBRH | RCW | ZA | GENL | ROF | ZA | RW | GEN | 1 | CR | 1 |
| 17_CN13910 |  | Zone A - Cut King Post to Top of Roof Slab (Tunnel) | 7d | 2025-10-12 | 2025-10-18 | 17_CN13900 | 50d | 0d | CR117_Cost Loading [232918]; DFE/King Post Team [56 h]; CR117 WEIGHTAGE [1476.48 h] | 232,918 |  |  | 49709.1 | 49750 | UDF_G3 | CN | CRBRH | ENA | ZA | GENL | GEN | ZA | KP | GEN | 2 | CR |  |
| 17_CN13920 |  | Zone A - Backfill to Transfer Slab at Entrance 5 and Roof Slab at C&C Tunnel; Cast Concrete Plugs | 16d | 2025-10-19 | 2025-11-03 | 17_CN13910, 17_CN13900, 17_CN13750 | 50d | 0d | CR117_Cost Loading [126290]; Excavation Team [128 h]; RC Team [128 h]; CR117 WEIGHTAGE [1760.24 h] | 126,290 |  |  | 49709.1 | 49750 | UDF_G3 | CN | CRBRH | ENA | ZA | GENL | GEN | ZA | BF | GEN | 3 | CR |  |
| 17_CN13930 |  | Zone A - Remove S2 struts | 13d | 2025-11-04 | 2025-11-16 | 17_CN13920 | 50d | 0d | CR117_Cost Loading [414934]; Strutting Team [104 h]; Lifting Team [104 h]; CR117 WEIGHTAGE [4064 h] | 414,934 |  |  | 49709.1 | 49750 | UDF_G3 | CN | CRBRH | ERS | ZA | GENL | GEN | ZA | SR | GEN | 2 | CR |  |
| 17_CN13940 |  | Zone A - Cast Walls, Columns and Roof Slab at Entrance 5, including waterproofing | 65d | 2025-11-17 | 2026-01-20 | 17_CN13930 | 50d | 0d | CR117_Cost Loading [968069]; RC Team [560 h]; GW (C&S) [560 h]; CR117 WEIGHTAGE [15039.2 h] | 968,069 |  |  | 49709.1 | 49750 | UDF_G3 | CN | CRBRH | RCW | ZA | GENL | GEN | ZA | RW | GEN | 4 | CR |  |
| 17_CN13950 |  | Zone A - Cut King Post to Top of Roof Slab (Entrance 5) | 7d | 2026-01-21 | 2026-01-27 | 17_CN13940 | 50d | 0d | CR117_Cost Loading [232918]; DFE/King Post Team [56 h]; Lifting Team [56 h]; CR117 WEIGHTAGE [1476.48 h] | 232,918 |  |  | 49709.1 | 49750 | UDF_G3 | CN | CRBRH | ENA | ZA | GENL | GEN | ZA | KP | GEN | 2 | CR |  |
| 17_CN13960 |  | Zone A - Backfill to 2m below S1 strut level | 16d | 2026-01-28 | 2026-02-12 | 17_CN13950 | 50d | 0d | CR117_Cost Loading [126290]; Excavation Team [128 h]; CR117 WEIGHTAGE [1760.24 h] | 126,290 |  |  | 49709.1 | 49750 | UDF_G3 | CN | CRBRH | ENA | ZA | GENL | GEN | ZA | BF | GEN | 3 | CR |  |
| 17_CN13970 |  | Zone A - Remove S1 Construction Deck | 16d | 2026-02-13 | 2026-02-28 | 17_CN13960 | 50d | 0d | CR117_Cost Loading [395666]; Lifting Team [128 h]; GW (C&S) [128 h]; Excavation Team [128 h]; CR117 WEIGHTAGE [895.92 h] | 395,666 |  |  | 49709.1 | 49750 | UDF_G3 | CN | CRBRH | ERS | ZA | GENL | GEN | ZA | SI | GEN | 2 | CR |  |
| 17_CN13980 |  | Zone A - Backfill to Ground Level | 16d | 2026-03-01 | 2026-03-16 | 17_CN13970 | 50d | 0d | CR117_Cost Loading [126290]; Excavation Team [128 h]; CR117 WEIGHTAGE [1760.24 h] | 126,290 |  |  | 49709.1 | 49750 | UDF_G3 | CN | CRBRH | ENA | ZA | GENL | GRD | ZA | BF | GEN | 3 | CR |  |

| ID | WBS | Activity | Duration | Start | Finish | Predecessors | Total float | Free float | Resources | Cost | [UDF] Chainage Start | [UDF] Chainage Finish | Check | PHASE | AREA | SUB-PHASE | STAGE | SUB AREA | LOCATION | LOCATION DETAILS | MAJOR WORKS | SUB-LOCATION DETAILS | CR-117 - FOT | LINE |
| --- | --- | --- | --- | --- | --- | --- | --- | --- | --- | --- | --- | --- | --- | --- | --- | --- | --- | --- | --- | --- | --- | --- | --- | --- |
|  | 4 | **STN-Zone C1-Structure** |  | 2025-07-11 | 2026-04-01 |  |  |  |  |  |  |  |  |  |  |  |  |  |  |  |  |  |  |  |
| 17_CN13540 |  | Zone C1 - Remove S4 and S3 Struts | 15d | 2025-07-11 | 2025-07-25 | 17_CN12870 | 60d | 0d | CR117_Cost Loading [478770]; Strutting Team [120 h]; Lifting Team [120 h]; CR117 WEIGHTAGE [4695.12 h] | 478,770 | 49845 | 49867 | UDF_G3 | CN | CRBRH | ERS | ZC1 | GENL | GEN | ZC1 | SR | GEN | 2 | CR |
| 17_CN13550 |  | Zone C1 - Cast Walls to Platform Slab Level | 40d | 2025-07-26 | 2025-09-03 | 17_CN13540 | 60d | 0d | CR117_Cost Loading [595735]; RC Team [320 h]; GW (C&S) [320 h]; CR117 WEIGHTAGE [8577.12 h] | 595,735 | 49845 | 49867 | UDF_G3 | CN | CRBRH | RCW | ZC1 | GENL | GEN | ZC1 | RW | GEN | 4 | CR |
| 17_CN13560 |  | Zone C1 - Cast Platform Level Slab | 24d | 2025-09-04 | 2025-09-27 | 17_CN13550 | 60d | 0d | CR117_Cost Loading [800790]; RC Team [192 h]; CR117 WEIGHTAGE [7195.36 h] | 800,790 | 49845 | 49867 | UDF_G3 | CN | CRBRH | RCW | ZC1 | GENL | PLF | ZC1 | RW | GEN | 2 | CR |
| 17_CN13570 |  | Zone C1 - Construct Internal Partition Walls, Skin walls and Shaft Walls @ Platform Slab Level | 60d | 2025-09-28 | 2025-11-26 | 17_CN13560 | 60d | 0d | CR117_Cost Loading [595735]; RC Team [240 h]; GW (C&S) [240 h]; CR117 WEIGHTAGE [1713.84 h] | 595,735 | 49845 | 49867 | UDF_G3 | CN | CRBRH | RCW | ZC1 | GENL | GEN | ZC1 | PW | GEN | 4 | CR |
| 17_CN13580 |  | Zone C1 - Cast Walls to Transfer Slab level | 35d | 2025-09-28 | 2025-11-01 | 17_CN13560 | 85d | 25d | CR117_Cost Loading [521268]; GW (C&S) [360 h]; RC Team [360 h]; CR117 WEIGHTAGE [9654.08 h] | 521,268 | 49845 | 49867 | UDF_G3 | CN | CRBRH | RCW | ZC1 | GENL | GEN | ZC1 | RW | GEN | 4 | CR |
| 17_CN13590 |  | Zone C1 - Cast Transfer cum Roof Slab including waterproofing | 45d | 2025-11-27 | 2026-01-10 | 17_CN13580, 17_CN13570 | 60d | 0d | CR117_Cost Loading [1501481]; RC Team [392 h]; CR117 WEIGHTAGE [14731 h] | 1,501,481 | 49845 | 49867 | UDF_G3 | CN | CRBRH | RCW | ZC1 | GENL | GEN | ZC1 | RW | GEN | 2 | CR |
| 17_CN13600 |  | Zone C1 - Cut King Posts to top of roof slab | 7d | 2026-01-11 | 2026-01-17 | 17_CN13590 | 60d | 0d | CR117_Cost Loading [232918]; Lifting Team [56 h]; DFE/King Post Team [56 h]; CR117 WEIGHTAGE [1476.48 h] | 232,918 | 49845 | 49867 | UDF_G3 | CN | CRBRH | RCW | ZC1 | GENL | GEN | ZC1 | KP | GEN | 2 | CR |
| 17_CN13610 |  | Zone C1 - Backfill to Transfer Slab Level and cast concrete plugs | 16d | 2026-01-18 | 2026-02-02 | 17_CN13600 | 60d | 0d | CR117_Cost Loading [126290]; Excavation Team [128 h]; CR117 WEIGHTAGE [1760.24 h] | 126,290 | 49845 | 49867 | UDF_G3 | CN | CRBRH | ENA | ZC1 | GENL | GEN | ZC1 | BF | GEN | 3 | CR |
| 17_CN13620 |  | Zone C1 - Backfill to 0.5m below S2 Struts and remove S2 struts | 16d | 2026-02-03 | 2026-02-18 | 17_CN13610, 17_CN13470, 17_CN13790 | 60d | 0d | CR117_Cost Loading [126290]; Excavation Team [128 h]; Strutting Team [128 h]; CR117 WEIGHTAGE [1760.24 h] | 126,290 | 49845 | 49867 | UDF_G3 | CN | CRBRH | ENA | ZC1 | GENL | GEN | ZC1 | BF | GEN | 3 | CR |
| 17_CN13630 |  | Zone C1 - Backfill to 2m below S1 strut level and remove S1 struts | 16d | 2026-02-19 | 2026-03-06 | 17_CN13620, 17_CN13490 | 60d | 10d | CR117_Cost Loading [126290]; Excavation Team [128 h]; Strutting Team [128 h]; CR117 WEIGHTAGE [1760.24 h] | 126,290 | 49845 | 49867 | UDF_G3 | CN | CRBRH | ENA | ZC1 | GENL | GEN | ZC1 | BF | GEN | 3 | CR |
| 17_CN13640 |  | Zone C1 - Backfill to Ground Level | 16d | 2026-03-17 | 2026-04-01 | 17_CN13630, 17_CN13980 | 50d | 0d | CR117_Cost Loading [126290]; Excavation Team [128 h]; CR117 WEIGHTAGE [1760.24 h] | 126,290 | 49845 | 49867 | UDF_G3 | CN | CRBRH | ENA | ZC1 | GENL | GRD | ZC1 | BF | GEN | 3 | CR |
|  | 3 | **STN-Zone D-Structure** |  | 2025-04-25 | 2026-04-09 |  |  |  |  |  |  |  |  |  |  |  |  |  |  |  |  |  |  |  |
| 17_CN13380 |  | Zone D - Remove S4 Struts | 14d | 2025-04-25 | 2025-05-08 | 17_CN12770 | 68d | 16d | CR117_Cost Loading [446852]; Strutting Team [112 h]; Lifting Team [112 h]; CR117 WEIGHTAGE [4379.6 h] | 446,852 | 49867 | 50060 | UDF_G3 | CN | CRBRH | ERS | ZD | GENL | GEN | ZD | SR | GEN | 2 | CR |
| 17_CN13390 |  | Zone D - Cast Wall to Platform Slab level | 30d | 2025-05-25 | 2025-06-23 | 17_CN13380, 17_CN12780 | 52d | 0d | CR117_Cost Loading [446801]; RC Team [240 h]; GW (C&S) [240 h]; CR117 WEIGHTAGE [6423.12 h] | 446,801 | 49867 | 50060 | UDF_G3 | CN | CRBRH | RCW | ZD | GENL | GEN | ZD | RW | GEN | 4 | CR |
| 17_CN13400 |  | Zone D - Cast Platform Slab | 30d | 2025-06-24 | 2025-07-23 | 17_CN13390 | 52d | 0d | CR117_Cost Loading [1000987]; GW (C&S) [280 h]; RC Team [280 h]; CR117 WEIGHTAGE [10511.1 h] | 1,000,987 | 49867 | 50060 | UDF_G3 | CN | CRBRH | RCW | ZD | GENL | PLF | ZD | RW | GEN | 2 | CR |
| 17_CN13410 |  | Zone D - Remove S3 Struts | 14d | 2025-07-24 | 2025-08-06 | 17_CN13400 | 52d | 0d | CR117_Cost Loading [446852]; Lifting Team [112 h]; Strutting Team [112 h]; CR117 WEIGHTAGE [4379.6 h] | 446,852 | 49867 | 50060 | UDF_G3 | CN | CRBRH | RCW | ZD | GENL | GEN | ZD | SR | GEN | 2 | CR |
| 17_CN13420 |  | Zone D - Construct Internal Partition Walls, Skin walls and Shaft Walls @ Platform Level | 30d | 2025-08-07 | 2025-09-05 | 17_CN13400, 17_CN13410 | 102d | 50d | CR117_Cost Loading [446801]; RC Team [240 h]; GW (C&S) [240 h]; CR117 WEIGHTAGE [1713.84 h] | 446,801 | 49867 | 50060 | UDF_G3 | CN | CRBRH | RCW | ZD | GENL | GEN | ZD | PW | GEN | 4 | CR |
| 17_CN13430 |  | Zone D - Cast Walls to Transfer Slab | 40d | 2025-08-07 | 2025-09-15 | 17_CN13410 | 52d | 0d | CR117_Cost Loading [595735]; GW (C&S) [392 h]; CR117 WEIGHTAGE [10515.8 h] | 595,735 | 49867 | 50060 | UDF_G3 | CN | CRBRH | RCW | ZD | GENL | GEN | ZD | RW | GEN | 4 | CR |
| 17_CN13440 |  | Zone D - Cast Transfer Slab | 40d | 2025-09-16 | 2025-10-25 | 17_CN13430 | 52d | 0d | CR117_Cost Loading [1334650]; RC Team [400 h]; GW (C&S) [400 h]; CR117 WEIGHTAGE [15032.6 h] | 1,334,650 | 49867 | 50060 | UDF_G3 | CN | CRBRH | RCW | ZD | GENL | GEN | ZD | RW | GEN | 2 | CR |
| 17_CN13450 |  | Zone D - Backfill to Transfer Slab and Cast Concrete Plugs | 14d | 2025-10-26 | 2025-11-08 | 17_CN13420, 17_CN13440 | 52d | 0d | CR117_Cost Loading [110504]; Excavation Team [112 h]; CR117 WEIGHTAGE [1535.36 h] | 110,504 | 49867 | 50060 | UDF_G3 | CN | CRBRH | RCW | ZD | GENL | GEN | ZD | BF | GEN | 3 | CR |
| 17_CN13460 |  | Zone D - Remove S2 Struts | 14d | 2025-11-09 | 2025-11-22 | 17_CN13450 | 52d | 0d | CR117_Cost Loading [446852]; Strutting Team [112 h]; Lifting Team [112 h]; CR117 WEIGHTAGE [4379.6 h] | 446,852 | 49867 | 50060 | UDF_G3 | CN | CRBRH | ERS | ZD | GENL | GEN | ZD | SR | GEN | 2 | CR |
| 17_CN13470 |  | Zone D - Construct Internal Partition Walls, Skin walls and Shaft Walls @ Transfer Level | 30d | 2025-11-23 | 2025-12-22 | 17_CN13460 | 67d | 10d | CR117_Cost Loading [446801]; GW (C&S) [240 h]; RC Team [240 h]; CR117 WEIGHTAGE [1713.84 h] | 446,801 | 49867 | 50060 | UDF_G3 | CN | CRBRH | RCW | ZD | GENL | GEN | ZD | PW | GEN | 4 | CR |
| 17_CN13480 |  | Zone D - Cast Walls to Roof Slab level | 45d | 2025-11-23 | 2026-01-06 | 17_CN13460 | 52d | 0d | CR117_Cost Loading [670202]; RC Team [400 h]; GW (C&S) [400 h]; CR117 WEIGHTAGE [10731.2 h] | 670,202 | 49867 | 50060 | UDF_G3 | CN | CRBRH | RCW | ZD | GENL | GEN | ZD | RW | GEN | 4 | CR |
| 17_CN13490 |  | Zone D - Cast Roof Slab including waterproofing | 40d | 2026-01-07 | 2026-02-15 | 17_CN13480, 17_CN13470 | 52d | 0d | CR117_Cost Loading [1822335]; GW (C&S) [400 h]; RC Team [400 h]; CR117 WEIGHTAGE [15032.6 h] | 1,822,335 | 49867 | 50060 | UDF_G3 | CN | CRBRH | RCW | ZD | GENL | ROF | ZD | RW | GEN | 1 | CR |
| 17_CN13500 |  | Zone D - Backfill to Roof Slab and Cast Concrete Plugs | 14d | 2026-02-16 | 2026-03-01 | 17_CN13490 | 52d | 0d | CR117_Cost Loading [110504]; Excavation Team [112 h]; CR117 WEIGHTAGE [1535.36 h] | 110,504 | 49867 | 50060 | UDF_G3 | CN | CRBRH | RCW | ZD | GENL | GEN | ZD | BF | GEN | 3 | CR |
| 17_CN13510 |  | Zone D - Cut King Posts to Top of Roof Slab | 7d | 2026-03-02 | 2026-03-08 | 17_CN13500 | 52d | 0d | CR117_Cost Loading [232918]; DFE/King Post Team [56 h]; CR117 WEIGHTAGE [1476.48 h] | 232,918 | 49867 | 50060 | UDF_G3 | CN | CRBRH | RCW | ZD | GENL | GEN | ZD | KP | GEN | 2 | CR |
| 17_CN13520 |  | Zone D - Backfill to 2m below S1 and remove construction Deck | 16d | 2026-03-09 | 2026-03-24 | 17_CN13510 | 52d | 0d | CR117_Cost Loading [126290]; Excavation Team [128 h]; Lifting Team [128 h]; GW (C&S) [128 h]; CR117 WEIGHTAGE [1760.24 h] | 126,290 | 49867 | 50060 | UDF_G3 | CN | CRBRH | ENA | ZD | GENL | GEN | ZD | BF | GEN | 3 | CR |
| 17_CN13530 |  | Zone D - Backfill to Ground Level | 16d | 2026-03-25 | 2026-04-09 | 17_CN13520 | 52d | 0d | CR117_Cost Loading [126290]; Excavation Team [128 h]; CR117 WEIGHTAGE [1760.24 h] | 126,290 | 49867 | 50060 | UDF_G3 | CN | CRBRH | ENA | ZD | GENL | GRD | ZD | BF | GEN | 3 | CR |

| ID | WBS | Activity | Duration | Start | Finish | Predecessors | Total float | Free float | Resources | Cost | [UDF] Chainage Start | [UDF] Chainage Finish | Check | PHASE | AREA | SUB-PHASE | STAGE | SUB AREA | LOCATION | LOCATION DETAILS | MAJOR WORKS | SUB-LOCATION DETAILS | CR-117 - FOT | LINE |
| --- | --- | --- | --- | --- | --- | --- | --- | --- | --- | --- | --- | --- | --- | --- | --- | --- | --- | --- | --- | --- | --- | --- | --- | --- |
|  | 5 | **STN-Zone B-Structure** |  | 2025-01-17 | 2026-04-11 |  |  |  |  |  |  |  |  |  |  |  |  |  |  |  |  |  |  |  |
| 17_CN13650 |  | Zone B - Remove S5 | 8d | 2025-01-17 | 2025-01-24 | 17_CN13010 | 60d | 0d | CR117_Cost Loading [383016]; Strutting Team [112 h]; Lifting Team [112 h]; CR117 WEIGHTAGE [4379.6 h] | 383,016 | 40750 | 49845 | UDF_G3 | CN | CRBRH | ERS | ZB | GENL | GEN | ZB | SR | GEN | 2 | CR |
| 17_CN13670 |  | Zone B - Construct Wall to Underplatform Level and Backfill | 30d | 2025-01-25 | 2025-02-23 | 17_CN13650 | 60d | 0d | CR117_Cost Loading [744668]; RC Team [480 h]; GW (C&S) [480 h]; CR117 WEIGHTAGE [12885.2 h] | 744,668 | 40750 | 49845 | UDF_G3 | CN | CRBRH | RCW | ZB | GENL | GEN | ZB | RW | GEN | 4 | CR |
| 17_CN13660 |  | Zone B - Construct Internal Partition Walls, Skin walls and Shaft Walls @ Base Slab Level | 18d | 2025-01-27 | 2025-02-13 | 17_CN13650, 17_CN13020 | 70d | 10d | CR117_Cost Loading [670202]; GW (C&S) [360 h]; RC Team [360 h]; CR117 WEIGHTAGE [2590.24 h] | 670,202 | 40750 | 49845 | UDF_G3 | CN | CRBRH | RCW | ZB | GENL | BAL | ZB | PW | GEN | 4 | CR |
| 17_CN13680 |  | Zone B - Remove S4 Struts | 12d | 2025-02-24 | 2025-03-07 | 17_CN13670, 17_CN13660 | 60d | 0d | CR117_Cost Loading [446852]; Strutting Team [112 h]; Lifting Team [112 h]; CR117 WEIGHTAGE [4379.6 h] | 446,852 | 40750 | 49845 | UDF_G3 | CN | CRBRH | ERS | ZB | GENL | GEN | ZB | SR | GEN | 2 | CR |
| 17_CN13690 |  | Zone B - Cast Underplatform Slab and cast concrete plugs | 35d | 2025-03-08 | 2025-04-11 | 17_CN13680 | 60d | 0d | CR117_Cost Loading [521268]; RC Team [360 h]; CR117 WEIGHTAGE [13525.4 h] | 521,268 | 40750 | 49845 | UDF_G3 | CN | CRBRH | RCW | ZB | GENL | GEN | ZB | RW | GEN | 4 | CR |
| 17_CN13700 |  | Zone B - Remove S3 Struts | 12d | 2025-04-12 | 2025-04-23 | 17_CN13690 | 74d | 0d | CR117_Cost Loading [383016]; Lifting Team [96 h]; Strutting Team [96 h]; CR117 WEIGHTAGE [3748.32 h] | 383,016 | 40750 | 49845 | UDF_G3 | CN | CRBRH | ERS | ZB | GENL | GEN | ZB | SR | GEN | 2 | CR |
| 17_CN13710 |  | Zone B - Cast Walls to Platform slab level | 30d | 2025-04-24 | 2025-05-23 | 17_CN13700 | 74d | 0d | CR117_Cost Loading [446801]; RC Team [240 h]; GW (C&S) [240 h]; CR117 WEIGHTAGE [6423.12 h] | 446,801 | 40750 | 49845 | UDF_G3 | CN | CRBRH | RCW | ZB | GENL | GEN | ZB | RW | GEN | 4 | CR |
| 17_CN13720 |  | Zone B - Cast Platform Level Slab | 35d | 2025-05-24 | 2025-06-27 | 17_CN13710 | 74d | 0d | CR117_Cost Loading [1167819]; GW (C&S) [280 h]; RC Team [280 h]; CR117 WEIGHTAGE [10511.1 h] | 1,167,819 | 40750 | 49845 | UDF_G3 | CN | CRBRH | RCW | ZB | GENL | PLF | ZB | RW | GEN | 2 | CR |
| 17_CN13730 |  | Zone B - Cast walls to Transfer Slab level | 45d | 2025-06-28 | 2025-08-11 | 17_CN13720 | 74d | 0d | CR117_Cost Loading [670202]; GW (C&S) [360 h]; RC Team [360 h]; CR117 WEIGHTAGE [9654.08 h] | 670,202 | 40750 | 49845 | UDF_G3 | CN | CRBRH | RCW | ZB | GENL | GEN | ZB | RW | GEN | 4 | CR |
| 17_CN13740 |  | Zone B - Construct Internal Partition Walls, Skin walls and Shaft Walls @ Platform Level | 45d | 2025-06-28 | 2025-08-11 | 17_CN13720 | 74d | 0d | CR117_Cost Loading [670202]; GW (C&S) [360 h]; RC Team [360 h]; CR117 WEIGHTAGE [2590.24 h] | 670,202 | 40750 | 49845 | UDF_G3 | CN | CRBRH | RCW | ZB | GENL | GEN | ZB | PW | GEN | 4 | CR |
| 17_CN13750 |  | Zone B - Cast Transfer Slab | 42d | 2025-08-12 | 2025-09-22 | 17_CN13730, 17_CN13740 | 74d | 0d | CR117_Cost Loading [1401382]; RC Team [336 h]; GW (C&S) [336 h]; CR117 WEIGHTAGE [12621.1 h] | 1,401,382 | 40750 | 49845 | UDF_G3 | CN | CRBRH | RCW | ZB | GENL | GEN | ZB | RW | GEN | 2 | CR |
| 17_CN13760 |  | Zone B - Backfill to Transfer slab level and cast concrete plugs | 16d | 2025-09-23 | 2025-10-08 | 17_CN13750 | 74d | 0d | CR117_Cost Loading [126290]; Excavation Team [128 h]; GW (C&S) [128 h]; CR117 WEIGHTAGE [1760.24 h] | 126,290 | 40750 | 49845 | UDF_G3 | CN | CRBRH | RCW | ZB | GENL | GEN | ZB | BF | GEN | 3 | CR |
| 17_CN13770 |  | Zone B - Remove S2 Struts | 12d | 2025-10-09 | 2025-10-20 | 17_CN13760 | 74d | 0d | CR117_Cost Loading [383016]; Strutting Team [96 h]; Lifting Team [96 h]; CR117 WEIGHTAGE [3748.32 h] | 383,016 | 40750 | 49845 | UDF_G3 | CN | CRBRH | ERS | ZB | GENL | GEN | ZB | SR | GEN | 2 | CR |
| 17_CN13780 |  | Zone B - Construct Internal Partition Walls, Skin walls and Shaft Walls @ Transfer slab Level | 45d | 2025-10-21 | 2025-12-04 | 17_CN13770 | 74d | 0d | CR117_Cost Loading [670202]; GW (C&S) [360 h]; RC Team [360 h]; CR117 WEIGHTAGE [2590.24 h] | 670,202 | 40750 | 49845 | UDF_G3 | CN | CRBRH | RCW | ZB | GENL | GEN | ZB | PW | GEN | 4 | CR |
| 17_CN13790 |  | Zone B - Construct Wall to Roof Level | 45d | 2025-10-21 | 2025-12-04 | 17_CN13770 | 74d | 0d | CR117_Cost Loading [670202]; RC Team [416 h]; CR117 WEIGHTAGE [11161.9 h] | 670,202 | 40750 | 49845 | UDF_G3 | CN | CRBRH | RCW | ZB | GENL | GEN | ZB | RW | GEN | 4 | CR |
| 17_CN13800 |  | Zone B - Cast Roof Slab including waterproofing | 45d | 2025-12-05 | 2026-01-18 | 17_CN13790, 17_CN13780 | 74d | 0d | CR117_Cost Loading [2050127]; RC Team [464 h]; CR117 WEIGHTAGE [17444 h] | 2,050,127 | 40750 | 49845 | UDF_G3 | CN | CRBRH | RCW | ZB | GENL | ROF | ZB | RW | GEN | 1 | CR |
| 17_CN13810 |  | Zone B - Cut King Posts to Top of Roof | 7d | 2026-01-19 | 2026-01-25 | 17_CN13800 | 74d | 0d | CR117_Cost Loading [232918]; DFE/King Post Team [56 h]; CR117 WEIGHTAGE [1476.48 h] | 232,918 | 40750 | 49845 | UDF_G3 | CN | CRBRH | ENA | ZB | GENL | GEN | ZB | KP | GEN | 2 | CR |
| 17_CN13820 |  | Zone B - Backfill to Roof slab level and cast concrete plugs | 16d | 2026-01-26 | 2026-02-10 | 17_CN13810 | 74d | 0d | CR117_Cost Loading [126290]; Excavation Team [128 h]; CR117 WEIGHTAGE [1760.24 h] | 126,290 | 40750 | 49845 | UDF_G3 | CN | CRBRH | ENA | ZB | GENL | GEN | ZB | BF | GEN | 3 | CR |
| 17_CN13830 |  | Zone B - Backfill to 2m below S1 strut level | 16d | 2026-02-11 | 2026-02-26 | 17_CN13820 | 74d | 0d | CR117_Cost Loading [126290]; Excavation Team [128 h]; CR117 WEIGHTAGE [1760.24 h] | 126,290 | 40750 | 49845 | UDF_G3 | CN | CRBRH | ENA | ZB | GENL | GEN | ZB | BF | GEN | 3 | CR |
| 17_CN13840 |  | Zone B - Remove S1 Construction Deck | 10d | 2026-02-27 | 2026-03-08 | 17_CN13830 | 74d | 24d | CR117_Cost Loading [247291]; Lifting Team [96 h]; Excavation Team [96 h]; CR117 WEIGHTAGE [662.16 h] | 247,291 | 40750 | 49845 | UDF_G3 | CN | CRBRH | ENA | ZB | GENL | GEN | ZB | SI | GEN | 2 | CR |
| 17_CN13850 |  | Zone B - Backfill to Ground Level | 10d | 2026-04-02 | 2026-04-11 | 17_CN13840, 17_CN13640 | 50d | 0d | CR117_Cost Loading [78931]; Excavation Team [128 h]; CR117 WEIGHTAGE [1760.24 h] | 78,931 | 40750 | 49845 | UDF_G3 | CN | CRBRH | GDW | ZB | GENL | GEN | ZB | BF | GEN | 3 | CR |
|  | 2 | **STN-Zone C2-Structure** |  | 2025-03-30 | 2026-05-08 |  |  |  |  |  |  |  |  |  |  |  |  |  |  |  |  |  |  |  |
| 17_CN13280 |  | Zone C2 - Remove Struts 4 and 3 | 8d | 2025-03-30 | 2025-04-06 | 17_CN12710 | 80d | 0d | CR117_Cost Loading [223426]; Strutting Team [56 h]; Lifting Team [56 h]; CR117 WEIGHTAGE [2170.32 h] | 223,426 | 50060 | 50080 | UDF_G3 | CN | CRBRH | ERS | ZC2 | GENL | GEN | ZC2 | SR | GEN | 2 | CR |
| 17_CN13290 |  | Zone C2 - Cast Wall to Platform Slab Level | 45d | 2025-04-07 | 2025-05-21 | 17_CN13280 | 80d | 0d | CR117_Cost Loading [595735]; RC Team [320 h]; CR117 WEIGHTAGE [8577.12 h] | 595,735 | 50060 | 50080 | UDF_G3 | CN | CRBRH | RCW | ZC2 | GENL | GEN | ZC2 | RW | GEN | 4 | CR |
| 17_CN13300 |  | Zone C2 - Cast Platform Level Slab | 45d | 2025-05-22 | 2025-07-05 | 17_CN13290 | 80d | 0d | CR117_Cost Loading [800790]; RC Team [192 h]; CR117 WEIGHTAGE [7195.36 h] | 800,790 | 50060 | 50080 | UDF_G3 | CN | CRBRH | RCW | ZC2 | GENL | PLF | ZC2 | RW | GEN | 2 | CR |
| 17_CN13310 |  | Zone C2 - Construct Internal Partition Walls, Skin walls and Non-Structural Walls @Platform Level | 60d | 2025-07-06 | 2025-09-03 | 17_CN13290, 17_CN13300 | 80d | 0d | CR117_Cost Loading [446801]; RC Team [240 h]; CR117 WEIGHTAGE [1713.84 h] | 446,801 | 50060 | 50080 | UDF_G3 | CN | CRBRH | RCW | ZC2 | GENL | GEN | ZC2 | PW | GEN | 4 | CR |
| 17_CN13320 |  | Zone C2 - Cast walls to Transfer Slab level | 60d | 2025-09-04 | 2025-11-02 | 17_CN13310 | 80d | 0d | CR117_Cost Loading [670202]; RC Team [360 h]; CR117 WEIGHTAGE [9654.08 h] | 670,202 | 50060 | 50080 | UDF_G3 | CN | CRBRH | RCW | ZC2 | GENL | GEN | ZC2 | RW | GEN | 4 | CR |
| 17_CN13330 |  | Zone C2 - Cast Transfer cum Roof Slab including waterproofing | 60d | 2025-11-03 | 2026-01-01 | 17_CN13320 | 80d | 0d | CR117_Cost Loading [1634946]; RC Team [392 h]; GW (C&S) [392 h]; CR117 WEIGHTAGE [5471.12 h] | 1,634,946 | 50060 | 50080 | UDF_G3 | CN | CRBRH | RCW | ZC2 | GENL | GEN | ZC2 | BF | GEN | 2 | CR |
| 17_CN13340 |  | Zone C2 - Backfill to Transfer Slab Level and cast concrete plugs | 16d | 2026-01-02 | 2026-01-17 | 17_CN13330, 17_CN13470 | 171d | 63d | CR117_Cost Loading [126290]; Excavation Team [128 h]; CR117 WEIGHTAGE [1760.24 h] | 126,290 | 50060 | 50080 | UDF_G3 | CN | CRBRH | ENA | ZC2 | GENL | GEN | ZC2 | BF | GEN | 3 | CR |
| 17_CN13350 |  | Zone C2 - Backfill to 0.5m below S2 Struts and remove S2 struts | 16d | 2026-03-22 | 2026-04-06 | 17_CN13340, 17_CN13200, 17_CN13470 | 108d | 0d | CR117_Cost Loading [126290]; Excavation Team [128 h]; Strutting Team [128 h]; Lifting Team [128 h]; CR117 WEIGHTAGE [1760.24 h] | 126,290 | 50060 | 50080 | UDF_G3 | CN | CRBRH | ENA | ZC2 | GENL | GEN | ZC2 | BF | GEN | 3 | CR |
| 17_CN13360 |  | Zone C2 - Backfill to 2m below S1 strut level and remove S1 struts | 16d | 2026-04-07 | 2026-04-22 | 17_CN13350, 17_CN13520 | 108d | 0d | CR117_Cost Loading [126290]; Excavation Team [128 h]; Strutting Team [128 h]; CR117 WEIGHTAGE [1760.24 h] | 126,290 | 50060 | 50080 | UDF_G3 | CN | CRBRH | ENA | ZC2 | GENL | GEN | ZC2 | BF | GEN | 3 | CR |
| 17_CN13370 |  | Zone C2 - Backfill to Ground Level | 16d | 2026-04-23 | 2026-05-08 | 17_CN13360, 17_CN13530 | 108d | 67d | CR117_Cost Loading [126290]; Excavation Team [128 h]; CR117 WEIGHTAGE [1760.24 h] | 126,290 | 50060 | 50080 | UDF_G3 | CN | CRBRH | GDW | ZC2 | GENL | GRD | ZC2 | BF | GEN | 3 | CR |

| ID | WBS | Activity | Duration | Start | Finish | Predecessors | Total float | Free float | Resources | Cost | [UDF] Chainage Start | [UDF] Chainage Finish | Cr117 BSC Stn | Check | PHASE | AREA | SUB-PHASE | STAGE | SUB AREA | LOCATION | LOCATION DETAILS | MAJOR WORKS | SUB-LOCATION DETAILS | CR-117 - FOT | LINE | Comments | Check 2 (Original Duration) |
| --- | --- | --- | --- | --- | --- | --- | --- | --- | --- | --- | --- | --- | --- | --- | --- | --- | --- | --- | --- | --- | --- | --- | --- | --- | --- | --- | --- |
|  | 1 | **STN-Zone E-Structure** |  | 2025-05-08 | 2026-07-30 |  |  |  |  |  |  |  |  |  |  |  |  |  |  |  |  |  |  |  |  |  |  |
| 17_CN13070 |  | Zone E - Remove S5 Struts | 18d | 2025-05-08 | 2025-05-25 | 17_CN12650 | 41d | 0d | CR117_Cost Loading [574524]; Strutting Team [208 h]; Lifting Team [208 h]; CR117 WEIGHTAGE [8166.8 h] | 574,524 | 50080 | 50117 | 1 | UDF_G3 | CN | CRBRH | ERS | ZE | GENL | GEN | ZE | SR | GEN | 2 | CR |  |  |
| 17_CN13080 |  | Zone E - Construct Wall including waterproofing to Underplatform Level and Backfill | 30d | 2025-05-26 | 2025-06-24 | 17_CN13070 | 41d | 0d | CR117_Cost Loading [595735]; RC Team [384 h]; GW (C&S) [384 h]; CR117 WEIGHTAGE [10300.4 h] | 595,735 | 50080 | 50117 |  | UDF_G3 | CN | CRBRH | RCW | ZE | GENL | GEN | ZE | RW | GEN | 4 | CR |  |  |
| 17_CN13090 |  | Zone E - Cast internal partition walls, skin walls and shaft walls @ Base Slab | 30d | 2025-06-25 | 2025-07-24 | 17_CN13070, 17_CN13080, 17_CN12660 | 41d | 0d | CR117_Cost Loading [446801]; GW (C&S) [240 h]; RC Team [240 h]; CR117 WEIGHTAGE [1713.84 h] | 446,801 | 50080 | 50117 |  | UDF_G3 | CN | CRBRH | RCW | ZE | GENL | GEN | ZE | PW | GEN | 4 | CR |  |  |
| 17_CN13100 |  | Zone E - Remove S4 Struts | 13d | 2025-07-25 | 2025-08-06 | 17_CN13080, 17_CN13090 | 41d | 0d | CR117_Cost Loading [414934]; Strutting Team [104 h]; Lifting Team [104 h]; CR117 WEIGHTAGE [4064 h] | 414,934 | 50080 | 50117 | 1 | UDF_G3 | CN | CRBRH | ERS | ZE | GENL | GEN | ZE | SR | GEN | 2 | CR |  |  |
| 17_CN13110 |  | Zone E - Cast Underplatform Slab and cast concrete plugs between ERSS and Underplatform slab | 30d | 2025-08-07 | 2025-09-05 | 17_CN13100 | 41d | 0d | CR117_Cost Loading [1334650]; RC Team [320 h]; GW (C&S) [320 h]; CR117 WEIGHTAGE [12018.2 h] | 1,334,650 | 50080 | 50117 | 1 | UDF_G3 | CN | CRBRH | RCW | ZE | GENL | GEN | ZE | RW | GEN | 2 | CR |  |  |
| 17_CN13120 |  | Zone E - Remove S3 Struts | 13d | 2025-09-06 | 2025-09-18 | 17_CN13110 | 41d | 0d | CR117_Cost Loading [414934]; Strutting Team [104 h]; Lifting Team [104 h]; CR117 WEIGHTAGE [4064 h] | 414,934 | 50080 | 50117 | 1 | UDF_G3 | CN | CRBRH | ERS | ZE | GENL | GEN | ZE | SR | GEN | 2 | CR |  |  |
| 17_CN13130 |  | Zone E - Cast Wall including waterproofing to Platform slab level | 21d | 2025-09-19 | 2025-10-09 | 17_CN13120 | 41d | 0d | CR117_Cost Loading [312761]; RC Team [168 h]; GW (C&S) [168 h]; CR117 WEIGHTAGE [4484.48 h] | 312,761 | 50080 | 50117 | 1 | UDF_G3 | CN | CRBRH | RCW | ZE | GENL | GEN | ZE | RW | GEN | 4 | CR |  |  |
| 17_CN13140 |  | Zone E - Cast Platform Slab | 30d | 2025-10-10 | 2025-11-08 | 17_CN13130 | 41d | 0d | CR117_Cost Loading [1000987]; RC Team [240 h]; CR117 WEIGHTAGE [9003.92 h] | 1,000,987 | 50080 | 50117 | 1 | UDF_G3 | CN | CRBRH | RCW | ZE | GENL | PLF | ZE | RW | GEN | 2 | CR |  |  |
| 17_CN13150 |  | Zone E - Cast Walls including waterproofing to Transfer Slab level | 36d | 2025-11-09 | 2025-12-14 | 17_CN13140 | 41d | 0d | CR117_Cost Loading [670202]; RC Team [360 h]; CR117 WEIGHTAGE [9654.08 h] | 670,202 | 50080 | 50117 | 1 | UDF_G3 | CN | CRBRH | RCW | ZE | GENL | GEN | ZE | RW | GEN | 4 | CR |  |  |
| 17_CN13160 |  | Zone E - Cast internal partition walls, skin walls and shaft walls @Platform level | 36d | 2025-11-09 | 2025-12-14 | 17_CN13140 | 41d | 0d | CR117_Cost Loading [670202]; RC Team [360 h]; CR117 WEIGHTAGE [2590.24 h] | 670,202 | 50080 | 50117 | 1 | UDF_G3 | CN | CRBRH | RCW | ZE | GENL | GEN | ZE | PW | GEN | 4 | CR |  |  |
| 17_CN13170 |  | Zone E - Cast Transfer Slab | 30d | 2025-12-15 | 2026-01-13 | 17_CN13150, 17_CN13160 | 41d | 0d | CR117_Cost Loading [1334650]; RC Team [320 h]; CR117 WEIGHTAGE [12018.2 h] | 1,334,650 | 50080 | 50117 | 1 | UDF_G3 | CN | CRBRH | RCW | ZE | GENL | GEN | ZE | RW | GEN | 2 | CR |  |  |
| 17_CN13180 |  | Zone E - Backfill to Transfer Slab level and cast concrete plugs | 14d | 2026-01-14 | 2026-01-27 | 17_CN13170 | 41d | 0d | CR117_Cost Loading [110504]; Excavation Team [112 h]; CR117 WEIGHTAGE [1535.36 h] | 110,504 | 50080 | 50117 | 1 | UDF_G3 | CN | CRBRH | ENA | ZE | GENL | GEN | ZE | BF | GEN | 3 | CR |  |  |
| 17_CN13190 |  | Zone E - Remove S2 Struts | 13d | 2026-01-28 | 2026-02-09 | 17_CN13180 | 41d | 0d | CR117_Cost Loading [414934]; Strutting Team [104 h]; CR117 WEIGHTAGE [4064 h] | 414,934 | 50080 | 50117 | 1 | UDF_G3 | CN | CRBRH | ERS | ZE | GENL | GEN | ZE | SR | GEN | 2 | CR |  |  |
| 17_CN13200 |  | Zone E - Cast Wall including waterproofing to Roof slab | 40d | 2026-02-10 | 2026-03-21 | 17_CN13190, 17_CN13330 | 41d | 0d | CR117_Cost Loading [595735]; RC Team [320 h]; GW (C&S) [320 h]; CR117 WEIGHTAGE [8577.12 h] | 595,735 | 50080 | 50117 | 1 | UDF_G3 | CN | CRBRH | RCW | ZE | GENL | GEN | ZE | RW | GEN | 4 | CR |  |  |
| 17_CN13210 |  | Zone E - Cast internal partition walls, skin walls and shaft wals @ Transfer slab level | 40d | 2026-02-10 | 2026-03-21 | 17_CN13190 | 41d | 0d | CR117_Cost Loading [595735]; GW (C&S) [320 h]; RC Team [320 h]; CR117 WEIGHTAGE [2298.16 h] | 595,735 | 50080 | 50117 |  | UDF_G3 | CN | CRBRH | RCW | ZE | GENL | GEN | ZE | PW | GEN | 4 | CR |  |  |
| 17_CN13220 |  | Zone E - Cast Roof Slab, including waterproofing | 63d | 2026-03-22 | 2026-05-23 | 17_CN13200, 17_CN13210 | 41d | 0d | CR117_Cost Loading [2870178]; RC Team [504 h]; CR117 WEIGHTAGE [18951.1 h] | 2,870,178 | 50080 | 50117 | 1 | UDF_G3 | CN | CRBRH | RCW | ZE | GENL | GEN | ZE | RW | GEN | 1 | CR |  |  |
| 17_CN13230 |  | Zone E - Cut King Posts to Top of Transfer Slab | 7d | 2026-05-24 | 2026-05-30 | 17_CN13220 | 41d | 0d | CR117_Cost Loading [232918]; DFE/King Post Team [56 h]; Lifting Team [56 h]; CR117 WEIGHTAGE [1476.48 h] | 232,918 | 50080 | 50117 | 1 | UDF_G3 | CN | CRBRH | ENA | ZE | GENL | GEN | ZE | KP | GEN | 2 | CR |  |  |
| 17_CN13240 |  | Zone E - Backfill to Roof slab level and cast concrete plugs | 16d | 2026-05-31 | 2026-06-15 | 17_CN13220, 17_CN13230 | 41d | 0d | CR117_Cost Loading [126290]; Excavation Team [128 h]; CR117 WEIGHTAGE [1760.24 h] | 126,290 | 50080 | 50117 | 1 | UDF_G3 | CN | CRBRH | ENA | ZE | GENL | GEN | ZE | BF | GEN | 3 | CR |  |  |
| 17_CN13250 |  | Zone E - Backfill to 2m below S1 strut level | 16d | 2026-06-16 | 2026-07-01 | 17_CN13240 | 41d | 0d | CR117_Cost Loading [126290]; Excavation Team [128 h]; CR117 WEIGHTAGE [1760.24 h] | 126,290 | 50080 | 50117 |  | UDF_G3 | CN | CRBRH | ENA | ZE | GENL | GEN | ZE | BF | GEN | 3 | CR |  |  |
| 17_CN13260 |  | Zone E - Remove S1 Struts | 13d | 2026-07-02 | 2026-07-14 | 17_CN13250 | 41d | 0d | CR117_Cost Loading [414934]; Strutting Team [104 h]; CR117 WEIGHTAGE [4064 h] | 414,934 | 50080 | 50117 |  | UDF_G3 | CN | CRBRH | ERS | ZE | GENL | GEN | ZE | SR | GEN | 2 | CR |  |  |
| 17_CN13270 |  | Zone E - Backfill to Ground Level | 16d | 2026-07-15 | 2026-07-30 | 17_CN13260, 17_CN14120, 17_CN13370 | 41d | 0d | CR117_Cost Loading [126290]; Excavation Team [128 h]; CR117 WEIGHTAGE [1760.24 h] | 126,290 | 50080 | 50117 |  | UDF_G3 | CN | CRBRH | GDW | ZE | GENL | GEN | ZE | BF | GEN | 3 | CR |  |  |
|  | 3 | **ENTRANCE STRUCTURES** |  | 2024-04-20 | 2027-04-23 |  |  |  |  |  |  |  |  |  |  |  |  |  |  |  |  |  |  |  |  |  |  |
|  | 1 | **Entrance 6 - Substructure Works (ERSS15)** |  | 2024-04-20 | 2026-06-20 |  |  |  |  |  |  |  |  |  |  |  |  |  |  |  |  |  |  |  |  |  |  |
| 17_CN13990 |  | Ent 6 Substructure - Install ERSS Walls and 10 DFEs | 80d | 2024-04-20 | 2024-07-08 | 17_CN12080, 17_CN12310 | 646d | 581d | CR117_Cost Loading [1436978]; CR117 WEIGHTAGE [17280.5 h] | 1,436,978 | 50080 | 50117 |  | UDF_G3 | CN | CRBRH | ERS |  | GENL | GEN | ZE | KP | GEN | 1 | CR |  |  |
| 17_CN14000 |  | Ent 6 Substructure - Excavate to 1m below S1 Strut, Install and Preload S1 Strut | 5d | 2026-02-10 | 2026-02-14 | 17_CN13990, 17_CN13190 | 65d | 0d | Excavation Team [80 h]; CR117_Cost Loading [89811]; Strutting Team [40 h]; CR117 WEIGHTAGE [666.64 h] | 89,811 | 50080 | 50117 |  | UDF_G3 | CN | CRBRH | EXC |  | GENL | GEN | ZE | EC | GEN | 1 | CR | To Split Excav and Strut/deck | UDF_G2 |
| 17_CN14010 |  | Ent 6 Substructure - Excavate to 1m below S2 Struts, Install and Preload S2 Struts | 7d | 2026-02-15 | 2026-02-21 | 17_CN14000 | 65d | 0d | Excavation Team [112 h]; CR117_Cost Loading [125736]; Strutting Team [56 h]; CR117 WEIGHTAGE [974.24 h] | 125,736 | 50080 | 50117 |  | UDF_G3 | CN | CRBRH | EXC |  | GENL | GEN | ZE | EC | GEN | 1 | CR | To Split Excav and Strut/deck | UDF_G2 |
| 17_CN14020 |  | Ent 6 Substructure - Excavate to FEL, cast Base Slab and Concrete plugs between Base Slab and ERSS Walls | 14d | 2026-02-22 | 2026-03-07 | 17_CN14010 | 65d | 0d | Excavation Team [224 h]; CR117_Cost Loading [718748]; RC Team [112 h]; CR117 WEIGHTAGE [4181.04 h] | 718,748 | 50080 | 50117 |  | UDF_G3 | CN | CRBRH | EXC |  | GENL | BAL | ZE | RW | GEN | 3 | CR | To Split Excav and Strut/deck | UDF_G2 |
| 17_CN14030 |  | Ent 6 Substructure - Cast Wall to 0.5m below S2 & S2a Struts | 14d | 2026-03-08 | 2026-03-21 | 17_CN14020 | 65d | 0d | CR117_Cost Loading [208507]; RC Team [112 h]; CR117 WEIGHTAGE [2976.64 h] | 208,507 | 50080 | 50117 |  | UDF_G3 | CN | CRBRH | RCW |  | GENL | GEN | ZE | RW | GEN | 4 | CR |  |  |
| 17_CN14040 |  | Ent 6 Substructure - Backfill and cast conrete plugs between Structural Wall and ERSS Walls (0.5m below S2 Struts) | 5d | 2026-03-22 | 2026-03-26 | 17_CN14030 | 65d | 0d | CR117_Cost Loading [39466]; Excavation Team [40 h]; CR117 WEIGHTAGE [523.28 h] | 39,466 | 50080 | 50117 |  | UDF_G3 | CN | CRBRH | ENA |  | GENL | GEN | ZE | BF | GEN | 3 | CR |  |  |
| 17_CN14050 |  | Ent 6 Substructure - Ent 6 Substructure - Remove S2 Struts | 1d | 2026-03-27 | 2026-03-27 | 17_CN14040 | 65d | 0d | CR117_Cost Loading [31918]; Strutting Team [8 h]; Lifting Team [8 h]; CR117 WEIGHTAGE [276.64 h] | 31,918 | 50080 | 50117 |  | UDF_G3 | CN | CRBRH | ERS |  | GENL | GEN | ZE | SR | GEN | 2 | CR |  |  |
| 17_CN14060 |  | Ent 6 Substructure - Cast Wall to 0.5m below S 1Struts | 14d | 2026-03-28 | 2026-04-10 | 17_CN14050 | 65d | 0d | CR117_Cost Loading [208507]; RC Team [112 h]; CR117 WEIGHTAGE [2976.64 h] | 208,507 | 50080 | 50117 |  | UDF_G3 | CN | CRBRH | RCW |  | GENL | GEN | ZE | RW | GEN | 4 | CR |  |  |
| 17_CN14070 |  | Ent 6 Substructure - Backfill and cast concrete plugs between Structural Wall and ERSS Walls (0.5m below S1 Struts) | 5d | 2026-04-11 | 2026-04-15 | 17_CN14060 | 65d | 0d | CR117_Cost Loading [39466]; Excavation Team [40 h]; CR117 WEIGHTAGE [523.28 h] | 39,466 | 50080 | 50117 |  | UDF_G3 | CN | CRBRH | RCW |  | GENL | GEN | ZE | BF | GEN | 3 | CR |  |  |
| 17_CN14080 |  | Ent 6 Substructure - Remove S1 Struts | 1d | 2026-04-16 | 2026-04-16 | 17_CN14070 | 65d | 0d | CR117_Cost Loading [31918]; Strutting Team [8 h]; CR117 WEIGHTAGE [276.64 h] | 31,918 | 50080 | 50117 |  | UDF_G3 | CN | CRBRH | ERS |  | GENL | GEN | ZE | SR | GEN | 2 | CR |  |  |
| 17_CN14090 |  | Ent 6 Substructure - Cast Remaining Structures and Backfill to Ground Level | 14d | 2026-04-17 | 2026-04-30 | 17_CN14080 | 65d | 0d | CR117_Cost Loading [208507]; GW (C&S) [112 h]; RC Team [112 h]; Excavation Team [112 h]; CR117 WEIGHTAGE [4181.04 h] | 208,507 | 50080 | 50117 |  | UDF_G3 | CN | CRBRH | RCW |  | GENL | GEN | ZE | RW | GEN | 4 | CR |  |  |
| 17_CN14100 |  | Ent 6 Substructure - Construct Sub-structure for Entrance 6 Escalators | 30d | 2026-05-01 | 2026-05-30 | 17_CN14090 | 65d | 0d | CR117_Cost Loading [446801]; GW (C&S) [240 h]; RC Team [240 h]; CR117 WEIGHTAGE [9003.92 h] | 446,801 | 50080 | 50117 |  | UDF_G3 | CN | CRBRH | RCW |  | GENL | GEN | E6 | RW | GEN | 4 | CR |  |  |
| 17_CN14110 |  | Ent 6 Substructure - Trim D-wall from +8.00 SHD to +1.98SHD | 14d | 2026-05-31 | 2026-06-13 | 17_CN14100 | 65d | 0d | CR117_Cost Loading [161758]; Excavation Team [112 h]; CR117 WEIGHTAGE [779.04 h] | 161,758 | 50080 | 50117 |  | UDF_G3 | CN | CRBRH | ENA |  | GENL | GEN | ZE | DW | GEN | 01 | CR |  |  |
| 17_CN14120 |  | Ent 6 Substructure - Remove ERSS Walls | 7d | 2026-06-14 | 2026-06-20 | 17_CN14110 | 65d | 24d | CR117_Cost Loading [223426]; Excavation Team [56 h]; CR117 WEIGHTAGE [2170.32 h] | 223,426 | 50080 | 50117 |  | UDF_G3 | CN | CRBRH | ERS |  | GENL | GEN | ZE | SR | GEN | 2 | CR |  |  |

| ID | WBS | Activity | Duration | Start | Finish | Predecessors | Total float | Free float | Resources | Cost | [UDF] Chainage Start | [UDF] Chainage Finish | Check | PHASE | AREA | SUB-PHASE | SUB AREA | LOCATION | LOCATION DETAILS | MAJOR WORKS | SUB-LOCATION DETAILS | CR-117 - FOT | LINE |
| --- | --- | --- | --- | --- | --- | --- | --- | --- | --- | --- | --- | --- | --- | --- | --- | --- | --- | --- | --- | --- | --- | --- | --- |
|  | 2 | **Entrance 8 - Structure above ground (@Zone B, Stage 3-6)** |  | 2026-01-19 | 2026-10-27 |  |  |  |  |  |  |  |  |  |  |  |  |  |  |  |  |  |  |
| 17_CN14130 |  | Entrance 8 - Wall from Station Roof to Gound Slab | 28d | 2026-01-19 | 2026-02-15 | 17_CN13800 | 202d | 0d | CR117_Cost Loading [91799]; RC Team [224 h]; GW (C&S) [224 h]; CR117 WEIGHTAGE [2676.64 h] | 91,799 | 49750 | 49845 | UDF_G3 | CN | CRBRH | RCW | GENL | GEN | E8 | RW | GEN | 4 | CR |
| 17_CN14140 |  | Entrance 8 - Waterproofing to the wall/roof and backfill | 32d | 2026-02-16 | 2026-03-19 | 17_CN14130 | 202d | 0d | CR117_Cost Loading [104913]; GW (C&S) [256 h]; CR117 WEIGHTAGE [2510.8 h] | 104,913 | 49750 | 49845 | UDF_G3 | CN | CRBRH | ENA | GENL | GEN | E8 | WP | GEN | 4 | CR |
| 17_CN14150 |  | Entrance 8 - Level 1 Gound Floor Slab incl. Ramp, Staircases | 47d | 2026-03-20 | 2026-05-05 | 17_CN14140 | 202d | 0d | CR117_Cost Loading [524639]; GW (C&S) [376 h]; RC Team [376 h]; CR117 WEIGHTAGE [6359.68 h] | 524,639 | 49750 | 49845 | UDF_G3 | CN | CRBRH | RCW | GENL | GEN | E8 | RW | GEN | 3 | CR |
| 17_CN14160 |  | Entrance 8 - Level 1 Wall and Columns | 38d | 2026-05-06 | 2026-06-12 | 17_CN14150 | 202d | 0d | CR117_Cost Loading [124584]; GW (C&S) [304 h]; RC Team [304 h]; CR117 WEIGHTAGE [3646.4 h] | 124,584 | 49750 | 49845 | UDF_G3 | CN | CRBRH | RCW | GENL | GEN | E8 | RW | GEN | 4 | CR |
| 17_CN14170 |  | Entrance 8 - Level 2 First Floor Slab | 28d | 2026-06-13 | 2026-07-10 | 17_CN14160 | 202d | 0d | CR117_Cost Loading [835153]; RC Team [224 h]; GW (C&S) [224 h]; CR117 WEIGHTAGE [3773.04 h] | 835,153 | 49750 | 49845 | UDF_G3 | CN | CRBRH | RCW | GENL | GEN | E8 | RW | GEN | 2 | CR |
| 17_CN14180 |  | Entrance 8 - Level 2 Wall and Columns | 38d | 2026-07-11 | 2026-08-17 | 17_CN14170 | 202d | 0d | CR117_Cost Loading [124584]; GW (C&S) [304 h]; RC Team [304 h]; CR117 WEIGHTAGE [3646.4 h] | 124,584 | 49750 | 49845 | UDF_G3 | CN | CRBRH | RCW | GENL | GEN | E8 | RW | GEN | 4 | CR |
| 17_CN14190 |  | Entrance 8 - Level 3 Roof Slab including waterproofing | 43d | 2026-08-18 | 2026-09-29 | 17_CN14180 | 202d | 0d | CR117_Cost Loading [272952]; GW (C&S) [344 h]; CR117 WEIGHTAGE [5815.12 h] | 272,952 | 49750 | 49845 | UDF_G3 | CN | CRBRH | RCW | GENL | ROF | E8 | RW | GEN | 1 | CR |
| 17_CN14200 |  | Entrance 8 - Construct retaining walls and backfill | 28d | 2026-09-30 | 2026-10-27 | 17_CN14190 | 202d | 0d | CR117_Cost Loading [91799]; GW (C&S) [224 h]; Excavation Team [224 h]; CR117 WEIGHTAGE [2676.64 h] | 91,799 | 49750 | 49845 | UDF_G3 | CN | CRBRH | RCW | GENL | GEN | E8 | RW | GEN | 4 | CR |
|  | 4 | **Entrance 6- Strucure above ground (@Zone E, Stage 3-6)** |  | 2026-05-24 | 2026-12-23 |  |  |  |  |  |  |  |  |  |  |  |  |  |  |  |  |  |  |
| 17_CN14250 |  | Entrance 6 - Wall from Station Roof to Ground | 23d | 2026-05-24 | 2026-06-15 | 17_CN13220 | 161d | 0d | CR117_Cost Loading [75406]; RC Team [184 h]; GW (C&S) [184 h]; CR117 WEIGHTAGE [2191.68 h] | 75,406 | 50080 | 50117 | UDF_G3 | CN | CRBRH | RCW | GENL | GEN | E6 | RW | GEN | 4 | CR |
| 17_CN14260 |  | Entrance 6 - Waterproofing to the wall/roof and backfill | 21d | 2026-06-16 | 2026-07-06 | 17_CN14250 | 161d | 0d | CR117_Cost Loading [68849]; GW (C&S) [168 h]; CR117 WEIGHTAGE [1634.32 h] | 68,849 | 50080 | 50117 | UDF_G3 | CN | CRBRH | ENA | GENL | GEN | E6 | WP | GEN | 4 | CR |
| 17_CN14270 |  | Entrance 6 - Level 1 Gound Slab incl. Ramp, Staircases | 40d | 2026-07-07 | 2026-08-15 | 17_CN14260 | 161d | 0d | CR117_Cost Loading [446501]; GW (C&S) [320 h]; RC Team [320 h]; CR117 WEIGHTAGE [5406.72 h] | 446,501 | 50080 | 50117 | UDF_G3 | CN | CRBRH | RCW | GENL | GEN | E6 | RW | GEN | 3 | CR |
| 17_CN14280 |  | Entrance 6 - Wall and Columns from Ground to Roof | 42d | 2026-08-16 | 2026-09-26 | 17_CN14270 | 161d | 0d | CR117_Cost Loading [137699]; RC Team [336 h]; CR117 WEIGHTAGE [4034.32 h] | 137,699 | 50080 | 50117 | UDF_G3 | CN | CRBRH | RCW | GENL | GEN | E6 | RW | GEN | 4 | CR |
| 17_CN14290 |  | Entrance 6 - Roof & Steel Structures | 64d | 2026-09-27 | 2026-11-29 | 17_CN14280 | 161d | 0d | CR117_Cost Loading [2352257]; GW (C&S) [512 h]; CR117 WEIGHTAGE [21031.5 h] | 2,352,257 | 50080 | 50117 | UDF_G3 | CN | CRBRH | RCW | GENL | ROF | E6 | RW | GEN | 1 | CR |
| 17_CN14300 |  | Entrance 6 - Construct retaining walls and backfill | 24d | 2026-11-30 | 2026-12-23 | 17_CN14290 | 161d | 0d | CR117_Cost Loading [78685]; GW (C&S) [192 h]; RC Team [192 h]; CR117 WEIGHTAGE [2288.64 h] | 78,685 | 50080 | 50117 | UDF_G3 | CN | CRBRH | RCW | GENL | GEN | E6 | RW | GEN | 4 | CR |
|  | 5 | **Entrance 7 - Structure above ground (@Zone E, Stage 3-6)** |  | 2026-05-24 | 2027-01-09 |  |  |  |  |  |  |  |  |  |  |  |  |  |  |  |  |  |  |
| 17_CN14310 |  | Entrance 7 - Wall from Station Roof to Gound Slab | 24d | 2026-05-24 | 2026-06-16 | 17_CN13220 | 144d | 0d | CR117_Cost Loading [78685]; RC Team [192 h]; GW (C&S) [192 h]; CR117 WEIGHTAGE [2288.64 h] | 78,685 | 50080 | 50117 | UDF_G3 | CN | CRBRH | RCW | GENL | GEN | E7 | RW | GEN | 4 | CR |
| 17_CN14320 |  | Entrance 7 - Waterproofing to the wall/roof and backfill | 25d | 2026-06-17 | 2026-07-11 | 17_CN14310 | 144d | 0d | CR117_Cost Loading [81963]; GW (C&S) [200 h]; CR117 WEIGHTAGE [1953.04 h] | 81,963 | 50080 | 50117 | UDF_G3 | CN | CRBRH | ENA | GENL | GRD | E7 | WP | GEN | 4 | CR |
| 17_CN14330 |  | Entrance 7 - Level 1 Gound Floor Slab incl. Ramp, Staircases | 32d | 2026-07-12 | 2026-08-12 | 17_CN14320 | 144d | 0d | CR117_Cost Loading [357201]; GW (C&S) [256 h]; RC Team [256 h]; CR117 WEIGHTAGE [4317.52 h] | 357,201 | 50080 | 50117 | UDF_G3 | CN | CRBRH | RCW | GENL | GRD | E7 | RW | GEN | 3 | CR |
| 17_CN14340 |  | Entrance 7 - Level 1 Wall and Columns | 32d | 2026-08-13 | 2026-09-13 | 17_CN14330 | 144d | 0d | CR117_Cost Loading [104913]; RC Team [256 h]; CR117 WEIGHTAGE [3064.56 h] | 104,913 | 50080 | 50117 | UDF_G3 | CN | CRBRH | RCW | GENL | GEN | E7 | RW | GEN | 4 | CR |
| 17_CN14350 |  | Entrance 7 - Level 2 First Floor Slab | 25d | 2026-09-14 | 2026-10-08 | 17_CN14340 | 144d | 0d | CR117_Cost Loading [745673]; RC Team [200 h]; CR117 WEIGHTAGE [3364.56 h] | 745,673 | 50080 | 50117 | UDF_G3 | CN | CRBRH | RCW | GENL | GEN | E7 | RW | GEN | 2 | CR |
| 17_CN14360 |  | Entrance 7 - Level 2 Wall and Columns | 32d | 2026-10-09 | 2026-11-09 | 17_CN14350 | 144d | 0d | CR117_Cost Loading [104913]; RC Team [256 h]; GW (C&S) [256 h]; CR117 WEIGHTAGE [3064.56 h] | 104,913 | 50080 | 50117 | UDF_G3 | CN | CRBRH | RCW | GENL | GEN | E7 | RW | GEN | 4 | CR |
| 17_CN14370 |  | Entrance 7 - Level 3 Roof Slab including waterproofing | 37d | 2026-11-10 | 2026-12-16 | 17_CN14360 | 144d | 0d | CR117_Cost Loading [234865]; GW (C&S) [296 h]; RC Team [296 h]; CR117 WEIGHTAGE [4998.24 h] | 234,865 | 50080 | 50117 | UDF_G3 | CN | CRBRH | RCW | GENL | ROF | E7 | RW | GEN | 1 | CR |
| 17_CN14380 |  | Entrance 7 - Construct retaining walls and backfill | 24d | 2026-12-17 | 2027-01-09 | 17_CN14370 | 144d | 0d | CR117_Cost Loading [78685]; RC Team [192 h]; CR117 WEIGHTAGE [2288.64 h] | 78,685 | 50080 | 50117 | UDF_G3 | CN | CRBRH | RCW | GENL | GEN | E7 | RW | GEN | 4 | CR |

| ID | WBS | Activity | Duration | Start | Finish | Predecessors | Total float | Free float | Resources | Cost | [UDF] Chainage Start | [UDF] Chainage Finish | Check | PHASE | AREA | SUB-PHASE | SUB AREA | LOCATION | LOCATION DETAILS | MAJOR WORKS | SUB-LOCATION DETAILS | CR-117 - FOT | LINE | BOQ Item | Check 2 (Original Duration) | SBP and KP | Text 2 | Cr117 BSC Stn | Cr117 Handover |
| --- | --- | --- | --- | --- | --- | --- | --- | --- | --- | --- | --- | --- | --- | --- | --- | --- | --- | --- | --- | --- | --- | --- | --- | --- | --- | --- | --- | --- | --- |
|  | 3 | **Entrance 5 - Structure above ground (@Zone B&A, Stage 6)** |  | 2027-01-20 | 2027-04-23 |  |  |  |  |  |  |  |  |  |  |  |  |  |  |  |  |  |  |  |  |  |  |  |  |
| 17_CN14210 |  | Entrance 5 - Removal of Traffic Deck at Staircase Opening after Stage 6 Traffic Opening (2 Weeks) | 14d | 2027-01-20 | 2027-02-02 | 17_CN10190, 17_CN12570 | 40d | 0d | CR117_Cost Loading [161758]; Excavation Team [112 h]; GW (C&S) [112 h]; CR117 WEIGHTAGE [779.04 h] | 161,758 | 49750 | 49845 | UDF_G3 | CN | CRBRH | ENA | GENL | GEN | E5 | RW | GEN | 01 | CR |  |  |  |  |  |  |
| 17_CN14220 |  | Entrance 5 - Wall and Columns from Ground to Roof | 24d | 2027-02-03 | 2027-02-26 | 17_CN14210 | 40d | 0d | CR117_Cost Loading [78685]; RC Team [192 h]; GW (C&S) [192 h]; CR117 WEIGHTAGE [2288.64 h] | 78,685 | 49750 | 49845 | UDF_G3 | CN | CRBRH | RCW | GENL | GEN | E5 | RW | GEN | 4 | CR |  |  |  |  |  |  |
| 17_CN14230 |  | Entrance 5 - Roof & Steel Structures (6 Weeks) | 42d | 2027-02-27 | 2027-04-09 | 17_CN14220 | 40d | 0d | CR117_Cost Loading [1543669]; GW (C&S) [336 h]; CR117 WEIGHTAGE [18036.5 h] | 1,543,669 | 49750 | 49845 | UDF_G3 | CN | CRBRH | RCW | GENL | GEN | E5 | RW | GEN | 1 | CR |  |  |  |  |  |  |
| 17_CN14240 |  | Entrance 5 - Construct retaining walls and backfill (2 Weeks) | 14d | 2027-04-10 | 2027-04-23 | 17_CN14230 | 40d | 0d | CR117_Cost Loading [45900]; RC Team [112 h]; CR117 WEIGHTAGE [1318.8 h] | 45,900 | 49750 | 49845 | UDF_G3 | CN | CRBRH | RCW | GENL | GEN | E5 | RW | GEN | 4 | CR |  |  |  |  |  |  |
|  | 5 | **SUBWAY LINK TUNNEL (East of Extg BH Station)** |  | 2022-07-31 | 2027-06-20 |  |  |  |  |  |  |  |  |  |  |  |  |  |  |  |  |  |  |  |  |  |  |  |  |
|  | 1 | **SUBWAY LINK STAGE 0** |  | 2022-07-31 | 2023-02-24 |  |  |  |  |  |  |  |  |  |  |  |  |  |  |  |  |  |  |  |  |  |  |  |  |
|  | 1 | **SUBWAY LINK-STG0-Preparation Road Diversion for Stage 1** |  | 2022-07-31 | 2023-01-23 |  |  |  |  |  |  |  |  |  |  |  |  |  |  |  |  |  |  |  |  |  |  |  |  |
| 17_CN14400 |  | Subway Link-STG0 Construct Road (Base course) Diversion for Stage 1 (8 Weeks) | 56d | 2022-07-31 | 2022-09-24 | 17_DS10940, 17_PC10210, 17_PC10220 | 144d | 0d | CR117_Cost Loading [568934]; GW (C&S) [448 h]; CR117 WEIGHTAGE [9196 h] | 568,934 |  |  | UDF_G3 | CN | CRBRH | ENA | GENL | GEN | GN | RD | TD0 | 07 | CR | A.07 |  |  |  |  |  |
| 17_CN14410 |  | Subway Link-STG0 Diversion Road Wearing course, Street Furniture for Stage 1 | 21d | 2022-09-25 | 2022-10-15 | 17_CN14400 | 144d | 82d | CR117_Cost Loading [213350]; GW (C&S) [168 h]; CR117 WEIGHTAGE [3424.16 h] | 213,350 |  |  | UDF_G3 | CN | CRBRH | ENA | GENL | GEN | GN | RD | TD0 | 07 | CR | A.07 |  |  |  |  |  |
| 17_CN14390 |  | Subway Link-STG0 Diversion Road Drains for Stage 1 | 21d | 2022-12-16 | 2023-01-05 | 17_DS10930, 17_DS10770 | 62d | 0d | CR117_Cost Loading [213350]; GW (C&S) [368 h]; CR117 WEIGHTAGE [7546.96 h] | 213,350 |  |  | UDF_G3 | CN | CRBRH | ENA | GENL | GEN | GN | RD | TD0 | 07 | CR | A.07 |  |  |  |  |  |
| 17_CN14420 |  | Subway Link-STG0 Diversion Road - Preparation to open to Traffic for Stage 1 | 18d | 2023-01-06 | 2023-01-23 | 17_CN14390, 17_CN14410, 17_GN10600, 17_GN10590, 17_GN10580, 17_GN10570, 17_GN10690, 17_GN10700 | 62d | 0d | CR117_Cost Loading [182872]; GW (C&S) [112 h]; CR117 WEIGHTAGE [2269.76 h] | 182,872 |  |  | UDF_G3 | CN | CRBRH | ENA | GENL | GEN | GN | RD | TD0 | 07 | CR | A.07 | UDF_G3 |  |  |  |  |
|  | 2 | **SUBWAY LINK-STG0-Site Clerance and Setup (Subway Link Tunnel - Road Diversion Stage 1)** |  | 2023-01-24 | 2023-02-24 |  |  |  |  |  |  |  |  |  |  |  |  |  |  |  |  |  |  |  |  |  |  |  |  |
| 17_CN14430 |  | Hoardings Installation, Utilities Detection for Working Area (Subway Link Tunnel - Road Diversion Stage 1) | 14d | 2023-01-24 | 2023-02-06 | 17_CN14420 | 62d | 0d | CR117_Cost Loading [230917]; CR117 WEIGHTAGE [603.76 h] | 230,917 |  |  | UDF_G3 | CN | CRBRH | ENA | GENL | GEN | GN | SI | TD0 | 06 | CR | A.06 |  |  |  |  |  |
| 17_CN14440 |  | Site Clearance Leveling and Plant Setup for Working Area (Subway Link Tunnel - Road Diversion Stage 1) | 18d | 2023-02-07 | 2023-02-24 | 17_CN14430 | 62d | 0d | CR117_Cost Loading [207975]; CR117 WEIGHTAGE [603.76 h] | 207,975 |  |  | UDF_G3 | CN | CRBRH | ENA | GENL | GEN | GN | SI | TD0 | 01 | CR |  |  |  |  |  |  |
|  | 2 | **SUBWAY LINK STAGE 1** |  | 2023-02-25 | 2023-07-02 |  |  |  |  |  |  |  |  |  |  |  |  |  |  |  |  |  |  |  |  |  |  |  |  |
|  | 1 | **SUBWAY LINK-STG1-ERSS-SBP Works** |  | 2023-02-25 | 2023-05-22 |  |  |  |  |  |  |  |  |  |  |  |  |  |  |  |  |  |  |  |  |  |  |  |  |
| 17_CN14470 |  | SUBWAY LINK-STG1- S24 SBP (43 nos with 1 Rig; 0.5/d/Rig) | 86d | 2023-02-25 | 2023-05-21 | 17_CN14440, 17_DS11440 | 139d | 0d | CR117_Cost Loading [1958833]; SBP Team [760 h]; CR117 WEIGHTAGE [20104.6 h] | 1,958,833 |  |  | UDF_G3 | CN | CRBRH | ERS | GENL | GEN | ZL | SE | TD1 | 2 | CR |  |  | 1 |  |  |  |
| 17_CN14450 |  | SUBWAY LINK-STG1- S25 DW (50m with 1 Rig; 0.8/d/Rig) | 62d | 2023-03-22 | 2023-05-22 | 17_CN14440, 17_CN14420, 17_PC10080, 17_DS11440, 17_CN10300 | 37d | 0d | CR117_Cost Loading [2100173]; D Wall Team [336 h]; CR117 WEIGHTAGE [20656.2 h] | 2,100,173 |  |  | UDF_G3 | CN | CRBRH | ERS | GENL | GEN | ZL | SE | TD1 | 1 | CR |  |  |  | 2 | 1 | 1 |
|  | 4 | **SUBWAY LINK-STG1-ERSS-Fissure Grouting Works** |  | 2023-05-22 | 2023-06-25 |  |  |  |  |  |  |  |  |  |  |  |  |  |  |  |  |  |  |  |  |  |  |  |  |
| 17_CN14480 |  | SUBWAY LINK-STG1-Fissure Grouting S24 SBP (43 nos; 1.4 no/d) | 30d | 2023-05-22 | 2023-06-20 | 17_CN14470 | 139d | 102d | CR117_Cost Loading [225922]; Fissure Grouting Team [576 h]; CR117 WEIGHTAGE [6252.48 h] | 225,922 |  |  | UDF_G3 | CN | CRBRH | ERS | GENL | GEN | ZL |  | TD1 | 3 | CR |  |  | 1 |  |  |  |
| 17_CN14460 |  | SUBWAY LINK-STG1-Fissure Grouting S25 DW (50m; 1.4m /d) | 34d | 2023-05-23 | 2023-06-25 | 17_CN14450, 17_PC10060 | 37d | 0d | CR117_Cost Loading [248514]; Fissure Grouting Team [256 h]; CR117 WEIGHTAGE [4436.64 h] | 248,514 |  |  | UDF_G3 | CN | CRBRH | ERS | GENL | GEN | ZL |  | TD1 | 3 | CR |  |  | 1 |  |  | 1 |
|  | 2 | **SUBWAY LINK-STG1-Traffic Decking Construction During Traffic Diversion Stage 1** |  | 2023-06-26 | 2023-07-02 |  |  |  |  |  |  |  |  |  |  |  |  |  |  |  |  |  |  |  |  |  |  |  |  |
| 17_CN14490 |  | SUBWAY LINK-STG1-Excavation and Construction of Traffic Decking at Linkway South-East half | 7d | 2023-06-26 | 2023-07-02 | 17_CN14460 | 37d | 0d | CR117_Cost Loading [247291]; GW (C&S) [128 h]; RC Team [128 h]; CR117 WEIGHTAGE [895.92 h] | 247,291 |  |  | UDF_G3 | CN | CRBRH | ENA | GENL | GEN | ZL | DK | TD1 | 2 | CR |  |  |  |  |  | 1 |

| ID | WBS | Activity | Duration | Start | Finish | Predecessors | Total float | Free float | Resources | Cost | BOQ Item | Cr117 Handover | Check | PHASE | AREA | SUB-PHASE | SUB AREA | LOCATION | LOCATION DETAILS | MAJOR WORKS | SUB-LOCATION DETAILS | CR-117 - FOT | LINE | Check 2 (Original Duration) | SBP and KP |
| --- | --- | --- | --- | --- | --- | --- | --- | --- | --- | --- | --- | --- | --- | --- | --- | --- | --- | --- | --- | --- | --- | --- | --- | --- | --- |
|  | 3 | **SUBWAY LINK STAGE 2** |  | 2023-07-03 | 2023-10-06 |  |  |  |  |  |  |  |  |  |  |  |  |  |  |  |  |  |  |  |  |
|  | 8 | **SUBWAY LINK-STG2-Tunnel: Preparation Road Diversion for Stage 2** |  | 2023-07-03 | 2023-07-16 |  |  |  |  |  |  |  |  |  |  |  |  |  |  |  |  |  |  |  |  |
| 17_CN14500 |  | Subway Link Tunnel: Construct Road (Base course) Diversion for Stage 2 | 7d | 2023-07-03 | 2023-07-09 | 17_CN14490 | 37d | 0d | CR117_Cost Loading [203191]; GW (C&S) [192 h]; CR117 WEIGHTAGE [3918.88 h] | 203,191 | A.07 | 1 | UDF_G3 | CN | CRBRH | ENA | GENL | GEN | ZL | RD | TD2 | 07 | CR |  |  |
| 17_CN14510 |  | Subway Link Tunnel: Diversion Road Drains for Stage 2 | 7d | 2023-07-03 | 2023-07-09 | 17_CN14490 | 37d | 0d | CR117_Cost Loading [203191]; GW (C&S) [192 h]; CR117 WEIGHTAGE [3918.88 h] | 203,191 | A.07 |  | UDF_G3 | CN | CRBRH | ENA | GENL | GEN | ZL | RD | TD2 | 07 | CR |  |  |
| 17_CN14520 |  | Subway Link Tunnel: Diversion Road Wearing course, Street Furniture for Stage 2 | 4d | 2023-07-10 | 2023-07-13 | 17_CN14510, 17_CN14500 | 37d | 0d | CR117_Cost Loading [71117]; GW (C&S) [88 h]; CR117 WEIGHTAGE [1775.12 h] | 71,117 | A.07 | 1 | UDF_G3 | CN | CRBRH | ENA | GENL | GEN | ZL | RD | TD2 | 07 | CR |  |  |
| 17_CN14530 |  | Subway Link Tunnel: Diversion Road - Preparation to open to Traffic for Stage 2 | 3d | 2023-07-14 | 2023-07-16 | 17_CN14510, 17_CN14520 | 37d | 0d | CR117_Cost Loading [71117]; GW (C&S) [112 h]; CR117 WEIGHTAGE [2269.76 h] | 71,117 | A.07 | 1 | UDF_G3 | CN | CRBRH | ENA | GENL | GEN | ZL | RD | TD2 | 07 | CR | UDF_G3 |  |
|  | 1 | **SUBWAY LINK-STG2-ERSS-SBP Works** |  | 2023-07-17 | 2023-08-21 |  |  |  |  |  |  |  |  |  |  |  |  |  |  |  |  |  |  |  |  |
| 17_CN14540 |  | SUBWAY LINK-STG2- S27 SBP (28 nos with 1 Rig; 0.5/d/Rig) | 28d | 2023-07-17 | 2023-08-13 | 17_CN14530, 17_CN10010 | 65d | 0d | CR117_Cost Loading [1275519]; SBP Team [504 h]; CR117 WEIGHTAGE [13127.4 h] | 1,275,519 |  |  | UDF_G3 | CN | CRBRH | ERS | GENL | GEN | ZL | SE | TD2 | 2 | CR |  | 1 |
| 17_CN14550 |  | SUBWAY LINK-STG2- S26 SBP (57 nos with 3 Rigs; 0.5/d/Rig) | 36d | 2023-07-17 | 2023-08-21 | 17_CN14530, 17_CN10010 | 37d | 0d | CR117_Cost Loading [2596592]; SBP Team [528 h]; CR117 WEIGHTAGE [23517.8 h] | 2,596,592 |  | 1 | UDF_G3 | CN | CRBRH | ERS | GENL | GEN | ZL | SE | TD2 | 2 | CR |  | 1 |
|  | 5 | **SUBWAY LINK-STG2-ERSS-Fissure Grouting Works** |  | 2023-08-14 | 2023-09-30 |  |  |  |  |  |  |  |  |  |  |  |  |  |  |  |  |  |  |  |  |
| 17_CN14560 |  | SUBWAY LINK-STG2-Fissure Grouting S27 SBP (28 nos; 1.4 no/d) | 20d | 2023-08-14 | 2023-09-02 | 17_CN14540 | 65d | 28d | CR117_Cost Loading [150615]; Fissure Grouting Team [352 h]; CR117 WEIGHTAGE [5873.36 h] | 150,615 |  |  | UDF_G3 | CN | CRBRH | ERS | GENL | GEN | ZL |  | TD2 | 3 | CR |  | 1 |
| 17_CN14570 |  | SUBWAY LINK-STG2-Fissure Grouting S26 SBP (57 nos; 1.4 no/d) | 40d | 2023-08-22 | 2023-09-30 | 17_CN14550 | 37d | 0d | CR117_Cost Loading [301230]; Fissure Grouting Team [368 h]; CR117 WEIGHTAGE [5463.04 h] | 301,230 |  | 1 | UDF_G3 | CN | CRBRH | ERS | GENL | GEN | ZL |  | TD2 | 3 | CR |  | 1 |
|  | 2 | **SUBWAY LINK-STG2-DFE/King Posts** |  | 2023-07-17 | 2023-08-17 |  |  |  |  |  |  |  |  |  |  |  |  |  |  |  |  |  |  |  |  |
| 17_CN14580 |  | SUBWAY LINK-STG2-Zone L - DFE/King Posts - (14/24 no.) | 32d | 2023-07-17 | 2023-08-17 | 17_CN14530 | 81d | 44d | CR117_Cost Loading [344254]; DFE/King Post Team [256 h]; CR117 WEIGHTAGE [5448 h] | 344,254 |  |  | UDF_G3 | CN | CRBRH | ERS | GENL | GEN | ZL | KP | TD2 | 1 | CR |  | 1 |
|  | 3 | **SUBWAY-LINK-STG2-Traffic Decking Construction** |  | 2023-10-01 | 2023-10-06 |  |  |  |  |  |  |  |  |  |  |  |  |  |  |  |  |  |  |  |  |
| 17_CN14590 |  | SUBWAY LINK-STG2-Excavation and Construction of Traffic Decking at Linkway North-West half | 6d | 2023-10-01 | 2023-10-06 | 17_CN14570, 17_CN14480, 17_CN14560, 17_CN14580 | 37d | 0d | CR117_Cost Loading [222562]; Excavation Team [128 h]; CR117 WEIGHTAGE [895.92 h] | 222,562 |  | 1 | UDF_G3 | CN | CRBRH | ENA | GENL | GEN | ZL | DK | TD2 | 2 | CR |  |  |
|  | 4 | **SUBWAY LINK STAGE 3A to 5** |  | 2023-10-07 | 2024-07-15 |  |  |  |  |  |  |  |  |  |  |  |  |  |  |  |  |  |  |  |  |
|  | 8 | **SUBWAY LINK-STG3A-Tunnel: Preparation Road Diversion for Stage 3A** |  | 2023-10-07 | 2023-11-05 |  |  |  |  |  |  |  |  |  |  |  |  |  |  |  |  |  |  |  |  |
| 17_CN14600 |  | Subway Link Tunnel: Construct Road (Base course) Diversion for Stage 3A | 16d | 2023-10-07 | 2023-10-22 | 17_CN14590 | 37d | 0d | CR117_Cost Loading [213350]; GW (C&S) [192 h]; CR117 WEIGHTAGE [3918.88 h] | 213,350 | A.07 | 1 | UDF_G3 | CN | CRBRH | ENA | GENL | GEN | ZL | RD | TD3A | 07 | CR |  |  |
| 17_CN14610 |  | Subway Link Tunnel: Diversion Road Drains for Stage 3A | 14d | 2023-10-07 | 2023-10-20 | 17_CN14590 | 39d | 2d | CR117_Cost Loading [213350]; GW (C&S) [192 h]; CR117 WEIGHTAGE [3918.88 h] | 213,350 | A.07 |  | UDF_G3 | CN | CRBRH | ENA | GENL | GEN | ZL | RD | TD3A | 07 | CR |  |  |
| 17_CN14620 |  | Subway Link Tunnel: Diversion Road Wearing course, Street Furniture for Stage 3A | 7d | 2023-10-23 | 2023-10-29 | 17_CN14610, 17_CN14600 | 37d | 0d | CR117_Cost Loading [101595]; GW (C&S) [88 h]; CR117 WEIGHTAGE [1775.12 h] | 101,595 | A.07 | 1 | UDF_G3 | CN | CRBRH | ENA | GENL | GEN | ZL | RD | TD3A | 07 | CR |  |  |
| 17_CN14630 |  | Subway Link Tunnel: Diversion Road - Preparation to open to Traffic for Stage 3A | 7d | 2023-10-30 | 2023-11-05 | 17_CN14610, 17_CN14620 | 37d | 0d | CR117_Cost Loading [101595]; GW (C&S) [112 h]; CR117 WEIGHTAGE [2269.76 h] | 101,595 | A.07 | 1 | UDF_G3 | CN | CRBRH | ENA | GENL | GEN | ZL | RD | TD3A | 07 | CR | UDF_G3 |  |
|  | 3 | **SUBWAY LINK-STG 3A-ERSS Works at utilities gap (Linkway North)** |  | 2023-11-06 | 2023-12-25 |  |  |  |  |  |  |  |  |  |  |  |  |  |  |  |  |  |  |  |  |
| 17_CN14690 |  | SUBWAY LINK-STG3A-Zone L - Linkway North - Ground Improvement (GIW) at utilities gap | 16d | 2023-11-06 | 2023-11-21 | 17_DS10590, 17_PC10050, 17_CN14630 | 300d | 0d | CR117_Cost Loading [184866]; GW (C&S) [128 h]; CR117 WEIGHTAGE [895.92 h] | 184,866 |  |  | UDF_G3 | CN | CRBRH | ENA | GENL | GEN | ZL | GI | TD3A | 01 | CR |  |  |
| 17_CN14700 |  | SUBWAY LINK-STG3A-Zone L - Linkway North - ERSS 4nos. BP at utilities gap | 18d | 2023-11-22 | 2023-12-09 | 17_CN14690 | 300d | 0d | CR117_Cost Loading [207975]; GW (C&S) [144 h]; Lifting Team [144 h]; CR117 WEIGHTAGE [4159.84 h] | 207,975 |  |  | UDF_G3 | CN | CRBRH | ENA | GENL | GEN | ZL | BO | TD3A | 01 | CR |  |  |
| 17_CN14710 |  | SUBWAY LINK-STG3A-Zone L - Linkway North - Capping Beam ERSS 4nos. BP at utilities gap | 16d | 2023-12-10 | 2023-12-25 | 17_CN14700 | 300d | 203d | CR117_Cost Loading [184866]; GW (C&S) [128 h]; Lifting Team [128 h]; CR117 WEIGHTAGE [895.92 h] | 184,866 |  |  | UDF_G3 | CN | CRBRH | ENA | GENL | GEN | ZL | RW | TD3A | 01 | CR |  |  |

| ID | WBS | Activity | Duration | Start | Finish | Predecessors | Total float | Free float | Resources | Cost | Check | SBP and KP | PHASE | AREA | SUB-PHASE | SUB AREA | LOCATION | LOCATION DETAILS | MAJOR WORKS | SUB-LOCATION DETAILS | CR-117 - FOT | LINE | BOQ Item | Check 2 (Original Duration) |
| --- | --- | --- | --- | --- | --- | --- | --- | --- | --- | --- | --- | --- | --- | --- | --- | --- | --- | --- | --- | --- | --- | --- | --- | --- |
|  | 1 | **SUBWAY LINK-STG3A-ERSS-SBP or DWall Works** |  | 2024-03-26 | 2024-06-08 |  |  |  |  |  |  |  |  |  |  |  |  |  |  |  |  |  |  |  |
| 17_CN14640 |  | SUBWAY LINK-STG3A- S28 DW (60m with 1 Rig; 0.8/d/Rig) | 75d | 2024-03-26 | 2024-06-08 | 17_CN14630, 17_CN15510, 17_CN10030 | 97d | 0d | CR117_Cost Loading [2520208]; D Wall Team [424 h]; CR117 WEIGHTAGE [40067.3 h] | 2,520,208 | UDF_G3 | 1 | CN | CRBRH | ERS | GENL | GEN | ZL | DW | TD3A | 1 | CR |  |  |
| 17_CN14660 |  | SUBWAY LINK-STG3A- S29 SBP (38 nos with 1 Rig; 0.5/d/Rig ) | 34d | 2024-03-31 | 2024-05-03 | 17_CN14630, 17_CN10030, 17_CN12190 | 106d | 0d | CR117_Cost Loading [1731061]; SBP Team [312 h]; CR117 WEIGHTAGE [8076.88 h] | 1,731,061 | UDF_G3 | 1 | CN | CRBRH | ERS | GENL | GEN | ZL | SE | TD3A | 2 | CR |  |  |
|  | 2 | **SUBWAY LINK-STG 3A-DFE/King Posts** |  | 2024-04-02 | 2024-04-24 |  |  |  |  |  |  |  |  |  |  |  |  |  |  |  |  |  |  |  |
| 17_CN14680 |  | SUBWAY LINK-STG3A-Zone L - DFE/King Posts - (10/24 no.) | 23d | 2024-04-02 | 2024-04-24 | 17_CN14630, 17_CN10030, 17_CN14580, 17_CN12300, 17_CN12330 | 144d | 82d | CR117_Cost Loading [590149]; DFE/King Post Team [184 h]; CR117 WEIGHTAGE [3904.8 h] | 590,149 | UDF_G3 | 1 | CN | CRBRH | ERS | GENL | GEN | ZL | KP | TD3A | 1 | CR |  |  |
|  | 4 | **SUBWAY LINK-STG3A-ERSS-Fissure Grouting Works** |  | 2024-05-04 | 2024-07-15 |  |  |  |  |  |  |  |  |  |  |  |  |  |  |  |  |  |  |  |
| 17_CN14670 |  | SUBWAY LINK-STG3A-Fissure Grouting S29 SBP (38 nos, 1.4 no/d) | 27d | 2024-05-04 | 2024-05-30 | 17_CN14660 | 106d | 9d | CR117_Cost Loading [203330]; Fissure Grouting Team [200 h]; CR117 WEIGHTAGE [2255.6 h] | 203,330 | UDF_G3 | 1 | CN | CRBRH | ERS | GENL | GEN | ZL |  | TD3A | 3 | CR |  |  |
| 17_CN14650 |  | SUBWAY LINK-STG3A-Fissure Grouting S28 DW (60m; 1.6m/d) | 37d | 2024-06-09 | 2024-07-15 | 17_CN14640, 17_CN14670 | 97d | 0d | CR117_Cost Loading [316291]; Fissure Grouting Team [296 h]; CR117 WEIGHTAGE [5250 h] | 316,291 | UDF_G3 | 1 | CN | CRBRH | ERS | GENL | GEN | ZL |  | TD3A | 3 | CR |  |  |
|  | 5 | **SUBWAY LINK STAGE 6** |  | 2027-01-20 | 2027-04-16 |  |  |  |  |  |  |  |  |  |  |  |  |  |  |  |  |  |  |  |
|  | 1 | **SUBWAY LINK-STG 6-Site Clerance and Setup** |  | 2027-01-20 | 2027-02-02 |  |  |  |  |  |  |  |  |  |  |  |  |  |  |  |  |  |  |  |
| 17_CN14720 |  | SUBWAY LINK-STG6-Hoardings Installation for Working Area (11 to 7d) | 7d | 2027-01-20 | 2027-01-26 | 17_CN15050, 17_CN10190 | 106d | 0d | CR117_Cost Loading [115458]; GW (C&S) [56 h]; CR117 WEIGHTAGE [370 h] | 115,458 | UDF_G3 |  | CN | CRBRH | ENA | GENL | GEN | ZL | SI | TD6 | 06 | CR | A.06 |  |
| 17_CN14730 |  | SUBWAY LINK-STG6-Site Clearance Leveling for Working Area (11 to 7 d) | 7d | 2027-01-27 | 2027-02-02 | 17_CN14720 | 106d | 0d | CR117_Cost Loading [80879]; GW (C&S) [56 h]; CR117 WEIGHTAGE [370 h] | 80,879 | UDF_G3 |  | CN | CRBRH | ENA | GENL | GEN | ZL | SI | TD6 | 01 | CR |  |  |
|  | 2 | **SUBWAY LINK-STG 6-Tunnel: Preparation Road Diversion for Stage 7** |  | 2027-02-03 | 2027-04-16 |  |  |  |  |  |  |  |  |  |  |  |  |  |  |  |  |  |  |  |
| 17_CN14740 |  | Subway Link Tunnel: Removal of west part of traffic deck at SMA (near T211 entrance) | 21d | 2027-02-03 | 2027-02-23 | 17_CN14730 | 106d | 0d | CR117_Cost Loading [199374]; GW (C&S) [168 h]; CR117 WEIGHTAGE [3424.16 h] | 199,374 | UDF_G3 |  | CN | CRBRH | ENA | GENL | GEN | ZL | RD | TD6 | 03 | CR |  |  |
| 17_CN14750 |  | Subway Link Tunnel: Reinstate final alignment of SMA base course and Drains for Stage 7 (90 to 14d) | 14d | 2027-02-24 | 2027-03-09 | 17_CN14740 | 106d | 0d | CR117_Cost Loading [132916]; GW (C&S) [112 h]; CR117 WEIGHTAGE [2269.76 h] | 132,916 | UDF_G3 |  | CN | CRBRH | ENA | GENL | GEN | ZL | RD | TD6 | 03 | CR |  |  |
| 17_CN14760 |  | Subway Link Tunnel: Reinstate final alignment Road Wearing course, Street Furniture for Stage 7 | 24d | 2027-03-10 | 2027-04-02 | 17_CN14750 | 106d | 0d | CR117_Cost Loading [227856]; GW (C&S) [192 h]; CR117 WEIGHTAGE [3918.88 h] | 227,856 | UDF_G3 |  | CN | CRBRH | ENA | GENL | GEN | ZL | RD | TD6 | 03 | CR | A.07 |  |
| 17_CN14770 |  | Subway Link Tunnel: Reinstated final alignment preparation to open to Traffic for Stage 7 | 14d | 2027-04-03 | 2027-04-16 | 17_CN15700, 17_CN14750, 17_CN14760 | 106d | 0d | CR117_Cost Loading [132916]; GW (C&S) [112 h]; CR117 WEIGHTAGE [2269.76 h] | 132,916 | UDF_G3 |  | CN | CRBRH | ENA | GENL | GEN | ZL | RD | TD6 | 03 | CR |  | UDF_G3 |
|  | 6 | **SUBWAY LINK STAGE 7** |  | 2027-04-17 | 2027-06-20 |  |  |  |  |  |  |  |  |  |  |  |  |  |  |  |  |  |  |  |
|  | 1 | **SUBWAY LINK-STG7-Site Clerance and Setup** |  | 2027-04-17 | 2027-04-23 |  |  |  |  |  |  |  |  |  |  |  |  |  |  |  |  |  |  |  |
| 17_CN14780 |  | SUBWAY LINK-STG7-Hoardings Installation for Working Area (16 to 7d) | 7d | 2027-04-17 | 2027-04-23 | 17_CN14770, 17_CN10200 | 106d | 0d | CR117_Cost Loading [115458]; GW (C&S) [56 h]; Lifting Team [56 h]; CR117 WEIGHTAGE [370 h] | 115,458 | UDF_G3 |  | CN | CRBRH | ENA | GENL | GEN | ZL | SI | TD7 | 06 | CR | A.06 |  |
|  | 2 | **SUBWAY LINK-STG7-Preparation Road Diversion for Stage 8** |  | 2027-04-24 | 2027-06-20 |  |  |  |  |  |  |  |  |  |  |  |  |  |  |  |  |  |  |  |
| 17_CN14790 |  | Subway Link Tunnel: Removal of east part of traffic deck at SMA (centre median near T211 entrance) for Stage 8 | 16d | 2027-04-24 | 2027-05-09 | 17_CN14780 | 106d | 0d | CR117_Cost Loading [151904]; GW (C&S) [128 h]; CR117 WEIGHTAGE [2599.6 h] | 151,904 | UDF_G3 |  | CN | CRBRH | ENA | GENL | GEN | ZL | RD | TD8 | 03 | CR |  |  |
| 17_CN14800 |  | Subway Link Tunnel: Reinstate final alignment of SMA certre median for Stage 8 (32 to 14d) | 14d | 2027-05-10 | 2027-05-23 | 17_CN14790 | 106d | 0d | CR117_Cost Loading [132916]; GW (C&S) [112 h]; CR117 WEIGHTAGE [2269.76 h] | 132,916 | UDF_G3 |  | CN | CRBRH | ENA | GENL | GEN | ZL | RD | TD8 | 03 | CR |  |  |
| 17_CN14810 |  | Subway Link Tunnel:Reinstate final alignment Road Street Furniture for Stage 8 (24 to14d) | 14d | 2027-05-24 | 2027-06-06 | 17_CN14800 | 106d | 0d | CR117_Cost Loading [132916]; GW (C&S) [112 h]; CR117 WEIGHTAGE [2269.76 h] | 132,916 | UDF_G3 |  | CN | CRBRH | ENA | GENL | GEN | ZL | RD | TD8 | 03 | CR | A.07 |  |
| 17_CN14820 |  | Subway Link Tunnel: Reinstated final alignment preparation to open to Traffic for Stage 8 | 14d | 2027-06-07 | 2027-06-20 | 17_CN14810 | 106d | 0d | CR117_Cost Loading [132916]; GW (C&S) [112 h]; Lifting Team [112 h]; CR117 WEIGHTAGE [2269.76 h] | 132,916 | UDF_G3 |  | CN | CRBRH | ENA | GENL | GEN | ZL | RD | TD8 | 03 | CR |  | UDF_G3 |

| ID | WBS | Activity | Duration | Start | Finish | Predecessors | Total float | Free float | Resources | Cost | Text 3 | Text 2 | Comments | Check 2 (Original Duration) | [UDF] Chainage Start | [UDF] Chainage Finish | Check | PHASE | AREA | SUB-PHASE | STAGE | SUB AREA | LOCATION | LOCATION DETAILS | MAJOR WORKS | SUB-LOCATION DETAILS | CR-117 - FOT | LINE | Utility Programme |
| --- | --- | --- | --- | --- | --- | --- | --- | --- | --- | --- | --- | --- | --- | --- | --- | --- | --- | --- | --- | --- | --- | --- | --- | --- | --- | --- | --- | --- | --- |
|  | 7 | **SUBWAY LINK EXCAVATION AND STRUCTURE WORKS** |  | 2024-07-16 | 2026-07-01 |  |  |  |  |  |  |  |  |  |  |  |  |  |  |  |  |  |  |  |  |  |  |  |  |
|  | 1 | **SUBWAY LINK-ZONE L Excavation Works** |  | 2024-07-16 | 2025-02-28 |  |  |  |  |  |  |  |  |  |  |  |  |  |  |  |  |  |  |  |  |  |  |  |  |
| 17_CN19190 |  | Subway Link Zone L - Excavate to 1m below S1 (Aprox 3210m3, 250m3/day) | 14d | 2024-07-16 | 2024-07-29 | 17_CN10070, 17_CN14650, 17_CN14680, 17_CN14710, 17_PC10270 | 97d | 0d | CR117_Cost Loading [101903]; Excavation Team [112 h]; CR117 WEIGHTAGE [2050.96 h] | 101,903 | 1 | 1 | To Split Excav and Strut/deck | UDF_G3 | 496230 | 49744 | UDF_G3 | CN | CRBRH | EXC | ZL | GENL | GEN | ZL | EC | GEN | 1 | CR |  |
| 17_CN19200 |  | Subway Link Zone L - Excavate to 1m below S2 (Aprox 11590m3, 300m3/day) | 38d | 2024-09-08 | 2024-10-15 | 17_CN14830, 17_CN14910 | 97d | 0d | CR117_Cost Loading [367931]; Excavation Team [296 h]; CR117 WEIGHTAGE [5589.04 h] | 367,931 | 1 | 1 | To Split Excav and Strut/deck | UDF_G3 | 496230 | 49744 | UDF_G3 | CN | CRBRH | EXC | ZL | GENL | GEN | ZL | EC | GEN | 1 | CR |  |
| 17_CN19210 |  | Subway Link Zone L - Excavate to 1m below S3 (Aprox 12330m3, 300m3/day) | 41d | 2024-11-19 | 2024-12-29 | 17_CN14840 | 97d | 0d | CR117_Cost Loading [391423]; Excavation Team [312 h]; CR117 WEIGHTAGE [5896.72 h] | 391,423 | 1 | 1 | To Split Excav and Strut/deck | UDF_G3 | 496230 | 49744 | UDF_G3 | CN | CRBRH | EXC | ZL | GENL | GEN | ZL | EC | GEN | 1 | CR |  |
| 17_CN14860 |  | Subway Link Zone L - Excavate to Base Slab Level (Approx 6600m3, 250m3/day) | 27d | 2025-02-02 | 2025-02-28 | 17_CN14850 | 97d | 0d | CR117_Cost Loading [209521]; Excavation Team [176 h]; CR117 WEIGHTAGE [3281.6 h] | 209,521 | 1 | 1 | To Split Excav and Strut/deck | UDF_G3 | 496230 | 49744 | UDF_G3 | CN | CRBRH | EXC | ZL | GENL | GEN | ZL | EC | GEN | 1 | CR |  |
|  | 3 | **SUBWAY LINK-ZONE L Struting-RC Works** |  | 2024-07-30 | 2025-04-09 |  |  |  |  |  |  |  |  |  |  |  |  |  |  |  |  |  |  |  |  |  |  |  |  |
| 17_CN14830 |  | Subway Link Zone L - Install S1, Install Traffic Deck/S1 and Preload S1 (12 nos) (0.8 no/d/team) | 27d | 2024-07-30 | 2024-08-25 | 17_CN14460, 17_CN12210, 17_CN19190 | 110d | 13d | CR117_Cost Loading [667686]; GW (C&S) [168 h]; Strutting Team [168 h]; CR117 WEIGHTAGE [1188 h] | 667,686 | 1 | 1 | To Split Excav and Strut/deck | UDF_G3 | 496230 | 49744 | UDF_G3 | CN | CRBRH | ERS | ZL | GENL | GEN | ZL | DK | GEN | 2 | CR | 1 |
| 17_CN14840 |  | Subway Link Zone L - Install S2 Strut, Install and Preload S2 (27 nos) (0.8 no/d/team) | 34d | 2024-10-16 | 2024-11-18 | 17_CN14830, 17_CN14910, 17_CN19200 | 97d | 0d | CR117_Cost Loading [610716]; Strutting Team [272 h]; CR117 WEIGHTAGE [10305.9 h] | 610,716 | 1 | 1 | To Split Excav and Strut/deck | UDF_G3 | 496230 | 49744 | UDF_G3 | CN | CRBRH | ERS | ZL | GENL | GEN | ZL | ST | GEN | 1 | CR |  |
| 17_CN14850 |  | Subway Link Zone L - Install S3 Strut, Install and Preload S3 (27 nos) (0.8 no/d/team) | 34d | 2024-12-30 | 2025-02-01 | 17_CN14840, 17_CN19210 | 97d | 0d | CR117_Cost Loading [610716]; Strutting Team [272 h]; CR117 WEIGHTAGE [10305.9 h] | 610,716 | 1 | 1 | To Split Excav and Strut/deck | UDF_G3 | 496230 | 49744 | UDF_G3 | CN | CRBRH | ERS | ZL | GENL | GEN | ZL | ST | GEN | 1 | CR |  |
| 17_CN14870 |  | Subway Link Zone L - Base slab (2466m2) | 40d | 2025-03-01 | 2025-04-09 | 17_CN14860, 17_DS11010 | 97d | 0d | CR117_Cost Loading [2310261]; RC Team [360 h]; CR117 WEIGHTAGE [13525.4 h] | 2,310,261 | 1 | 1 |  | UDF_G3 | 496230 | 49744 | UDF_G3 | CN | CRBRH | RCW | ZL | GENL | BAL | ZL | RW | GEN | 3 | CR |  |
|  | 4 | **SUBWAY LINK -ZONE L - Utilities Gap** |  | 2024-07-30 | 2024-09-07 |  |  |  |  |  |  |  |  |  |  |  |  |  |  |  |  |  |  |  |  |  |  |  |  |
| 17_CN14880 |  | Zone L - Utilities Gap area excavation and Installation lagging with C-channel until utilities level | 10d | 2024-07-30 | 2024-08-08 | 17_CN19190 | 97d | 0d | CR117_Cost Loading [265745]; Lifting Team [184 h]; GW (C&S) [184 h]; CR117 WEIGHTAGE [1304.88 h] | 265,745 | 1 | 1 |  | UDF_G3 | 496230 | 49744 | UDF_G3 | CN | CRBRH | ENA | ZL | GENL | GEN | ZL | UD | GEN | 01 | CR | 1 |
| 17_CN14890 |  | Zone L - Utilities Gap area Installation of servicies support structures below construction decking | 9d | 2024-08-09 | 2024-08-17 | 17_CN14880 | 97d | 0d | CR117_Cost Loading [346625]; GW (C&S) [240 h]; Lifting Team [240 h]; CR117 WEIGHTAGE [1713.84 h] | 346,625 | 1 | 1 |  | UDF_G3 | 496230 | 49744 | UDF_G3 | CN | CRBRH | ENA | ZL | GENL | GEN | ZL | UD | GEN | 01 | CR | 1 |
| 17_CN14900 |  | Zone L - Utilities Gap area Installation lagging with C-channel until micro pile platform level | 9d | 2024-08-18 | 2024-08-26 | 17_CN14890 | 97d | 0d | CR117_Cost Loading [103987]; Lifting Team [72 h]; GW (C&S) [72 h]; CR117 WEIGHTAGE [486.88 h] | 103,987 | 1 | 1 |  | UDF_G3 | 496230 | 49744 | UDF_G3 | CN | CRBRH | ENA | ZL | GENL | GEN | ZL | UD | GEN | 01 | CR | 1 |
| 17_CN14910 |  | Zone L - Utilities Gap area Installation of micropiles - Approx. 30 nos at North | 12d | 2024-08-27 | 2024-09-07 | 17_CN14900 | 97d | 0d | CR117_Cost Loading [184866]; GW (C&S) [128 h]; CR117 WEIGHTAGE [895.92 h] | 184,866 | 1 | 1 |  | UDF_G3 | 496230 | 49744 | UDF_G3 | CN | CRBRH | ENA | ZL | GENL | GEN | ZL | UD | GEN | 01 | CR | 1 |
|  | 2 | **SUBWAY LINK-ZONE L STRUCTURAL WORKS** |  | 2025-04-10 | 2026-07-01 |  |  |  |  |  |  |  |  |  |  |  |  |  |  |  |  |  |  |  |  |  |  |  |  |
|  | 1 | **Subway Link- Zone L Strut Removal & RC Works** |  | 2025-04-10 | 2026-03-19 |  |  |  |  |  |  |  |  |  |  |  |  |  |  |  |  |  |  |  |  |  |  |  |  |
| 17_CN14920 |  | Zone L - Remove S3 Struts | 14d | 2025-04-10 | 2025-04-23 | 17_CN14870 | 97d | 0d | CR117_Cost Loading [606442]; Strutting Team [152 h]; Lifting Team [152 h]; CR117 WEIGHTAGE [5957.6 h] | 606,442 | 1 | 1 |  |  | 496230 | 49744 | UDF_G3 | CN | CRBRH | ERS | ZL | GENL | GEN | ZL | SR | GEN | 2 | CR |  |
| 17_CN14930 |  | Zone L - Cast Wall to Roof Slab Level | 90d | 2025-04-24 | 2025-07-22 | 17_CN14920 | 97d | 0d | CR117_Cost Loading [1340403]; RC Team [720 h]; Lifting Team [720 h]; CR117 WEIGHTAGE [19347.2 h] | 1,340,403 | 1 | 1 |  |  | 496230 | 49744 | UDF_G3 | CN | CRBRH | RCW | ZL | GENL | GEN | ZL | RW | GEN | 4 | CR |  |
| 17_CN14940 |  | Zone L - Cast Roof Slab including waterproofing | 90d | 2025-08-08 | 2025-11-05 | 17_CN14930, 17_CN18660 | 97d | 0d | CR117_Cost Loading [4100255]; RC Team [720 h]; Lifting Team [720 h]; CR117 WEIGHTAGE [27089.7 h] | 4,100,255 | 1 | 1 |  |  | 496230 | 49744 | UDF_G3 | CN | CRBRH | RCW | ZL | GENL | ROF | ZL | RW | GEN | 1 | CR |  |
| 17_CN14950 |  | Zone L - Cut King Post to Top of Roof Slab | 18d | 2025-11-06 | 2025-11-23 | 17_CN14940 | 97d | 0d | CR117_Cost Loading [698753]; DFE/King Post Team [168 h]; CR117 WEIGHTAGE [4507.36 h] | 698,753 | 1 | 1 |  |  | 496230 | 49744 | UDF_G3 | CN | CRBRH | RCW | ZL | GENL | GEN | ZL | KP | GEN | 2 | CR |  |
| 17_CN14960 |  | Zone L - Backfill to Roof Slab Level and cast concrete plugs | 28d | 2025-11-24 | 2025-12-21 | 17_CN14950 | 97d | 0d | CR117_Cost Loading [221008]; Excavation Team [224 h]; RC Team [224 h]; CR117 WEIGHTAGE [3109.6 h] | 221,008 | 1 | 1 |  |  | 496230 | 49744 | UDF_G3 | CN | CRBRH | RCW | ZL | GENL | GEN | ZL | BF | GEN | 3 | CR |  |
| 17_CN14970 |  | Zone L - Backfill to 0.5m below S2 Struts | 21d | 2025-12-22 | 2026-01-11 | 17_CN14960 | 97d | 0d | CR117_Cost Loading [165756]; Excavation Team [168 h]; CR117 WEIGHTAGE [2322.56 h] | 165,756 | 1 | 1 |  |  | 496230 | 49744 | UDF_G3 | CN | CRBRH | ENA | ZL | GENL | GEN | ZL | BF | GEN | 3 | CR |  |
| 17_CN14980 |  | Zone L - Remove S2 struts | 16d | 2026-01-12 | 2026-01-27 | 17_CN14970 | 97d | 0d | CR117_Cost Loading [510688]; Strutting Team [128 h]; CR117 WEIGHTAGE [5010.72 h] | 510,688 | 1 | 1 |  |  | 496230 | 49744 | UDF_G3 | CN | CRBRH | ERS | ZL | GENL | GEN | ZL | SR | GEN | 2 | CR |  |
| 17_CN14990 |  | Zone L - Backfill to 2m below S1 | 21d | 2026-01-28 | 2026-02-17 | 17_CN14980 | 97d | 0d | CR117_Cost Loading [165756]; Excavation Team [168 h]; CR117 WEIGHTAGE [2322.56 h] | 165,756 | 1 | 1 |  |  | 496230 | 49744 | UDF_G3 | CN | CRBRH | ENA | ZL | GENL | GEN | ZL | BF | GEN | 3 | CR |  |
| 17_CN15000 |  | Zone L - Remove S1 struts | 16d | 2026-02-18 | 2026-03-05 | 17_CN14990 | 97d | 0d | CR117_Cost Loading [510688]; Strutting Team [128 h]; CR117 WEIGHTAGE [5010.72 h] | 510,688 | 1 | 1 |  |  | 496230 | 49744 | UDF_G3 | CN | CRBRH | ERS | ZL | GENL | GEN | ZL | SR | GEN | 2 | CR |  |
| 17_CN15010 |  | Zone L - Backfill to Ground Level | 14d | 2026-03-06 | 2026-03-19 | 17_CN15000 | 97d | 0d | CR117_Cost Loading [165756]; Excavation Team [168 h]; CR117 WEIGHTAGE [2322.56 h] | 165,756 | 1 | 1 |  |  | 496230 | 49744 | UDF_G3 | CN | CRBRH | ENA | ZL | GENL | GRD | ZL | BF | GEN | 3 | CR |  |

| ID | WBS | Activity | Duration | Start | Finish | Predecessors | Total float | Free float | Resources | Cost | Check | PHASE | AREA | SUB-PHASE | SUB AREA | LOCATION | LOCATION DETAILS | MAJOR WORKS | SUB-LOCATION DETAILS | CR-117 - FOT | LINE | BOQ Item | Check 2 (Original Duration) | Text 2 | Cr117 BSC Stn | Cr117 Handover | SBP and KP | STAGE | stage 1 |
| --- | --- | --- | --- | --- | --- | --- | --- | --- | --- | --- | --- | --- | --- | --- | --- | --- | --- | --- | --- | --- | --- | --- | --- | --- | --- | --- | --- | --- | --- |
|  | 2 | **Subway Link Tunnel: Preparation Road Diversion for Stage 6** |  | 2026-03-20 | 2026-07-01 |  |  |  |  |  |  |  |  |  |  |  |  |  |  |  |  |  |  |  |  |  |  |  |  |
| 17_CN15020 |  | Subway Link Tunnel: Prepare the final alignment of SMA base course along T211 entrance for Stage 6 | 45d | 2026-03-20 | 2026-05-03 | 17_CN15010, 17_CN13980 | 214d | 0d | CR117_Cost Loading [523894]; GW (C&S) [416 h]; Excavation Team [416 h]; CR117 WEIGHTAGE [2999.2 h] | 523,894 | UDF_G3 | CN | CRBRH | ENA | GENL | GEN | ZL | RD | GEN | 13 | CR |  |  |  |  |  |  |  |  |
| 17_CN15030 |  | Subway Link Tunnel: Prepare the final alignment of SMA drains along T211 entrance for Stage 6 | 45d | 2026-05-04 | 2026-06-17 | 17_CN15020 | 214d | 0d | CR117_Cost Loading [523894]; GW (C&S) [416 h]; CR117 WEIGHTAGE [2999.2 h] | 523,894 | UDF_G3 | CN | CRBRH | ENA | GENL | GEN | ZL | RD | GEN | 13 | CR |  |  |  |  |  |  |  |  |
| 17_CN15040 |  | Subway Link Tunnel: Diversion Road Wearing course, Street Furniture for Stage 6 | 16d | 2026-05-04 | 2026-05-19 | 17_CN15020 | 243d | 29d | CR117_Cost Loading [186274]; GW (C&S) [128 h]; CR117 WEIGHTAGE [2599.6 h] | 186,274 | UDF_G3 | CN | CRBRH | ENA | GENL | GEN | ZL | RD | GEN | 13 | CR | A.07 |  |  |  |  |  |  |  |
| 17_CN15050 |  | Subway Link Tunnel: Diversion Road - Preparation to open to Traffic for Stage 6 | 14d | 2026-06-18 | 2026-07-01 | 17_CN15030, 17_CN15040 | 214d | 119d | CR117_Cost Loading [162989]; GW (C&S) [112 h]; CR117 WEIGHTAGE [2269.76 h] | 162,989 | UDF_G3 | CN | CRBRH | ENA | GENL | GEN | ZL | RD | GEN | 13 | CR | A.07 | UDF_G3 |  |  |  |  |  |  |
|  | 6 | **WEST C&C TUNNEL** |  | 2022-07-31 | 2026-12-08 |  |  |  |  |  |  |  |  |  |  |  |  |  |  |  |  |  |  |  |  |  |  |  |  |
|  | 1 | **WEST C&C STAGE 0** |  | 2022-07-31 | 2023-03-21 |  |  |  |  |  |  |  |  |  |  |  |  |  |  |  |  |  |  |  |  |  |  |  |  |
|  | 1 | **WEST C&C-STGO Preparation Road Diversion for Stage 1** |  | 2022-07-31 | 2023-03-05 |  |  |  |  |  |  |  |  |  |  |  |  |  |  |  |  |  |  |  |  |  |  |  |  |
| 17_CN15070 |  | WEST C&C-STG0-Site Preparation Works | 90d | 2022-07-31 | 2022-10-28 | 17_DS10940, 17_PC10210, 17_PC10220 | 60d | 23d | CR117_Cost Loading [507976]; GW (C&S) [560 h]; CR117 WEIGHTAGE [11504.7 h] | 507,976 | UDF_G3 | CN | CRBRH | ENA | GENL | GEN | GN | RD | TD0 | 07 | CR | A.07 |  |  |  |  |  |  |  |
| 17_CN15060 |  | WEST C&C-STG0- Construct 4m Box Drain (Temporary Diversion) | 90d | 2022-11-21 | 2023-02-18 | 17_CN15070, 17_DS10770 | 37d | 0d | CR117_Cost Loading [457179]; GW (C&S) [368 h]; Excavation Team [368 h]; CR117 WEIGHTAGE [7546.96 h] | 457,179 | UDF_G3 | CN | CRBRH | ENA | GENL | GEN | GN | RD | TD0 | 07 | CR | A.07 |  | 2 | 1 | 1 |  |  |  |
| 17_CN15080 |  | WEST C&C-STG0 Construction 4m Box Drain and Commission and Road Works | 8d | 2023-02-19 | 2023-02-26 | 17_CN15060 | 37d | 0d | CR117_Cost Loading [213350]; GW (C&S) [184 h]; CR117 WEIGHTAGE [3754 h] | 213,350 | UDF_G3 | CN | CRBRH | ENA | GENL | GEN | GN | RD | TD0 | 07 | CR | A.07 |  | 2 | 1 | 1 |  |  |  |
| 17_CN15090 |  | WEST C&C-STG0-Diversion Road - Preparation to open to Traffic for Stage 1-2 | 7d | 2023-02-27 | 2023-03-05 | 17_CN15080 | 37d | 0d | CR117_Cost Loading [142233]; GW (C&S) [112 h]; CR117 WEIGHTAGE [2269.76 h] | 142,233 | UDF_G3 | CN | CRBRH | ENA | GENL | GEN | GN | RD | TD0 | 07 | CR | A.07 | UDF_G3 | 2 | 1 | 1 |  |  |  |
|  | 2 | **WEST C&C-STG0-Site Clerance and Setup for Road Diversion Stage 1** |  | 2023-03-06 | 2023-03-21 |  |  |  |  |  |  |  |  |  |  |  |  |  |  |  |  |  |  |  |  |  |  |  |  |
| 17_CN15100 |  | WEST C&C-STG0-Hoardings Installation and Set Up working area | 8d | 2023-03-06 | 2023-03-13 | 17_CN15090 | 37d | 0d | CR117_Cost Loading [131952]; GW (C&S) [64 h]; Lifting Team [64 h]; CR117 WEIGHTAGE [428.48 h] | 131,952 | UDF_G3 | CN | CRBRH | ENA | GENL | GEN | GN | GN | TD0 | 06 | CR | A.06 |  | 2 | 1 | 1 |  |  |  |
| 17_CN15110 |  | WEST C&C-STG0-Site Clearance Leveling and Plant Setup for Working Area | 8d | 2023-03-14 | 2023-03-21 | 17_CN15100 | 37d | 0d | CR117_Cost Loading [170387]; Lifting Team [64 h]; GW (C&S) [64 h]; CR117 WEIGHTAGE [428.48 h] | 170,387 | UDF_G3 | CN | CRBRH | ENA | GENL | GEN | GN | GN | TD0 | 01 | CR |  |  | 2 | 1 | 1 |  |  |  |
|  | 2 | **WEST C&C STAGE 1** |  | 2023-03-22 | 2024-01-29 |  |  |  |  |  |  |  |  |  |  |  |  |  |  |  |  |  |  |  |  |  |  |  |  |
|  | 2 | **WEST C&C-STG1-DFE / King Posts** |  | 2023-03-22 | 2023-08-11 |  |  |  |  |  |  |  |  |  |  |  |  |  |  |  |  |  |  |  |  |  |  |  |  |
| 17_CN15250 |  | WEST C&C-STG1-Zone P - DFE/King Posts - (4/10 no.) at North | 11d | 2023-03-22 | 2023-04-01 | 17_DS10730, 17_CN15110 | 94d | 0d | CR117_Cost Loading [85429]; DFE/King Post Team [88 h]; Lifting Team [88 h]; CR117 WEIGHTAGE [1422.64 h] | 85,429 | UDF_G3 | CN | CRBRH | ERS | GENL | GEN | ZP | KP | TD1 | 1 | CR |  |  |  |  |  | 1 | ZP |  |
| 17_CN15260 |  | WEST C&C-STG1-Zone H - DFE/King Posts - (14/24 no.) at East | 32d | 2023-04-02 | 2023-05-03 | 17_DS10730, 17_CN15110, 17_CN15250 | 94d | 0d | CR117_Cost Loading [248522]; DFE/King Post Team [256 h]; Lifting Team [256 h]; CR117 WEIGHTAGE [4212.8 h] | 248,522 | UDF_G3 | CN | CRBRH | ERS | GENL | GEN | ZH | KP | TD1 | 1 | CR |  |  |  |  |  | 1 | ZH |  |
| 17_CN15270 |  | WEST C&C-STG1-Zone J - DFE/King Posts - (29 no.) and BP (7 no.) to minimise tunnel settlement | 84d | 2023-05-04 | 2023-07-26 | 17_DS10730, 17_CN15110, 17_CN15260 | 94d | 0d | CR117_Cost Loading [1912953]; DFE/King Post Team [672 h]; Lifting Team [672 h]; CR117 WEIGHTAGE [11121.9 h] | 1,912,953 | UDF_G3 | CN | CRBRH | ERS | GENL | GEN | ZJ | KP | TD1 | 1 | CR |  |  |  |  |  | 1 | ZJ |  |
| 17_CN15280 |  | WEST C&C-STG1-Zone K - DFE/King Posts - (6/6 no.) | 16d | 2023-07-27 | 2023-08-11 | 17_CN15110, 17_CN15270, 17_DS10730 | 94d | 0d | CR117_Cost Loading [124261]; Lifting Team [128 h]; DFE/King Post Team [128 h]; CR117 WEIGHTAGE [2086.88 h] | 124,261 | UDF_G3 | CN | CRBRH | ERS | GENL | GEN | ZK | KP | TD1 | 1 | CR |  |  |  |  |  | 1 | ZK |  |
|  | 1 | **WEST C&C-STG1-ERSS SBP and DWall Works** |  | 2023-03-22 | 2023-12-30 |  |  |  |  |  |  |  |  |  |  |  |  |  |  |  |  |  |  |  |  |  |  |  |  |
| 17_CN15120 |  | WEST C&C-STG1- W1 SBP (10 nos with 1 Rig; 0.5/d/Rig) | 20d | 2023-03-22 | 2023-04-10 | 17_CN15110, 17_CN10300 | 46d | 0d | CR117_Cost Loading [498733]; SBP Team [184 h]; CR117 WEIGHTAGE [5920.8 h] | 498,733 | UDF_G3 | CN | CRBRH | ERS | GENL | GEN | ZH | SE | TD1 | 2 | CR | D1.4 |  |  |  |  | 1 |  | 1 |
| 17_CN15150 |  | WEST C&C-STG1- W2 SBP (53 nos with 2 Rigs; 0.5/d/Rig) | 53d | 2023-04-11 | 2023-06-02 | 17_CN15120 | 46d | 0d | CR117_Cost Loading [2643287]; SBP Team [488 h]; CR117 WEIGHTAGE [29169.4 h] | 2,643,287 | UDF_G3 | CN | CRBRH | ERS | GENL | GEN | ZH | SE | TD1 | 2 | CR | D1.4 |  |  |  |  | 1 |  | 1 |
| 17_CN15190 |  | WEST C&C-STG1- W3 SBP (44 nos with 1 Rig; 0.5/d/Rig) | 88d | 2023-04-11 | 2023-07-07 | 17_CN15120 | 207d | 0d | CR117_Cost Loading [2194427]; SBP Team [912 h]; CR117 WEIGHTAGE [30214.5 h] | 2,194,427 | UDF_G3 | CN | CRBRH | ERS | GENL | GEN | ZH | SE | TD1 | 2 | CR | D1.4 |  |  |  |  | 1 |  |  |
| 17_CN15140 |  | WEST C&C-STG1- W4 DW [ 30m@1.2mthk, 28m@1.5mthk] (0.8/d/Rig) | 70d | 2023-05-23 | 2023-07-31 | 17_DS10730, 17_CN15110, 17_CN14450 | 41d | 0d | CR117_Cost Loading [1983461]; D Wall Team [448 h]; CR117 WEIGHTAGE [17739.4 h] | 1,983,461 | UDF_G3 | CN | CRBRH | ERS | GENL | GEN | ZP | DW | TD1 | 1 | CR | D1.4 |  | 2 | 1 |  |  |  |  |
| 17_CN15230 |  | WEST C&C-STG1- W5 SBP (45 nos with 2 Rig; 0.5/d/Rig) | 90d | 2023-06-03 | 2023-08-31 | 17_CN15150 | 316d | 0d | CR117_Cost Loading [2593414]; SBP Team [968 h]; CR117 WEIGHTAGE [32162.1 h] | 2,593,414 | UDF_G3 | CN | CRBRH | ERS | GENL | GEN | ZH | SE | TD1 | 2 | CR | D1.4 |  |  |  |  | 1 |  |  |
| 17_CN15200 |  | WEST C&C-STG1- W7 SBP (38 nos with 1 Rig; 0.5/d/Rig) | 76d | 2023-07-08 | 2023-09-21 | 17_GN10940, 17_CN15190 | 239d | 0d | CR117_Cost Loading [1895187]; SBP Team [704 h]; CR117 WEIGHTAGE [23566.6 h] | 1,895,187 | UDF_G3 | CN | CRBRH | ERS | GENL | GEN | ZJ | SE | TD1 | 2 | CR | D1.4 |  |  |  |  | 1 |  |  |
| 17_CN15160 |  | WEST C&C-STG1- W6 DW (6m) [1.2mthk] (0.8/d/Rig) | 7d | 2023-08-01 | 2023-08-07 | 17_CN15140, 17_CN15110, 17_CN10300 | 41d | 0d | CR117_Cost Loading [396692]; D Wall Team [56 h]; CR117 WEIGHTAGE [1870.72 h] | 396,692 | UDF_G3 | CN | CRBRH | ERS | GENL | GEN | ZP | DW | TD1 | 1 | CR | D1.4 |  | 2 | 1 |  |  |  | 1 |
| 17_CN19560 |  | WEST C&C-STG1- W14 SBP (58 nos with 2 Rig; 0.5/d/Rig) | 58d | 2023-09-22 | 2023-11-18 | 17_CN15200 | 239d | 0d | CR117_Cost Loading [2892654]; SBP Team [704 h]; CR117 WEIGHTAGE [23566.6 h] | 2,892,654 | UDF_G3 | CN | CRBRH | ERS | GENL | GEN | ZJ | SE | TD1 | 2 | CR | D1.4 |  |  |  |  | 1 |  |  |
| 17_CN19570 |  | WEST C&C-STG1- W15 SBP (42 nos with 2 Rig; 0.5/d/Rig) | 42d | 2023-11-19 | 2023-12-30 | 17_CN19560 | 239d | 0d | CR117_Cost Loading [2094681]; SBP Team [704 h]; CR117 WEIGHTAGE [23566.6 h] | 2,094,681 | UDF_G3 | CN | CRBRH | ERS | GENL | GEN | ZJ | SE | TD1 | 2 | CR | D1.4 |  |  |  |  | 1 |  |  |

| ID | WBS | Activity | Duration | Start | Finish | Predecessors | Total float | Free float | Resources | Cost | Check | SBP and KP | PHASE | AREA | SUB-PHASE | SUB AREA | LOCATION | LOCATION DETAILS | SUB-LOCATION DETAILS | CR-117 - FOT | LINE | Text 2 | Cr117 BSC Stn | BOQ Item | MAJOR WORKS | Check 2 (Original Duration) | STAGE |
| --- | --- | --- | --- | --- | --- | --- | --- | --- | --- | --- | --- | --- | --- | --- | --- | --- | --- | --- | --- | --- | --- | --- | --- | --- | --- | --- | --- |
|  | 4 | **WEST C&C-STG1-ERSS-Fissure Grouting Works** |  | 2023-04-11 | 2024-01-29 |  |  |  |  |  |  |  |  |  |  |  |  |  |  |  |  |  |  |  |  |  |  |
| 17_CN15130 |  | WEST C&C-STG1-Fissure Grouting W1 SBP (10 nos; 1.4 no/d) | 7d | 2023-04-11 | 2023-04-17 | 17_CN15120, 17_PC10060 | 130d | 84d | CR117_Cost Loading [58171]; Fissure Grouting Team [128 h]; CR117 WEIGHTAGE [1172.4 h] | 58,171 | UDF_G3 | 1 | CN | CRBRH | ERS | GENL | GEN | ZH | TD1 | 3 | CR |  |  |  |  |  |  |
| 17_CN15170 |  | WEST C&C-STG1-Fissure Grouting W2 SBP (53 nos; 1.4 no/d) | 38d | 2023-06-03 | 2023-07-10 | 17_CN15150 | 46d | 0d | CR117_Cost Loading [308307]; Fissure Grouting Team [368 h]; CR117 WEIGHTAGE [3478.4 h] | 308,307 | UDF_G3 | 1 | CN | CRBRH | ERS | GENL | GEN | ZH | TD1 | 3 | CR |  |  |  |  |  |  |
| 17_CN15210 |  | WEST C&C-STG1-Fissure Grouting W3 SBP (44 nos; 1.4 no/d) | 32d | 2023-07-08 | 2023-08-08 | 17_CN15190 | 418d | 332d | CR117_Cost Loading [255953]; Fissure Grouting Team [672 h]; CR117 WEIGHTAGE [6989.2 h] | 255,953 | UDF_G3 | 1 | CN | CRBRH | ERS | GENL | GEN | ZH | TD1 | 3 | CR |  |  |  |  |  |  |
| 17_CN15180 |  | WEST C&C-STG1-Fissure Grouting W4 DW (58m; 1.4 m/d) | 40d | 2023-08-08 | 2023-09-16 | 17_CN15140, 17_CN15160 | 41d | 0d | CR117_Cost Loading [337393]; Fissure Grouting Team [320 h]; CR117 WEIGHTAGE [3035.6 h] | 337,393 | UDF_G3 |  | CN | CRBRH | ERS | GENL | GEN | ZP | TD1 | 3 | CR | 2 | 1 |  |  |  |  |
| 17_CN15240 |  | WEST C&C-STG1-Fissure Grouting W5 SBP (45 nos; 1.4 no/d) | 38d | 2023-09-01 | 2023-10-08 | 17_CN15230 | 357d | 271d | CR117_Cost Loading [302490]; Fissure Grouting Team [744 h]; CR117 WEIGHTAGE [7653.28 h] | 302,490 | UDF_G3 | 1 | CN | CRBRH | ERS | GENL | GEN | ZH | TD1 | 3 | CR |  |  |  |  |  |  |
| 17_CN19550 |  | WEST C&C-STG1-Fissure Grouting W6 DW (6m; 1.4 m/d) | 4d | 2023-09-17 | 2023-09-20 | 17_CN15160, 17_CN15180 | 303d | 1d | CR117_Cost Loading [34903]; Fissure Grouting Team [744 h]; CR117 WEIGHTAGE [7653.28 h] | 34,903 | UDF_G3 | 1 | CN | CRBRH | ERS | GENL | GEN | ZH | TD1 | 3 | CR |  |  |  |  |  |  |
| 17_CN15220 |  | WEST C&C-STG1-Fissure Grouting W7 SBP (38 nos; 1.4 no/d) | 67d | 2023-09-22 | 2023-11-27 | 17_CN15200, 17_CN19550 | 302d | 216d | CR117_Cost Loading [221050]; Fissure Grouting Team [536 h]; CR117 WEIGHTAGE [5534.96 h] | 221,050 | UDF_G3 | 1 | CN | CRBRH | ERS | GENL | GEN | ZJ | TD1 | 3 | CR |  |  |  |  |  |  |
| 17_CN19580 |  | WEST C&C-STG1-Fissure Grouting W14 SBP (58 nos; 1.4 no/d) | 41d | 2023-11-19 | 2023-12-29 | 17_CN19560 | 368d | 234d | CR117_Cost Loading [337393]; Fissure Grouting Team [744 h]; CR117 WEIGHTAGE [7653.28 h] | 337,393 | UDF_G3 | 1 | CN | CRBRH | ERS | GENL | GEN | ZK | TD1 | 3 | CR |  |  |  |  |  |  |
| 17_CN19590 |  | WEST C&C-STG1-Fissure Grouting W15 SBP (42 nos; 1.4 no/d) | 30d | 2023-12-31 | 2024-01-29 | 17_CN19570 | 239d | 153d | CR117_Cost Loading [244319]; Fissure Grouting Team [744 h]; CR117 WEIGHTAGE [7653.28 h] | 244,319 | UDF_G3 | 1 | CN | CRBRH | ERS | GENL | GEN | ZK | TD1 | 3 | CR |  |  |  |  |  |  |
|  | 3 | **WEST C&C STAGE 2** |  | 2023-07-11 | 2024-04-10 |  |  |  |  |  |  |  |  |  |  |  |  |  |  |  |  |  |  |  |  |  |  |
|  | 11 | **WEST C&C-STG2-Preparation Road Diversion for Stage 2** |  | 2023-07-11 | 2023-10-20 |  |  |  |  |  |  |  |  |  |  |  |  |  |  |  |  |  |  |  |  |  |  |
| 17_CN15290 |  | WEST C&C-STG1-Diversion of Road Drains and Base Course Construaction for Stage 2 at SMW area | 21d | 2023-07-11 | 2023-07-31 | 17_CN15170, 17_CN15130 | 46d | 0d | CR117_Cost Loading [406381]; GW (C&S) [192 h]; CR117 WEIGHTAGE [3918.88 h] | 406,381 | UDF_G3 |  | CN | CRBRH | ENA | GENL | GEN | GN | TD2 | 07 | CR |  |  | A.07 | RD |  |  |
| 17_CN15300 |  | WEST C&C-STG1--Diversion of Road Drains and Base Course Construaction for Stage 2 at T211 area | 18d | 2023-09-17 | 2023-10-04 | 17_CN15290, 17_CN15180 | 41d | 0d | CR117_Cost Loading [304786]; Excavation Team [192 h]; GW (C&S) [192 h]; CR117 WEIGHTAGE [3918.88 h] | 304,786 | UDF_G3 |  | CN | CRBRH | ENA | GENL | GEN | GN | TD2 | 07 | CR | 2 | 1 | A.07 | RD |  |  |
| 17_CN15310 |  | WEST C&C-STG1-Diversion Road Wearing course, Street Furniture for Stage 2 | 9d | 2023-10-05 | 2023-10-13 | 17_CN15300 | 41d | 0d | CR117_Cost Loading [121914]; GW (C&S) [88 h]; CR117 WEIGHTAGE [1775.12 h] | 121,914 | UDF_G3 |  | CN | CRBRH | ENA | GENL | GEN | GN | TD2 | 07 | CR | 2 | 1 | A.07 | RD |  |  |
| 17_CN15320 |  | WEST C&C-STG1-Diversion Road - Preparation to open to Traffic for Stage 2 | 7d | 2023-10-14 | 2023-10-20 | 17_CN15310, 17_CN15300, 17_PC10270 | 41d | 0d | CR117_Cost Loading [101595]; GW (C&S) [112 h]; CR117 WEIGHTAGE [2269.76 h] | 101,595 | UDF_G3 |  | CN | CRBRH | ENA | GENL | GEN | GN | TD2 | 07 | CR | 2 | 1 | A.07 | RD | UDF_G3 |  |
|  | 1 | **WEST C&C-STG2-Site Clerance and Setup** |  | 2023-10-21 | 2023-11-03 |  |  |  |  |  |  |  |  |  |  |  |  |  |  |  |  |  |  |  |  |  |  |
| 17_CN15330 |  | WEST C&C-STG2-Hoardings Installation, Utilities Detection for Working Area | 7d | 2023-10-21 | 2023-10-27 | 17_CN15320, 17_CN10020 | 41d | 0d | CR117_Cost Loading [115458]; Lifting Team [64 h]; GW (C&S) [64 h]; CR117 WEIGHTAGE [428.48 h] | 115,458 | UDF_G3 |  | CN | CRBRH | ENA | GENL | GEN | GN | TD2 | 06 | CR | 2 | 1 | A.06 | GN |  |  |
| 17_CN15340 |  | WEST C&C-STG2-Site Clearance Leveling and Plant Setup for Working Area | 7d | 2023-10-28 | 2023-11-03 | 17_CN15330, 17_GN10810 | 41d | 0d | CR117_Cost Loading [149089]; GW (C&S) [64 h]; Lifting Team [64 h]; CR117 WEIGHTAGE [428.48 h] | 149,089 | UDF_G3 |  | CN | CRBRH | ENA | GENL | GEN | GN | TD2 | 01 | CR | 2 | 1 |  | GN |  |  |
|  | 9 | **WEST C&C-STG2-DFE / King Posts** |  | 2023-11-04 | 2023-12-05 |  |  |  |  |  |  |  |  |  |  |  |  |  |  |  |  |  |  |  |  |  |  |
| 17_CN15430 |  | WEST C&C-STG2-Zone P - DFE/King Posts - (6/10 no.) at South | 14d | 2023-11-04 | 2023-11-17 | 17_CN15340, 17_CN15320, 17_DS10730 | 135d | 0d | CR117_Cost Loading [108728]; DFE/King Post Team [112 h]; CR117 WEIGHTAGE [1821.12 h] | 108,728 | UDF_G3 | 1 | CN | CRBRH | ERS | GENL | GEN | ZP | TD2 | 1 | CR |  |  |  | KP |  | ZP |
| 17_CN15440 |  | WEST C&C-STG2-Zone H - DFE/King Posts - (8/24 no.) at West | 18d | 2023-11-18 | 2023-12-05 | 17_CN15430, 17_DS10730, 17_CN15320 | 154d | 66d | CR117_Cost Loading [139793]; DFE/King Post Team [144 h]; CR117 WEIGHTAGE [2352.64 h] | 139,793 | UDF_G3 | 1 | CN | CRBRH | ERS | GENL | GEN | ZH | TD2 | 1 | CR |  |  |  | KP |  | ZH |
|  | 2 | **WEST C&C-STG2-ERSS SBP and DWall Works** |  | 2023-11-04 | 2023-12-30 |  |  |  |  |  |  |  |  |  |  |  |  |  |  |  |  |  |  |  |  |  |  |
| 17_CN15350 |  | WEST C&C-STG2- W8 DW (32m) [1.2mthk] (0.8m/d/Rig) | 40d | 2023-11-04 | 2023-12-13 | 17_CN15340, 17_CN15160, 17_GN10850, 17_GN10840, 17_GN10790, 17_GN10780 | 41d | 0d | CR117_Cost Loading [2115691]; D Wall Team [256 h]; CR117 WEIGHTAGE [8333.6 h] | 2,115,691 | UDF_G3 |  | CN | CRBRH | ERS | GENL | GEN | ZP | TD2 | 1 | CR | 2 | 1 | D1.4 | DW |  |  |
| 17_CN15370 |  | WEST C&C-STG2- W9 SBP (57 nos with 2 Rigs; 0.5/d/Rig) | 57d | 2023-11-04 | 2023-12-30 | 17_CN15340, 17_GN10850, 17_GN10840, 17_GN10790, 17_GN10780, 17_CN15190 | 88d | 0d | CR117_Cost Loading [2842781]; SBP Team [536 h]; CR117 WEIGHTAGE [31571.6 h] | 2,842,781 | UDF_G3 | 1 | CN | CRBRH | ERS | GENL | GEN | ZH | TD2 | 2 | CR |  |  | D1.4 | SE |  |  |
| 17_CN15400 |  | WEST C&C-STG2- W10 SBP (43 nos with 2 Rig; 0.5/d/Rig) | 43d | 2023-11-04 | 2023-12-16 | 17_CN15230, 17_CN15340 | 252d | 0d | CR117_Cost Loading [2144554]; SBP Team [760 h]; CR117 WEIGHTAGE [26027.1 h] | 2,144,554 | UDF_G3 | 1 | CN | CRBRH | ERS | GENL | GEN | ZK | TD2 | 2 | CR |  |  | D1.4 | SE |  |  |

| ID | WBS | Activity | Duration | Start | Finish | Predecessors | Total float | Free float | Resources | Cost | Text 2 | Check | PHASE | AREA | SUB-PHASE | SUB AREA | LOCATION | LOCATION DETAILS | SUB-LOCATION DETAILS | CR-117 - FOT | LINE | SBP and KP | MAJOR WORKS | user_text1 | STAGE | BOQ Item | Check 2 (Original Duration) | Text 1 | Text 3 |
| --- | --- | --- | --- | --- | --- | --- | --- | --- | --- | --- | --- | --- | --- | --- | --- | --- | --- | --- | --- | --- | --- | --- | --- | --- | --- | --- | --- | --- | --- |
|  | 6 | **WEST C&C-STG2-ERSS-Fissure Grouting Works** |  | 2023-12-14 | 2024-02-09 |  |  |  |  |  |  |  |  |  |  |  |  |  |  |  |  |  |  |  |  |  |  |  |  |
| 17_CN15360 |  | WEST C&C-STG2-Fissure Grouting W8 DW (32m; 1.4m/d) | 23d | 2023-12-14 | 2024-01-05 | 17_CN15350 | 86d | 0d | CR117_Cost Loading [186148]; Fissure Grouting Team [192 h]; CR117 WEIGHTAGE [1778.16 h] | 186,148 | 2 | UDF_G3 | CN | CRBRH | ERS | GENL | GEN | ZP | TD2 | 3 | CR |  |  |  |  |  |  |  |  |
| 17_CN15420 |  | WEST C&C-STG2-Fissure Grouting W10 SBP (43 nos; 1.4 no/d) | 31d | 2023-12-17 | 2024-01-16 | 17_CN15400 | 252d | 166d | CR117_Cost Loading [250136]; Fissure Grouting Team [560 h]; CR117 WEIGHTAGE [5894.64 h] | 250,136 |  | UDF_G3 | CN | CRBRH | ERS | GENL | GEN | ZK | TD2 | 3 | CR | 1 |  |  |  |  |  |  |  |
| 17_CN15380 |  | WEST C&C-STG2-Fissure Grouting W9 SBP (57 nos; 1.4 no/d) | 41d | 2023-12-31 | 2024-02-09 | 17_CN15370 | 88d | 0d | CR117_Cost Loading [331575]; Fissure Grouting Team [392 h]; CR117 WEIGHTAGE [5312.96 h] | 331,575 |  | UDF_G3 | CN | CRBRH | ERS | GENL | GEN | ZH | TD2 | 3 | CR | 1 |  |  |  |  |  |  |  |
|  | 3 | **WEST C&C-STG2-Traffic Decking Construction** |  | 2024-01-06 | 2024-02-21 |  |  |  |  |  |  |  |  |  |  |  |  |  |  |  |  |  |  |  |  |  |  |  |  |
| 17_CN15450 |  | WEST C&C-STG2-Excavation and Construction of Traffic Decking at Zone P South | 16d | 2024-01-06 | 2024-01-21 | 17_CN15360, 17_CN15430 | 86d | 0d | CR117_Cost Loading [126653]; Excavation Team [128 h]; CR117 WEIGHTAGE [895.92 h] | 126,653 | 2 | UDF_G3 | CN | CRBRH | EXC | GENL | GEN | ZP | TD2 | 2 | CR |  | DK |  |  |  |  |  |  |
| 17_CN15460 |  | WEST C&C-STG2-Excavation and Construction of Traffic Decking at Zone H South West | 12d | 2024-02-10 | 2024-02-21 | 17_CN15380, 17_CN15440 | 88d | 0d | CR117_Cost Loading [126653]; Excavation Team [128 h]; CR117 WEIGHTAGE [895.92 h] | 126,653 |  | UDF_G3 | CN | CRBRH | EXC | GENL | GEN | ZH | TD2 | 2 | CR |  | DK |  |  |  |  |  |  |
|  | 5 | **WEST C&C STG2-Grout Block Works** |  | 2024-03-26 | 2024-04-10 |  |  |  |  |  |  |  |  |  |  |  |  |  |  |  |  |  |  |  |  |  |  |  |  |
| 17_CN18780 |  | WEST C&C-STG2-Zone P - Retriving Shaft - Grout Block Works | 16d | 2024-03-26 | 2024-04-10 | 17_CN15510, 17_CN15360, 17_CN15180, 17_DS10590, 17_PC10050 | 488d | 81d | CR117_Cost Loading [500000]; GW (C&S) [128 h]; CR117 WEIGHTAGE [895.92 h] | 500,000 |  | UDF_G3 | CN | CRBRH | ENA | GENL | GEN | ZP | TD2 | 04 | CR |  | GI | Ground Improvement Work | ZP |  |  |  |  |
|  | 4 | **WEST C&C STAGE 3A** |  | 2024-01-22 | 2024-06-14 |  |  |  |  |  |  |  |  |  |  |  |  |  |  |  |  |  |  |  |  |  |  |  |  |
|  | 11 | **WEST C&C-STG3A-Preparation Road Diversion for Stage 3A** |  | 2024-01-22 | 2024-03-17 |  |  |  |  |  |  |  |  |  |  |  |  |  |  |  |  |  |  |  |  |  |  |  |  |
| 17_CN15470 |  | WEST C&C-STG2-Construct Road (Base course) Diversion for Stage 3A | 26d | 2024-01-22 | 2024-02-16 | 17_CN15450 | 86d | 0d | CR117_Cost Loading [325105]; GW (C&S) [256 h]; CR117 WEIGHTAGE [5238.16 h] | 325,105 | 2 | UDF_G3 | CN | CRBRH | ENA | GENL | GEN | GN | TD3A | 07 | CR |  | RD |  |  | A.07 |  |  |  |
| 17_CN15480 |  | WEST C&C-STG2-Diversion Road Drains for Stage 3A | 21d | 2024-02-17 | 2024-03-08 | 17_CN15470 | 86d | 0d | CR117_Cost Loading [325105]; Lifting Team [256 h]; GW (C&S) [256 h]; CR117 WEIGHTAGE [5238.16 h] | 325,105 | 2 | UDF_G3 | CN | CRBRH | ENA | GENL | GEN | GN | TD3A | 07 | CR |  | RD |  |  | A.07 |  |  |  |
| 17_CN15490 |  | WEST C&C-STG2-Diversion Road Wearing course, Street Furniture for Stage 3A | 14d | 2024-02-22 | 2024-03-06 | 17_CN15470, 17_CN15460 | 88d | 2d | CR117_Cost Loading [162553]; GW (C&S) [128 h]; Lifting Team [128 h]; CR117 WEIGHTAGE [2599.6 h] | 162,553 |  | UDF_G3 | CN | CRBRH | ENA | GENL | GEN | GN | TD3A | 07 | CR |  | RD |  |  | A.07 |  |  |  |
| 17_CN15500 |  | WEST C&C-STG2-Diversion Road - Preparation to open to Traffic for Stage 3A | 9d | 2024-03-09 | 2024-03-17 | 17_CN15490, 17_CN15480 | 86d | 0d | CR117_Cost Loading [142233]; GW (C&S) [112 h]; CR117 WEIGHTAGE [2269.76 h] | 142,233 | 2 | UDF_G3 | CN | CRBRH | ENA | GENL | GEN | GN | TD3A | 07 | CR |  | RD |  |  | A.07 | UDF_G3 |  |  |
|  | 1 | **WEST C&C-STG-3A-ERSS-SBP or D Wall Works** |  | 2024-03-18 | 2024-05-09 |  |  |  |  |  |  |  |  |  |  |  |  |  |  |  |  |  |  |  |  |  |  |  |  |
| 17_CN15390 |  | WEST C&C-STG3A- W13 SBP (53 nos with 2 Rigs; 0.5/d/Rig) | 53d | 2024-03-18 | 2024-05-09 | 17_CN15500, 17_CN15370 | 102d | 0d | CR117_Cost Loading [2643287]; SBP Team [968 h]; CR117 WEIGHTAGE [32675 h] | 2,643,287 |  | UDF_G3 | CN | CRBRH | ENA | GENL | GEN | ZK | TD3A | 2 | CR | 1 | SE |  |  | D1.4 |  |  |  |
| 17_CN15510 |  | WEST C&C-STG3A- W12 DW (6m) [1.2mthk] (0.8/d/Rig) | 8d | 2024-03-18 | 2024-03-25 | 17_CN15500, 17_CN10040, 17_CN15350 | 97d | 0d | CR117_Cost Loading [396692]; D Wall Team [112 h]; CR117 WEIGHTAGE [3780.32 h] | 396,692 | 1 | UDF_G3 | CN | CRBRH | ENA | GENL | GEN | ZP | TD3A | 1 | CR |  | DW |  |  | D1.4 |  | 1 | 1 |
| 17_CN15520 |  | WEST C&C-STG3A- W11 SBP (10 nos with 1 Rig; 0.5/d/Rig) | 20d | 2024-03-18 | 2024-04-06 | 17_CN15370, 17_CN15500, 17_CN10040 | 86d | 0d | CR117_Cost Loading [498733]; SBP Team [184 h]; CR117 WEIGHTAGE [5920.8 h] | 498,733 | 2 | UDF_G3 | CN | CRBRH | ENA | GENL | GEN | ZH | TD3A | 2 | CR | 1 | SE |  |  | D1.4 |  |  |  |
|  | 5 | **WEST C&C-STG3A-ERSS-Fissure Grouting Works** |  | 2024-03-26 | 2024-06-14 |  |  |  |  |  |  |  |  |  |  |  |  |  |  |  |  |  |  |  |  |  |  |  |  |
| 17_CN15530 |  | WEST C&C-STG3A-Fissure Grouting W12 DW (6m) [1.2mthk] (1.4m/d) | 4d | 2024-03-26 | 2024-03-29 | 17_CN15500, 17_CN10040, 17_CN15510 | 101d | 0d | CR117_Cost Loading [34903]; Fissure Grouting Team [112 h]; CR117 WEIGHTAGE [1332.08 h] | 34,903 | 1 | UDF_G3 | CN | CRBRH | ENA | GENL | GEN | ZP | TD3A | 3 | CR |  |  |  |  |  |  |  | 1 |
| 17_CN15540 |  | WEST C&C-STG3A-Fissure Grouting 11 SBP (9m; 1.4 no/d) | 7d | 2024-04-07 | 2024-04-13 | 17_CN15520 | 86d | 0d | CR117_Cost Loading [52354]; Fissure Grouting Team [88 h]; CR117 WEIGHTAGE [1018.64 h] | 52,354 | 2 | UDF_G3 | CN | CRBRH | ENA | GENL | GEN | ZH | TD3A | 3 | CR | 1 |  |  |  |  |  |  |  |
| 17_CN15410 |  | WEST C&C-STG3A-Fissure Grouting W13 SBP (50m; 1.4 no/d) | 36d | 2024-05-10 | 2024-06-14 | 17_CN15390 | 102d | 16d | CR117_Cost Loading [290856]; Fissure Grouting Team [696 h]; CR117 WEIGHTAGE [7348.8 h] | 290,856 |  | UDF_G3 | CN | CRBRH | ENA | GENL | GEN | ZK | TD3A | 3 | CR | 1 |  |  |  |  |  |  |  |
|  | 2 | **WEST C&C-STG3A-DEF/King Posts** |  | 2024-03-18 | 2024-03-24 |  |  |  |  |  |  |  |  |  |  |  |  |  |  |  |  |  |  |  |  |  |  |  |  |
| 17_CN15550 |  | WEST C&C-STG3A-Zone H - DFE/King Posts - (2/24 no.) remainder | 7d | 2024-03-18 | 2024-03-24 | 17_CN15500, 17_DS10730 | 106d | 20d | CR117_Cost Loading [54364]; DFE/King Post Team [56 h]; CR117 WEIGHTAGE [891.12 h] | 54,364 |  | UDF_G3 | CN | CRBRH | ENA | GENL | GEN | ZH | TD3A | 1 | CR | 1 | KP |  | ZH |  |  |  |  |

| ID | WBS | Activity | Duration | Start | Finish | Predecessors | Total float | Free float | Resources | Cost | Text 3 | Text 2 | Check | PHASE | AREA | SUB-PHASE | SUB AREA | LOCATION | LOCATION DETAILS | MAJOR WORKS | SUB-LOCATION DETAILS | CR-117 - FOT | LINE | BOQ Item | Check 2 (Original Duration) | STAGE |
| --- | --- | --- | --- | --- | --- | --- | --- | --- | --- | --- | --- | --- | --- | --- | --- | --- | --- | --- | --- | --- | --- | --- | --- | --- | --- | --- |
|  | 3 | **WEST C&C-STG3A-Traffic Decking Construction** |  | 2024-03-30 | 2024-04-29 |  |  |  |  |  |  |  |  |  |  |  |  |  |  |  |  |  |  |  |  |  |
| 17_CN15560 |  | WEST C&C-STG3A-Excavation and Construction of Traffic Decking at Zone P Remainder Area | 16d | 2024-03-30 | 2024-04-14 | 17_CN15530 | 101d | 15d | CR117_Cost Loading [126653]; Excavation Team [128 h]; Lifting Team [128 h]; CR117 WEIGHTAGE [895.92 h] | 126,653 | 1 | 1 | UDF_G3 | CN | CRBRH | EXC | GENL | GEN | ZP | DK | TD3A | 2 | CR |  |  |  |
| 17_CN15570 |  | WEST C&C-STG3A-Excavation and Construction of Traffic Decking at Zone H Remainder Area | 16d | 2024-04-14 | 2024-04-29 | 17_CN15540, 17_CN15550 | 86d | 0d | CR117_Cost Loading [126653]; Excavation Team [128 h]; Lifting Team [128 h]; CR117 WEIGHTAGE [895.92 h] | 126,653 |  | 2 | UDF_G3 | CN | CRBRH | EXC | GENL | GEN | ZH | DK | TD3A | 2 | CR |  |  |  |
|  | 5 | **WEST C&C STAGE 4** |  | 2024-04-30 | 2024-06-30 |  |  |  |  |  |  |  |  |  |  |  |  |  |  |  |  |  |  |  |  |  |
|  | 11 | **WEST C&C-STG4- Preparation Road Diversion for Stage 4** |  | 2024-04-30 | 2024-06-30 |  |  |  |  |  |  |  |  |  |  |  |  |  |  |  |  |  |  |  |  |  |
| 17_CN15580 |  | WEST C&C-STG3A-Construct Road (Base course) Diversion for Stage 4 | 21d | 2024-04-30 | 2024-05-20 | 17_CN15560, 17_CN15570 | 86d | 0d | CR117_Cost Loading [244484]; GW (C&S) [256 h]; CR117 WEIGHTAGE [5238.16 h] | 244,484 | 1 | 2 | UDF_G3 | CN | CRBRH | ENA | GENL | GEN | GN | RD | TD4 | 13 | CR | A.07 |  |  |
| 17_CN15590 |  | WEST C&C-STG3A-Diversion Road Drains for Stage 4 | 16d | 2024-05-21 | 2024-06-05 | 17_CN15580 | 86d | 0d | CR117_Cost Loading [186274]; GW (C&S) [256 h]; CR117 WEIGHTAGE [5238.16 h] | 186,274 | 1 | 2 | UDF_G3 | CN | CRBRH | ENA | GENL | GEN | GN | RD | TD4 | 13 | CR | A.07 |  |  |
| 17_CN15600 |  | WEST C&C-STG3A-Diversion Road Wearing course, Street Furniture for Stage 4 | 11d | 2024-06-06 | 2024-06-16 | 17_CN15580, 17_CN15590 | 86d | 0d | CR117_Cost Loading [128063]; GW (C&S) [88 h]; Lifting Team [88 h]; CR117 WEIGHTAGE [1775.12 h] | 128,063 | 1 | 2 | UDF_G3 | CN | CRBRH | ENA | GENL | GEN | GN | RD | TD4 | 13 | CR | A.07 |  |  |
| 17_CN15610 |  | WEST C&C-STG3A-Diversion Road - Preparation to open to Traffic for Stage 4 | 14d | 2024-06-17 | 2024-06-30 | 17_CN15600 | 86d | 0d | CR117_Cost Loading [162989]; GW (C&S) [112 h]; CR117 WEIGHTAGE [2269.76 h] | 162,989 | 1 | 2 | UDF_G3 | CN | CRBRH | ENA | GENL | GEN | GN | RD | TD4 | 13 | CR | A.07 | UDF_G3 |  |
|  | 6 | **WEST C&C STAGE 5** |  | 2025-12-26 | 2026-04-22 |  |  |  |  |  |  |  |  |  |  |  |  |  |  |  |  |  |  |  |  |  |
|  | 2 | **WEST C&C-STG5-Traffic Decking Construction** |  | 2025-12-26 | 2026-01-24 |  |  |  |  |  |  |  |  |  |  |  |  |  |  |  |  |  |  |  |  |  |
| 17_CN15620 |  | Excavation and Construction of Traffic Decking at Zone P Offline Shaft Area after backfill for Stage 5 | 30d | 2025-12-26 | 2026-01-24 | 17_CN16110 | 86d | 0d | CR117_Cost Loading [237474]; GW (C&S) [256 h]; CR117 WEIGHTAGE [1830.64 h] | 237,474 |  | 2 | UDF_G3 | CN | CRBRH | ENA | GENL | GEN | GN | DK | TD5 | 2 | CR |  |  | ZP |
|  | 11 | **WEST C&C-STG5-Preparation Road Diversion for Stage 5** |  | 2026-01-25 | 2026-04-06 |  |  |  |  |  |  |  |  |  |  |  |  |  |  |  |  |  |  |  |  |  |
| 17_CN15630 |  | WEST C&C-STG4-Diversion Road Drains for Stage 5 | 30d | 2026-01-25 | 2026-02-23 | 17_CN15620, 17_CN16110 | 86d | 0d | CR117_Cost Loading [349263]; GW (C&S) [320 h]; CR117 WEIGHTAGE [6557.44 h] | 349,263 |  | 2 | UDF_G3 | CN | CRBRH | ENA | GENL | GEN | GN | RD | TD5 | 13 | CR | A.07 |  |  |
| 17_CN15640 |  | WEST C&C-STG4-Construct Road (Base course) Diversion for Stage 5 | 16d | 2026-02-24 | 2026-03-11 | 17_CN15630 | 86d | 0d | CR117_Cost Loading [186274]; GW (C&S) [320 h]; CR117 WEIGHTAGE [6557.44 h] | 186,274 |  | 2 | UDF_G3 | CN | CRBRH | ENA | GENL | GEN | GN | RD | TD5 | 13 | CR | A.07 |  |  |
| 17_CN15650 |  | WEST C&C-STG4-Diversion Road Wearing course, Street Furniture for Stage 5 | 16d | 2026-03-12 | 2026-03-27 | 17_CN15640 | 86d | 0d | CR117_Cost Loading [186274]; GW (C&S) [128 h]; CR117 WEIGHTAGE [2599.6 h] | 186,274 |  | 2 | UDF_G3 | CN | CRBRH | ENA | GENL | GEN | GN | RD | TD5 | 13 | CR | A.07 |  |  |
| 17_CN15660 |  | WEST C&C-STG4-Diversion Road - Preparation to open to Traffic for Stage 5 | 10d | 2026-03-28 | 2026-04-06 | 17_CN15650 | 86d | 0d | CR117_Cost Loading [116421]; GW (C&S) [112 h]; CR117 WEIGHTAGE [2269.76 h] | 116,421 |  | 2 | UDF_G3 | CN | CRBRH | ENA | GENL | GEN | GN | RD | TD5 | 13 | CR | A.07 | UDF_G3 |  |
|  | 1 | **WEST C&C-STG5-Site Clerance and Setup** |  | 2026-04-07 | 2026-04-22 |  |  |  |  |  |  |  |  |  |  |  |  |  |  |  |  |  |  |  |  |  |
| 17_CN15670 |  | WEST C&C-STG5-Hoardings Installation, Utilities Detection for Working Area | 8d | 2026-04-07 | 2026-04-14 | 17_CN15660 | 112d | 0d | CR117_Cost Loading [131952]; Lifting Team [64 h]; GW (C&S) [64 h]; CR117 WEIGHTAGE [428.48 h] | 131,952 |  |  | UDF_G3 | CN | CRBRH | ENA | GENL | GEN | GN | SI | TD5 | 06 | CR | A.06 |  |  |
| 17_CN15680 |  | WEST C&C-STG5-Site Clearance Leveling and Plant Setup for Working Area | 8d | 2026-04-15 | 2026-04-22 | 17_CN15670 | 112d | 8d | CR117_Cost Loading [170387]; GW (C&S) [64 h]; Lifting Team [64 h]; CR117 WEIGHTAGE [428.48 h] | 170,387 |  |  | UDF_G3 | CN | CRBRH | ENA | GENL | GEN | GN | SI | TD5 | 01 | CR |  |  |  |
|  | 7 | **WEST C&C STAGE 6** |  | 2026-04-07 | 2026-12-08 |  |  |  |  |  |  |  |  |  |  |  |  |  |  |  |  |  |  |  |  |  |
|  | 11 | **WEST C&C-STG6- Preparation Road Diversion for Stage 6 (Final realignment of West at SMW)** |  | 2026-04-07 | 2026-11-06 |  |  |  |  |  |  |  |  |  |  |  |  |  |  |  |  |  |  |  |  |  |
| 17_CN15690 |  | WEST C&C-STG5-Removal of traffic deck at Zone H along SMW for Stage 6 | 24d | 2026-04-07 | 2026-04-30 | 17_CN10100 | 86d | 0d | CR117_Cost Loading [279410]; Lifting Team [192 h]; GW (C&S) [192 h]; CR117 WEIGHTAGE [1363.28 h] | 279,410 |  | 2 | UDF_G3 | CN | CRBRH | ENA | GENL | GEN | GN | RD | TD6 | 13 | CR |  |  | ZH |
| 17_CN15700 |  | WEST C&C-STG5-Reinstate to road final alignment and Drains along SMW for Stage 6 | 70d | 2026-05-01 | 2026-07-09 | 17_CN15690 | 86d | 0d | CR117_Cost Loading [814947]; GW (C&S) [560 h]; Lifting Team [560 h]; CR117 WEIGHTAGE [4050.96 h] | 814,947 |  | 2 | UDF_G3 | CN | CRBRH | ENA | GENL | GEN | GN | RD | TD6 | 13 | CR | A.07 |  |  |
| 17_CN15710 |  | WEST C&C-STG5-Diversion Road Wearing course, Street Furniture for Stage 6 | 16d | 2026-10-08 | 2026-10-23 | 17_CN15700, 17_CN16020, 17_GN10800 | 86d | 0d | CR117_Cost Loading [186274]; Lifting Team [128 h]; GW (C&S) [128 h]; CR117 WEIGHTAGE [895.92 h] | 186,274 |  | 2 | UDF_G3 | CN | CRBRH | ENA | GENL | GEN | GN | RD | TD6 | 13 | CR | A.07 |  |  |
| 17_CN15720 |  | WEST C&C-STG5-Diversion Road - Preparation to open to Traffic for Stage 6 | 14d | 2026-10-24 | 2026-11-06 | 17_CN15710 | 86d | 0d | CR117_Cost Loading [162989]; GW (C&S) [112 h]; CR117 WEIGHTAGE [779.04 h] | 162,989 |  | 2 | UDF_G3 | CN | CRBRH | ENA | GENL | GEN | GN | RD | TD6 | 13 | CR | A.07 | UDF_G3 |  |

| ID | WBS | Activity | Duration | Start | Finish | Predecessors | Total float | Free float | Resources | Cost | BOQ Item | Check | PHASE | AREA | SUB-PHASE | SUB AREA | LOCATION | LOCATION DETAILS | MAJOR WORKS | SUB-LOCATION DETAILS | CR-117 - FOT | LINE | Text 2 | Comments | Check 2 (Original Duration) | [UDF] Chainage Start | [UDF] Chainage Finish | STAGE |
| --- | --- | --- | --- | --- | --- | --- | --- | --- | --- | --- | --- | --- | --- | --- | --- | --- | --- | --- | --- | --- | --- | --- | --- | --- | --- | --- | --- | --- |
|  | 1 | **WEST C&C-STG6-Site Clerance and Setup** |  | 2026-11-07 | 2026-12-08 |  |  |  |  |  |  |  |  |  |  |  |  |  |  |  |  |  |  |  |  |  |  |  |
| 17_CN15730 |  | WEST C&C-STG6-Hoardings Installation and Site Clearance for Working Area | 8d | 2026-11-07 | 2026-11-14 | 17_CN15720 | 174d | 0d | CR117_Cost Loading [131952]; Lifting Team [64 h]; GW (C&S) [64 h]; CR117 WEIGHTAGE [428.48 h] | 131,952 | A.06 | UDF_G3 | CN | CRBRH | ENA | GENL | GEN | GN | SI | TD6 | 06 | CR |  |  |  |  |  |  |
| 17_CN15740 |  | WEST C&C-STG6-Remove traffic deck at Zone P and reinstate the ground at OLS | 24d | 2026-11-15 | 2026-12-08 | 17_CN15720, 17_CN15730 | 174d |  | CR117_Cost Loading [511162]; Lifting Team [192 h]; GW (C&S) [192 h]; CR117 WEIGHTAGE [1363.28 h] | 511,162 |  | UDF_G3 | CN | CRBRH | ENA | GENL | GEN | GN | SI | TD6 | 01 | CR |  |  |  |  |  |  |
|  | 9 | **WEST C&C EXCAVATION-STRUTTING-RC WORKS** |  | 2024-07-01 | 2025-06-01 |  |  |  |  |  |  |  |  |  |  |  |  |  |  |  |  |  |  |  |  |  |  |  |
|  | 1 | **WEST C&C ZONE J Excavation & Strutting-RC Works** |  | 2024-07-01 | 2025-01-20 |  |  |  |  |  |  |  |  |  |  |  |  |  |  |  |  |  |  |  |  |  |  |  |
|  | 1 | **WEST C&C ZONE J Excavation Works** |  | 2024-07-01 | 2024-10-17 |  |  |  |  |  |  |  |  |  |  |  |  |  |  |  |  |  |  |  |  |  |  |  |
| 17_CN19060 |  | West C&C Zone J - Excavate to 1m below S1 strut (Aprox 1183 m3, 250m3/d) | 5d | 2024-07-01 | 2024-07-05 | 17_CN10070, 17_CN15220, 17_CN15270, 17_CN15410, 17_CN15420, 17_PC10270, 17_CN19590 | 86d | 0d | Excavation Team [40 h]; CR117_Cost Loading [68787]; CR117 WEIGHTAGE [804.4 h] | 68,787 |  | UDF_G3 | CN | CRBRH | EXC | GENL | GEN | ZJ | EC | GEN | 1 | CR | 2 | To Split Excav and Strut/deck | UDF_G3 | 49500 | 49590 | ZJ |
| 17_CN19070 |  | West C&C Zone J - Excavate to 1m below S2 strut (Aprox 4,277 m3, 300m3/d) | 15d | 2024-08-20 | 2024-09-03 | 17_CN15810 | 89d | 0d | Excavation Team [120 h]; CR117_Cost Loading [248690]; CR117 WEIGHTAGE [2660.72 h] | 248,690 |  | UDF_G3 | CN | CRBRH | EXC | GENL | GEN | ZJ | EC | GEN | 1 | CR |  |  | UDF_G3 | 49500 | 49590 | ZJ |
| 17_CN19080 |  | West C&C Zone J - Excavate to 1m below S3 strut (Aprox 4,550 m3, 300m3/d) | 15d | 2024-09-21 | 2024-10-05 | 17_CN15820 | 89d | 0d | Excavation Team [120 h]; CR117_Cost Loading [264564]; CR117 WEIGHTAGE [2660.72 h] | 264,564 |  | UDF_G3 | CN | CRBRH | EXC | GENL | GEN | ZJ | EC | GEN | 1 | CR |  |  | UDF_G3 | 49500 | 49590 | ZJ |
| 17_CN19540 |  | West C&C Zone J - Excavate to FEL (Approx 3003 m3, 250m3/d) & Clearance works | 12d | 2024-10-06 | 2024-10-17 | 17_CN19080 | 94d | 5d | Excavation Team [72 h]; CR117_Cost Loading [174612]; CR117 WEIGHTAGE [1546.96 h] | 174,612 |  | UDF_G3 | CN | CRBRH | EXC | GENL | GEN | ZJ | EC | GEN | 1 | CR |  |  |  | 49500 | 49590 | ZJ |
|  | 2 | **WEST C&C ZONE J Strutting-RC Works** |  | 2024-07-06 | 2025-01-20 |  |  |  |  |  |  |  |  |  |  |  |  |  |  |  |  |  |  |  |  |  |  |  |
| 17_CN15810 |  | West C&C Zone J - Install S1 struts (8 nos)( install construction decking/S1 struts and preload S1 | 45d | 2024-07-06 | 2024-08-19 | 17_CN10070, 17_PC10270, 17_CN15210, 17_CN15220, 17_CN15270, 17_CN15420, 17_CN15240, 17_CN15410, 17_CN19060 | 86d | 0d | CR117_Cost Loading [356212]; Strutting Team [360 h]; CR117 WEIGHTAGE [2590.24 h] | 356,212 |  | UDF_G3 | CN | CRBRH | ERS | GENL | GEN | ZJ | DK | GEN | 2 | CR | 2 | To Split Excav and Strut/deck | UDF_G3 | 49500 | 49590 | ZJ |
| 17_CN15820 |  | West C&C Zone J - Install S2 strut, install and preload S2 (12nos) (0.8/d/ team) | 17d | 2024-09-04 | 2024-09-20 | 17_CN15810, 17_CN19070 | 89d | 0d | CR117_Cost Loading [175593]; Strutting Team [136 h]; CR117 WEIGHTAGE [2501.76 h] | 175,593 |  | UDF_G3 | CN | CRBRH | ERS | GENL | GEN | ZJ | ST | GEN | 1 | CR |  | To Split Excav and Strut/deck | UDF_G3 | 49500 | 49590 | ZJ |
| 17_CN15830 |  | West C&C Zone J - Install S3, install and preload S3 (12nos) (0.8/d/ team) | 17d | 2024-10-06 | 2024-10-22 | 17_CN15820, 17_CN19080 | 89d | 0d | CR117_Cost Loading [175593]; Strutting Team [136 h]; CR117 WEIGHTAGE [2501.76 h] | 175,593 |  | UDF_G3 | CN | CRBRH | ERS | GENL | GEN | ZJ | ST | GEN | 1 | CR |  | To Split Excav and Strut/deck | UDF_G3 | 49500 | 49590 | ZJ |
| 17_CN15840 |  | West C&C Zone J - Cast Base slab and concrete plug between Base slab and ERSS wall | 90d | 2024-10-23 | 2025-01-20 | 17_CN15830, 17_CN19540 | 89d | 0d | CR117_Cost Loading [2186289]; Lifting Team [744 h]; CR117 WEIGHTAGE [19950.3 h] | 2,186,289 |  | UDF_G3 | CN | CRBRH | RCW | GENL | BAL | ZJ | RW | GEN | 1 | CR |  | To Split Excav and Strut/deck | UDF_G3 | 49500 | 49590 | ZJ |
|  | 3 | **WEST C&C ZONE P Excavation & Strutting-RC Works** |  | 2024-07-01 | 2025-02-03 |  |  |  |  |  |  |  |  |  |  |  |  |  |  |  |  |  |  |  |  |  |  |  |
|  | 1 | **WEST C&C ZONE P Excavation Works** |  | 2024-07-01 | 2024-11-25 |  |  |  |  |  |  |  |  |  |  |  |  |  |  |  |  |  |  |  |  |  |  |  |
| 17_CN19130 |  | West C&C Zone P - Excavate to soffit of S1 (Approx 825m3, 250m3/day) | 4d | 2024-07-01 | 2024-07-04 | 17_CN10070, 17_CN15140, 17_CN15160, 17_CN15180, 17_CN15350, 17_CN18780, 17_PC10270 | 407d | 0d | CR117_Cost Loading [47970]; Excavation Team [32 h]; CR117 WEIGHTAGE [618.8 h] | 47,970 |  | UDF_G3 | CN | CRBRH | EXC | GENL | GEN | ZP | EC | GEN | 1 | CR |  | To Split Excav and Strut/deck | UDF_G3 | 49396.6 | 49420 | ZP |
| 17_CN19140 |  | West C&C Zone P - Excavate to 1m below S2 (Approx 2990m3, 300m3/day) | 11d | 2024-08-02 | 2024-08-12 | 17_CN15900 | 407d | 0d | CR117_Cost Loading [173856]; Excavation Team [88 h]; CR117 WEIGHTAGE [1918.24 h] | 173,856 |  | UDF_G3 | CN | CRBRH | EXC | GENL | GEN | ZP | EC | GEN | 1 | CR |  | To Split Excav and Strut/deck | UDF_G3 | 49396.6 | 49420 | ZP |
| 17_CN19150 |  | West C&C Zone P - Excavate to 1m below S3 (Approx 3,175m3, 300m3/day) | 12d | 2024-09-06 | 2024-09-17 | 17_CN15910 | 407d | 0d | CR117_Cost Loading [184613]; Excavation Team [96 h]; CR117 WEIGHTAGE [2103.92 h] | 184,613 |  | UDF_G3 | CN | CRBRH | EXC | GENL | GEN | ZP | EC | GEN | 1 | CR |  | To Split Excav and Strut/deck | UDF_G3 | 49396.6 | 49420 | ZP |
| 17_CN19160 |  | West C&C Zone P - Excavate to 1m below S4 (Approx 3,175m3, 300m3/day) | 12d | 2024-10-04 | 2024-10-15 | 17_CN15920 | 407d | 0d | Excavation Team [96 h]; CR117_Cost Loading [184613]; CR117 WEIGHTAGE [2103.92 h] | 184,613 |  | UDF_G3 | CN | CRBRH | EXC | GENL | GEN | ZP | EC | GEN | 1 | CR |  | To Split Excav and Strut/deck | UDF_G3 | 49396.6 | 49420 | ZP |
| 17_CN19170 |  | West C&C Zone P - Excavate to 1m below S5 (Approx 1800m3, 300m3/day) | 6d | 2024-11-01 | 2024-11-06 | 17_CN15930 | 407d | 0d | CR117_Cost Loading [104663]; Excavation Team [56 h]; CR117 WEIGHTAGE [1175.76 h] | 104,663 |  | UDF_G3 | CN | CRBRH | EXC | GENL | GEN | ZP | EC | GEN | 1 | CR |  | To Split Excav and Strut/deck | UDF_G3 | 49396.6 | 49420 | ZP |
| 17_CN19180 |  | West C&C Zone P - Excavate to FEL (Approx 300m3, 250m3/day) & Clearance Works | 3d | 2024-11-23 | 2024-11-25 | 17_CN15940 | 407d | 0d | CR117_Cost Loading [5815]; Excavation Team [40 h]; CR117 WEIGHTAGE [804.4 h] | 5,815 |  | UDF_G3 | CN | CRBRH | EXC | GENL | GEN | ZP | EC | GEN | 1 | CR |  |  | UDF_G3 | 49396.6 | 49420 | ZP |
|  | 4 | **WEST C&C ZONE P Strutting-RC Works** |  | 2024-07-05 | 2025-02-03 |  |  |  |  |  |  |  |  |  |  |  |  |  |  |  |  |  |  |  |  |  |  |  |
| 17_CN15900 |  | West C&C Zone P - Install S1 RC Waler, Cast S1 RC Walers and Decking | 28d | 2024-07-05 | 2024-08-01 | 17_PC10270, 17_CN18780, 17_CN19130 | 407d | 0d | CR117_Cost Loading [289211]; Strutting Team [224 h]; RC Team [224 h]; CR117 WEIGHTAGE [4563.04 h] | 289,211 |  | UDF_G3 | CN | CRBRH | ENA | GENL | GEN | ZP | ST | GEN | 1 | CR |  | To Split Excav and Strut/deck | UDF_G3 | 49396.6 | 49420 | ZP |
| 17_CN15910 |  | West C&C Zone P - Install S2 RC waler, Cast Temporary Roof Slab and S2 RC Waler | 24d | 2024-08-13 | 2024-09-05 | 17_CN15900, 17_CN19140 | 407d | 0d | CR117_Cost Loading [247896]; Strutting Team [192 h]; Lifting Team [192 h]; RC Team [192 h]; CR117 WEIGHTAGE [4200.32 h] | 247,896 |  | UDF_G3 | CN | CRBRH | ENA | GENL | GEN | ZP | ST | GEN | 1 | CR |  | To Split Excav and Strut/deck | UDF_G3 | 49396.6 | 49420 | ZP |
| 17_CN15920 |  | West C&C Zone P - Install S3 Strut, install and peload S3 Struts (13 nos) (0.8no/d/ team) | 16d | 2024-09-18 | 2024-10-03 | 17_CN15910, 17_CN19150 | 407d | 0d | CR117_Cost Loading [165264]; Strutting Team [128 h]; Lifting Team [128 h]; CR117 WEIGHTAGE [2572.32 h] | 165,264 |  | UDF_G3 | CN | CRBRH | ENA | GENL | GEN | ZP | ST | GEN | 1 | CR |  | To Split Excav and Strut/deck | UDF_G3 | 49396.6 | 49420 | ZP |
| 17_CN15930 |  | West C&C Zone P - Install S4 Strut, install and peload S4 Struts (13 nos) (0.8no/d/ team) | 16d | 2024-10-16 | 2024-10-31 | 17_CN15920, 17_CN19160 | 407d | 0d | CR117_Cost Loading [165264]; Strutting Team [128 h]; Lifting Team [128 h]; CR117 WEIGHTAGE [2572.32 h] | 165,264 |  | UDF_G3 | CN | CRBRH | ENA | GENL | GEN | ZP | ST | GEN | 1 | CR |  | To Split Excav and Strut/deck | UDF_G3 | 49396.6 | 49420 | ZP |
| 17_CN15940 |  | West C&C Zone P - Install S5 Strut, install and peload S5 Struts (13 nos) (0.8no/d/ team) | 16d | 2024-11-07 | 2024-11-22 | 17_CN15930, 17_CN19170 | 407d | 0d | CR117_Cost Loading [165264]; Lifting Team [128 h]; Strutting Team [128 h]; CR117 WEIGHTAGE [2572.32 h] | 165,264 |  | UDF_G3 | CN | CRBRH | ENA | GENL | GEN | ZP | ST | GEN | 1 | CR |  | To Split Excav and Strut/deck | UDF_G3 | 49396.6 | 49420 | ZP |
| 17_CN15950 |  | West C&C Zone P - Cast Temporary Base Slab | 70d | 2024-11-26 | 2025-02-03 | 17_CN15940, 17_CN19180 | 407d | 118d | CR117_Cost Loading [1645594]; RC Team [560 h]; CR117 WEIGHTAGE [15006.7 h] | 1,645,594 |  | UDF_G3 | CN | CRBRH | RCW | GENL | BAL | ZP | RW | GEN | 1 | CR |  | To Split Excav and Strut/deck | UDF_G3 | 49396.6 | 49420 | ZP |

| ID | WBS | Activity | Duration | Start | Finish | Predecessors | Total float | Free float | Resources | Cost | Comments | Check 2 (Original Duration) | [UDF] Chainage Start | [UDF] Chainage Finish | Check | PHASE | AREA | SUB-PHASE | STAGE | SUB AREA | LOCATION | LOCATION DETAILS | MAJOR WORKS | SUB-LOCATION DETAILS | CR-117 - FOT | LINE | Text 2 |
| --- | --- | --- | --- | --- | --- | --- | --- | --- | --- | --- | --- | --- | --- | --- | --- | --- | --- | --- | --- | --- | --- | --- | --- | --- | --- | --- | --- |
|  | 5 | **WEST C&C ZONE K Excavation & Strutting-RC Works** |  | 2024-08-20 | 2025-04-14 |  |  |  |  |  |  |  |  |  |  |  |  |  |  |  |  |  |  |  |  |  |  |
|  | 1 | **WEST C&C ZONE K Excavation Works** |  | 2024-08-20 | 2025-02-28 |  |  |  |  |  |  |  |  |  |  |  |  |  |  |  |  |  |  |  |  |  |  |
| 17_CN19010 |  | West C&C Zone K - Excavate to 1m below S1 strut (Approx 643.5m3, 250 m3/d) | 3d | 2024-08-20 | 2024-08-22 | 17_CN10070, 17_CN15280, 17_CN15410, 17_CN15420, 17_CN15810, 17_PC10270, 17_CN19580 | 134d | 0d | Excavation Team [512 h]; CR117_Cost Loading [37388]; CR117 WEIGHTAGE [433.2 h] | 37,388 | To Split Excav and Strut/deck | UDF_G3 | 49500 | 49590 | UDF_G3 | CN | CRBRH | EXC | ZK | GENL | GEN | ZK | EC | GEN | 1 | CR |  |
| 17_CN19020 |  | West C&C Zone K - Excavate to 1m below S2 strut (Approx 2326 m3, 300m3/day) | 9d | 2024-09-15 | 2024-09-23 | 17_CN15750 | 134d | 0d | CR117_Cost Loading [135247]; Excavation Team [72 h]; CR117 WEIGHTAGE [1546.96 h] | 135,247 |  | UDF_G3 | 49500 | 49590 | UDF_G3 | CN | CRBRH | EXC | ZK | GENL | GEN | ZK | EC | GEN | 1 | CR |  |
| 17_CN19030 |  | West C&C Zone K - Excavate to 1m below S3 strut (Approx 2475 m3, 300m3/day) | 9d | 2024-10-23 | 2024-10-31 | 17_CN15760 | 134d | 0d | Excavation Team [72 h]; CR117_Cost Loading [143911]; CR117 WEIGHTAGE [1546.96 h] | 143,911 |  | UDF_G3 | 49500 | 49590 | UDF_G3 | CN | CRBRH | EXC | ZK | GENL | GEN | ZK | EC | GEN | 1 | CR |  |
| 17_CN19040 |  | West C&C Zone K - Excavate to 1m below S4 strut (Approx 1647 m3, 300m3/day) | 7d | 2024-11-30 | 2024-12-06 | 17_CN15780 | 134d | 45d | Excavation Team [56 h]; CR117_Cost Loading [95766]; CR117 WEIGHTAGE [1175.76 h] | 95,766 |  | UDF_G3 | 49500 | 49590 | UDF_G3 | CN | CRBRH | EXC | ZK | GENL | GEN | ZK | EC | GEN | 1 | CR |  |
| 17_CN19050 |  | West C&C Zone K - Excavate to FEL (Approx 1000m3, 250m3/day) & Clearance Works | 5d | 2025-02-24 | 2025-02-28 | 17_CN15790 | 89d | 0d | Excavation Team [40 h]; CR117_Cost Loading [106492]; CR117 WEIGHTAGE [804.4 h] | 106,492 |  | UDF_G3 | 49500 | 49590 | UDF_G3 | CN | CRBRH | EXC | ZK | GENL | GEN | ZK | EC | GEN | 01 | CR |  |
|  | 2 | **WEST C&C ZONE K Strutting-RC Works** |  | 2024-08-23 | 2025-04-14 |  |  |  |  |  |  |  |  |  |  |  |  |  |  |  |  |  |  |  |  |  |  |
| 17_CN15750 |  | West C&C-Zone K - Install S1 strut (12 nos) install construction decking/S1 and preload S1 | 23d | 2024-08-23 | 2024-09-14 | 17_PC10270, 17_CN15810, 17_CN19010 | 134d | 0d | CR117_Cost Loading [237567]; Strutting Team [184 h]; GW (C&S) [184 h]; CR117 WEIGHTAGE [2852.32 h] | 237,567 | To Split Excav and Strut/deck | UDF_G3 | 49500 | 49590 | UDF_G3 | CN | CRBRH | ERS | ZK | GENL | GEN | ZK | ST | GEN | 1 | CR |  |
| 17_CN15760 |  | West C&C Zone K - Install S2 Strut and preload S2 (23 nos) (0.8/d/4 team) | 29d | 2024-09-24 | 2024-10-22 | 17_CN15750, 17_CN15820, 17_CN19020 | 134d | 0d | CR117_Cost Loading [299540]; Strutting Team [232 h]; Lifting Team [232 h]; CR117 WEIGHTAGE [4621.36 h] | 299,540 | To Split Excav and Strut/deck | UDF_G3 | 49500 | 49590 | UDF_G3 | CN | CRBRH | ERS | ZK | GENL | GEN | ZK | ST | GEN | 1 | CR |  |
| 17_CN15780 |  | West C&C Zone K - Install S3 Strut and preload S3 (23 nos) (at area not affected by Zone J Base slab) | 29d | 2024-11-01 | 2024-11-29 | 17_CN19030 | 134d | 0d | CR117_Cost Loading [299540]; Strutting Team [232 h]; Lifting Team [232 h]; CR117 WEIGHTAGE [4621.36 h] | 299,540 | To Split Excav and Strut/deck | UDF_G3 | 49500 | 49590 | UDF_G3 | CN | CRBRH | ERS | ZK | GENL | GEN | ZK | ST | GEN | 1 | CR |  |
| 17_CN15790 |  | West C&C Zone K - Install S4 Strut (23 nos) (at area after Zone J Base Slab cast) | 34d | 2025-01-21 | 2025-02-23 | 17_CN15840, 17_CN19040 | 89d | 0d | CR117_Cost Loading [351185]; Strutting Team [272 h]; Lifting Team [272 h]; CR117 WEIGHTAGE [4913.52 h] | 351,185 | To Split Excav and Strut/deck | UDF_G3 | 49500 | 49590 | UDF_G3 | CN | CRBRH | ERS | ZK | GENL | GEN | ZK | ST | GEN | 1 | CR |  |
| 17_CN15800 |  | West C&C Zone K - Cast Base Slab and concrete plug between Base slab and ERSS Wall | 45d | 2025-03-01 | 2025-04-14 | 17_CN15780, 17_CN15790, 17_CN19050 | 89d | 0d | CR117_Cost Loading [1057882]; RC Team [360 h]; Lifting Team [360 h]; CR117 WEIGHTAGE [9633.28 h] | 1,057,882 | To Split Excav and Strut/deck | UDF_G3 | 49500 | 49590 | UDF_G3 | CN | CRBRH | RCW | ZK | GENL | BAL | ZK | RW | GEN | 1 | CR |  |
|  | 2 | **WEST C&C ZONE H Excavation & Strutting-RC Works** |  | 2024-08-20 | 2025-06-01 |  |  |  |  |  |  |  |  |  |  |  |  |  |  |  |  |  |  |  |  |  |  |
|  | 1 | **WEST C&C ZONE H Excavation Works** |  | 2024-08-20 | 2025-02-17 |  |  |  |  |  |  |  |  |  |  |  |  |  |  |  |  |  |  |  |  |  |  |
| 17_CN19090 |  | West C&C Zone H - Excavate to 1m below S1 (Aprox 2575m3, 250 m3/d) | 11d | 2024-08-20 | 2024-08-30 | 17_CN10070, 17_CN15240, 17_CN15260, 17_CN15440, 17_CN15810, 17_PC10270 | 86d | 0d | CR117_Cost Loading [149726]; Excavation Team [88 h]; CR117 WEIGHTAGE [1918.24 h] | 149,726 | To Split Excav and Strut/deck | UDF_G3 | 49420 | 49500 | UDF_G3 | CN | CRBRH | EXC | ZH | GENL | GEN | ZH | EC | GEN | 1 | CR | 2 |
| 17_CN19100 |  | West C&C Zone H - Excavate to 1m below S2 (Aprox 9310m3, 300 m3/d) | 31d | 2024-09-29 | 2024-10-29 | 17_CN15850 | 86d | 0d | CR117_Cost Loading [541338]; Excavation Team [248 h]; CR117 WEIGHTAGE [5630.96 h] | 541,338 | To Split Excav and Strut/deck | UDF_G3 | 49420 | 49500 | UDF_G3 | CN | CRBRH | EXC | ZH | GENL | GEN | ZH | EC | GEN | 1 | CR | 2 |
| 17_CN19110 |  | West C&C Zone H - Excavate to 1m below S3 (Aprox 9,900m3, 300 m3/d) | 33d | 2024-11-19 | 2024-12-21 | 17_CN15860 | 86d | 0d | CR117_Cost Loading [575644]; Excavation Team [264 h]; CR117 WEIGHTAGE [6002.24 h] | 575,644 | To Split Excav and Strut/deck | UDF_G3 | 49420 | 49500 | UDF_G3 | CN | CRBRH | EXC | ZH | GENL | GEN | ZH | EC | GEN | 1 | CR | 2 |
| 17_CN19120 |  | West C&C Zone H - Excavate to 1m below S4 (Aprox 9,950m3, 300 m3/d) | 34d | 2025-01-11 | 2025-02-13 | 17_CN15870 | 86d | 0d | CR117_Cost Loading [578551]; Excavation Team [272 h]; CR117 WEIGHTAGE [6187.92 h] | 578,551 | To Split Excav and Strut/deck | UDF_G3 | 49420 | 49500 | UDF_G3 | CN | CRBRH | EXC | ZH | GENL | GEN | ZH | EC | GEN | 1 | CR | 2 |
| 17_CN19320 |  | West C&C Zone H - Excavate upto FEL (Approx 600m3; 250m3/d) & Clearance Works | 4d | 2025-02-14 | 2025-02-17 | 17_CN19120 | 102d | 16d | CR117_Cost Loading [5815]; Excavation Team [88 h]; CR117 WEIGHTAGE [1589.52 h] | 5,815 |  |  | 49420 | 49500 | UDF_G3 | CN | CRBRH | EXC | ZH | GENL | GEN | ZH | EC | GEN | 1 | CR |  |
|  | 3 | **WEST C&C ZONE H Strutting-RC Works** |  | 2024-08-31 | 2025-06-01 |  |  |  |  |  |  |  |  |  |  |  |  |  |  |  |  |  |  |  |  |  |  |
| 17_CN15850 |  | West C&C Zone H - Install S1 Strut, install Construction Decking | 29d | 2024-08-31 | 2024-09-28 | 17_PC10270, 17_CN15550, 17_CN15210, 17_CN15170, 17_CN19090 | 86d | 0d | CR117_Cost Loading [229559]; Strutting Team [232 h]; GW (C&S) [232 h]; CR117 WEIGHTAGE [1655.44 h] | 229,559 | To Split Excav and Strut/deck | UDF_G3 | 49420 | 49500 | UDF_G3 | CN | CRBRH | ENA | ZH | GENL | GEN | ZH | DK | GEN | 2 | CR | 2 |
| 17_CN15860 |  | West C&C Zone H - Install S2 strut, install and preload S2to S2, Walers and Struts (15 nos) (0.8no/d/ team) | 20d | 2024-10-30 | 2024-11-18 | 17_CN15850, 17_CN19100 | 86d | 0d | CR117_Cost Loading [206580]; Strutting Team [160 h]; Lifting Team [160 h]; CR117 WEIGHTAGE [3064 h] | 206,580 | To Split Excav and Strut/deck | UDF_G3 | 49420 | 49500 | UDF_G3 | CN | CRBRH | ENA | ZH | GENL | GEN | ZH | ST | GEN | 1 | CR | 2 |
| 17_CN15870 |  | West C&C Zone H - Install S3 strut, install and preload S3 Struts (15 nos) (0.8no/d/ team) | 20d | 2024-12-22 | 2025-01-10 | 17_CN15860, 17_CN19110 | 86d | 0d | CR117_Cost Loading [206580]; Strutting Team [160 h]; Lifting Team [160 h]; CR117 WEIGHTAGE [3064 h] | 206,580 | To Split Excav and Strut/deck | UDF_G3 | 49420 | 49500 | UDF_G3 | CN | CRBRH | ENA | ZH | GENL | GEN | ZH | ST | GEN | 1 | CR | 2 |
| 17_CN15880 |  | West C&C Zone H - Install S4 strut, install and preload S4 Struts (15 nos) (0.8no/d/ team) | 20d | 2025-02-14 | 2025-03-05 | 17_CN15870, 17_CN19120 | 86d | 0d | CR117_Cost Loading [206580]; Strutting Team [160 h]; Lifting Team [160 h]; CR117 WEIGHTAGE [3064 h] | 206,580 | To Split Excav and Strut/deck | UDF_G3 | 49420 | 49500 | UDF_G3 | CN | CRBRH | ENA | ZH | GENL | GEN | ZH | ST | GEN | 1 | CR | 2 |
| 17_CN15890 |  | West C&C Zone H - Cast Base Slab and concrete plug | 88d | 2025-03-06 | 2025-06-01 | 17_CN15880, 17_CN19320 | 86d | 0d | CR117_Cost Loading [2068746]; RC Team [704 h]; Lifting Team [704 h]; CR117 WEIGHTAGE [18875.6 h] | 2,068,746 | To Split Excav and Strut/deck | UDF_G3 | 49420 | 49500 | UDF_G3 | CN | CRBRH | RCW | ZH | GENL | BAL | ZH | RW | GEN | 1 | CR | 2 |

| ID | WBS | Activity | Duration | Start | Finish | Predecessors | Total float | Free float | Resources | Cost | [UDF] Chainage Start | [UDF] Chainage Finish | Check | PHASE | AREA | SUB-PHASE | STAGE | SUB AREA | LOCATION | LOCATION DETAILS | MAJOR WORKS | SUB-LOCATION DETAILS | CR-117 - FOT | LINE | Text 2 |
| --- | --- | --- | --- | --- | --- | --- | --- | --- | --- | --- | --- | --- | --- | --- | --- | --- | --- | --- | --- | --- | --- | --- | --- | --- | --- |
|  | 10 | **WEST C&C STRUCTUTAL WORKS** |  | 2025-04-15 | 2026-06-21 |  |  |  |  |  |  |  |  |  |  |  |  |  |  |  |  |  |  |  |  |
|  | 1 | **WEST C&C Zone P** |  | 2025-06-02 | 2026-06-21 |  |  |  |  |  |  |  |  |  |  |  |  |  |  |  |  |  |  |  |  |
| 17_CN15960 |  | Zone P - Remove S5, S4 and S3 Struts | 50d | 2025-06-02 | 2025-07-21 | 17_CN15950, 17_CN15890 | 289d | 0d | CR117_Cost Loading [812126]; Strutting Team [400 h]; Lifting Team [400 h]; CR117 WEIGHTAGE [10709.4 h] | 812,126 | 49396.6 | 49420 | UDF_G3 | CN | CRBRH | ERS | ZP | GENL | GEN | ZP | SR | GEN | 2 | CR |  |
| 17_CN15970 |  | Zone P - Cast Columns at Retrieval Shaft and cut kingpost to top of temporary base slab | 47d | 2025-07-22 | 2025-09-06 | 17_CN15960 | 289d | 0d | CR117_Cost Loading [1243817]; RC Team [376 h]; DFE/King Post Team [376 h]; CR117 WEIGHTAGE [8733.04 h] | 1,243,817 | 49396.6 | 49420 | UDF_G3 | CN | CRBRH | RCW | ZP | GENL | GEN | RS | RW | GEN | 2 | CR |  |
| 17_CN15980 |  | Zone P - Construct Upstand Beam on Temporary Roof Slab | 16d | 2025-09-07 | 2025-09-22 | 17_CN15970 | 289d | 0d | CR117_Cost Loading [376136]; GW (C&S) [128 h]; RC Team [128 h]; CR117 WEIGHTAGE [4963.6 h] | 376,136 | 49396.6 | 49420 | UDF_G3 | CN | CRBRH | RCW | ZP | GENL | GEN | RS | RW | GEN | 1 | CR |  |
| 17_CN15990 |  | Zone P - Backfill from Temporay Roof Slab to soffit of S1 Decking at Retrieval Shaft | 35d | 2025-09-23 | 2025-10-27 | 17_CN15980 | 289d | 185d | CR117_Cost Loading [142157]; Excavation Team [280 h]; CR117 WEIGHTAGE [4811.6 h] | 142,157 | 49396.6 | 49420 | UDF_G3 | CN | CRBRH | ENA | ZP | GENL | GEN | RS | BF | GEN | 3 | CR |  |
| 17_CN16000 |  | Zone P - Remove S1 Decking at Retrieval Shaft | 16d | 2026-05-01 | 2026-05-16 | 17_CN15990, 17_CN15660, 17_CN15680, 17_CN15690 | 104d | 0d | CR117_Cost Loading [259880]; Strutting Team [128 h]; Excavation Team [128 h]; CR117 WEIGHTAGE [3400.48 h] | 259,880 | 49396.6 | 49420 | UDF_G3 | CN | CRBRH | ENA | ZP | GENL | GEN | RS | SR | GEN | 2 | CR |  |
| 17_CN16010 |  | Zone P - Backfill to Ground Level at Retrieval Shaft | 18d | 2026-05-17 | 2026-06-03 | 17_CN16000 | 104d | 0d | CR117_Cost Loading [73109]; Excavation Team [144 h]; CR117 WEIGHTAGE [2455.68 h] | 73,109 | 49396.6 | 49420 | UDF_G3 | CN | CRBRH | ENA | ZP | GENL | GEN | RS | BF | GEN | 3 | CR |  |
| 17_CN16020 |  | Zone P - Remove top 2m of ERSS Wall and reinstate permanent road | 18d | 2026-06-04 | 2026-06-21 | 17_CN16010 | 104d | 0d | CR117_Cost Loading [383371]; Excavation Team [144 h]; CR117 WEIGHTAGE [3830.4 h] | 383,371 | 49396.6 | 49420 | UDF_G3 | CN | CRBRH | ENA | ZP | GENL | GEN | ZP | SR | GEN | 01 | CR |  |
|  | 2 | **WEST C&C Zone H** |  | 2025-06-02 | 2025-12-25 |  |  |  |  |  |  |  |  |  |  |  |  |  |  |  |  |  |  |  |  |
| 17_CN16030 |  | Zone H - Remove S4 Struts | 14d | 2025-06-02 | 2025-06-15 | 17_CN15890 | 86d | 0d | CR117_Cost Loading [227395]; Strutting Team [112 h]; Lifting Team [112 h]; CR117 WEIGHTAGE [2970.64 h] | 227,395 | 49420 | 49500 | UDF_G3 | CN | CRBRH | ERS | ZH | GENL | GEN | ZH | SR | GEN | 2 | CR | 2 |
| 17_CN16040 |  | Zone H - cast Wall to Roof Slab Level | 56d | 2025-06-16 | 2025-08-10 | 17_CN16030 | 86d | 0d | CR117_Cost Loading [1481995]; RC Team [448 h]; GW (C&S) [448 h]; CR117 WEIGHTAGE [10412.8 h] | 1,481,995 | 49420 | 49500 | UDF_G3 | CN | CRBRH | RCW | ZH | GENL | GEN | ZH | RW | GEN | 2 | CR | 2 |
| 17_CN16050 |  | Zone H - cast Roof Slab including waterproofing | 43d | 2025-08-11 | 2025-09-22 | 17_CN16040 | 86d | 0d | CR117_Cost Loading [1010865]; RC Team [344 h]; CR117 WEIGHTAGE [13405.5 h] | 1,010,865 | 49420 | 49500 | UDF_G3 | CN | CRBRH | RCW | ZH | GENL | ROF | ZH | RW | GEN | 1 | CR | 2 |
| 17_CN16060 |  | Zone H - Cut King Posts to top of roof slab | 14d | 2025-09-23 | 2025-10-06 | 17_CN16040, 17_CN16050 | 86d | 0d | CR117_Cost Loading [235578]; Lifting Team [112 h]; CR117 WEIGHTAGE [2992 h] | 235,578 | 49420 | 49500 | UDF_G3 | CN | CRBRH | ENA | ZH | GENL | GEN | ZH | KP | GEN | 2 | CR | 2 |
| 17_CN16070 |  | Zone H - Backfill to Roof Slab Level and cast concrete plugs | 16d | 2025-10-07 | 2025-10-22 | 17_CN16060 | 86d | 0d | CR117_Cost Loading [64986]; Excavation Team [128 h]; CR117 WEIGHTAGE [2178.48 h] | 64,986 | 49420 | 49500 | UDF_G3 | CN | CRBRH | ENA | ZH | GENL | GEN | ZH | BF | GEN | 3 | CR | 2 |
| 17_CN16080 |  | Zone H - Backfill to 0.5m below S3 Struts, Remove S3 struts | 16d | 2025-10-23 | 2025-11-07 | 17_CN16070, 17_CN16120 | 86d | 0d | CR117_Cost Loading [64986]; Excavation Team [128 h]; Strutting Team [128 h]; CR117 WEIGHTAGE [2178.48 h] | 64,986 | 49420 | 49500 | UDF_G3 | CN | CRBRH | ENA | ZH | GENL | GEN | ZH | BF | GEN | 3 | CR | 2 |
| 17_CN16090 |  | Zone H - Backfill to 0.5m below S2 Struts, Remove S2 Struts | 16d | 2025-11-08 | 2025-11-23 | 17_CN16080, 17_CN16170 | 86d | 0d | CR117_Cost Loading [64986]; Excavation Team [128 h]; Strutting Team [128 h]; CR117 WEIGHTAGE [2178.48 h] | 64,986 | 49420 | 49500 | UDF_G3 | CN | CRBRH | ENA | ZH | GENL | GEN | ZH | BF | GEN | 3 | CR | 2 |
| 17_CN16100 |  | Zone H - Backfill to 0.5m below S1 Struts, Remove construction deck | 16d | 2025-11-24 | 2025-12-09 | 17_CN16090 | 86d | 0d | CR117_Cost Loading [64986]; Excavation Team [128 h]; Strutting Team [128 h]; CR117 WEIGHTAGE [2178.48 h] | 64,986 | 49420 | 49500 | UDF_G3 | CN | CRBRH | ENA | ZH | GENL | GEN | ZH | BF | GEN | 3 | CR | 2 |
| 17_CN16110 |  | Zone H - Backfill to Ground Level | 16d | 2025-12-10 | 2025-12-25 | 17_CN16100 | 86d | 0d | CR117_Cost Loading [64986]; Excavation Team [128 h]; CR117 WEIGHTAGE [2178.48 h] | 64,986 | 49420 | 49500 | UDF_G3 | CN | CRBRH | GDW | ZH | GENL | GRD | ZH | BF | GEN | 3 | CR | 2 |
|  | 3 | **WEST C&C Zone J** |  | 2025-06-26 | 2026-01-01 |  |  |  |  |  |  |  |  |  |  |  |  |  |  |  |  |  |  |  |  |
| 17_CN16120 |  | Zone J - Remove S3 Struts | 7d | 2025-06-26 | 2025-07-02 | 17_CN15840, 17_CN16250 | 89d | 0d | CR117_Cost Loading [113698]; Excavation Team [56 h]; CR117 WEIGHTAGE [1465.76 h] | 113,698 | 49500 | 49590 | UDF_G3 | CN | CRBRH | ERS | ZJ | GENL | GEN | ZJ | SR | GEN | 2 | CR |  |
| 17_CN16130 |  | Zone J - cast Walls to Roof Slab Level | 48d | 2025-07-03 | 2025-08-19 | 17_CN16120 | 89d | 0d | CR117_Cost Loading [1270282]; GW (C&S) [384 h]; RC Team [384 h]; CR117 WEIGHTAGE [8919.68 h] | 1,270,282 | 49500 | 49590 | UDF_G3 | CN | CRBRH | RCW | ZJ | GENL | GEN | ZJ | RW | GEN | 2 | CR |  |
| 17_CN16140 |  | Zone J - cast Roof Slab including waterproofing | 38d | 2025-08-20 | 2025-09-26 | 17_CN16130 | 89d | 0d | CR117_Cost Loading [893322]; RC Team [304 h]; CR117 WEIGHTAGE [11842.2 h] | 893,322 | 49500 | 49590 | UDF_G3 | CN | CRBRH | RCW | ZJ | GENL | ROF | ZJ | RW | GEN | 1 | CR |  |
| 17_CN16150 |  | Zone J - Cut King Posts to top of roof slab | 7d | 2025-09-27 | 2025-10-03 | 17_CN16130, 17_CN16140 | 89d | 0d | CR117_Cost Loading [117789]; DFE/King Post Team [56 h]; CR117 WEIGHTAGE [1476.48 h] | 117,789 | 49500 | 49590 | UDF_G3 | CN | CRBRH | ENA | ZJ | GENL | GEN | ZJ | KP | GEN | 2 | CR |  |
| 17_CN16160 |  | Zone J - Backfill to Roof Slab Level and cast concrete plugs | 16d | 2025-10-04 | 2025-10-19 | 17_CN16150 | 89d | 0d | CR117_Cost Loading [64986]; Excavation Team [128 h]; CR117 WEIGHTAGE [2178.48 h] | 64,986 | 49500 | 49590 | UDF_G3 | CN | CRBRH | ENA | ZJ | GENL | GEN | ZJ | BF | GEN | 3 | CR |  |
| 17_CN16170 |  | Zone J - Backfill to 0.5m below S2 Struts, Remove S2 Struts | 16d | 2025-10-20 | 2025-11-04 | 17_CN16160 | 89d | 0d | CR117_Cost Loading [64986]; Excavation Team [128 h]; CR117 WEIGHTAGE [2178.48 h] | 64,986 | 49500 | 49590 | UDF_G3 | CN | CRBRH | ENA | ZJ | GENL | GEN | ZJ | BF | GEN | 3 | CR |  |
| 17_CN16180 |  | Zone J - Backfill to 0.5m below S1 Struts; Cast 1.5m wide 150mm thick mass concrete at 3m spacing between ERSS walls | 21d | 2025-11-05 | 2025-11-25 | 17_CN16170 | 174d | 0d | CR117_Cost Loading [85294]; Excavation Team [240 h]; CR117 WEIGHTAGE [4118.64 h] | 85,294 | 49500 | 49590 | UDF_G3 | CN | CRBRH | ENA | ZJ | GENL | GEN | ZJ | BF | GEN | 3 | CR |  |
| 17_CN16190 |  | Zone J - Remove S1 struts and construction decking | 21d | 2025-11-26 | 2025-12-16 | 17_CN16180 | 174d | 0d | CR117_Cost Loading [341093]; Strutting Team [168 h]; Excavation Team [168 h]; CR117 WEIGHTAGE [2871.44 h] | 341,093 | 49500 | 49590 | UDF_G3 | CN | CRBRH | ERS | ZJ | GENL | GEN | ZJ | BF | GEN | 2 | CR |  |
| 17_CN16200 |  | Zone J - Backfill to Ground Level | 16d | 2025-12-17 | 2026-01-01 | 17_CN16180, 17_CN16190 | 174d | 77d | CR117_Cost Loading [64986]; Excavation Team [128 h]; CR117 WEIGHTAGE [2178.48 h] | 64,986 | 49500 | 49590 | UDF_G3 | CN | CRBRH | GDW | ZJ | GENL | GRD | ZJ | BF | GEN | 3 | CR |  |

| ID | WBS | Activity | Duration | Start | Finish | Predecessors | Total float | Free float | Resources | Cost | [UDF] Chainage Start | [UDF] Chainage Finish | Check | PHASE | AREA | SUB-PHASE | STAGE | SUB AREA | LOCATION | LOCATION DETAILS | MAJOR WORKS | SUB-LOCATION DETAILS | CR-117 - FOT | LINE |
| --- | --- | --- | --- | --- | --- | --- | --- | --- | --- | --- | --- | --- | --- | --- | --- | --- | --- | --- | --- | --- | --- | --- | --- | --- |
|  | 4 | **WEST C&C Zone K** |  | 2025-04-15 | 2026-01-07 |  |  |  |  |  |  |  |  |  |  |  |  |  |  |  |  |  |  |  |
| 17_CN16210 |  | Zone K - Remove S4 Struts | 7d | 2025-04-15 | 2025-04-21 | 17_CN15800 | 89d | 0d | CR117_Cost Loading [113698]; Strutting Team [72 h]; CR117 WEIGHTAGE [1895.76 h] | 113,698 | 49500 | 49590 | UDF_G3 | CN | CRBRH | ERS | ZK | GENL | GEN | ZK | SR | GEN | 2 | CR |
| 17_CN16220 |  | Zone K - cast Wall to Roof Slab Level | 30d | 2025-04-22 | 2025-05-21 | 17_CN16210 | 89d | 0d | CR117_Cost Loading [1058568]; RC Team [400 h]; CR117 WEIGHTAGE [9292.96 h] | 1,058,568 | 49500 | 49590 | UDF_G3 | CN | CRBRH | RCW | ZK | GENL | GEN | ZK | RW | GEN | 2 | CR |
| 17_CN16230 |  | Zone K - cast Roof Slab including waterproofing | 21d | 2025-05-22 | 2025-06-11 | 17_CN16220 | 89d | 0d | CR117_Cost Loading [705254]; RC Team [296 h]; CR117 WEIGHTAGE [11836.4 h] | 705,254 | 49500 | 49590 | UDF_G3 | CN | CRBRH | RCW | ZK | GENL | ROF | ZK | RW | GEN | 1 | CR |
| 17_CN16240 |  | Zone K - Backfill to Roof Slab Level and cast concrete plugs | 7d | 2025-06-12 | 2025-06-18 | 17_CN16220, 17_CN16230 | 89d | 0d | CR117_Cost Loading [40616]; Excavation Team [128 h]; CR117 WEIGHTAGE [2178.48 h] | 40,616 | 49500 | 49590 | UDF_G3 | CN | CRBRH | ENA | ZK | GENL | GEN | ZK | BF | GEN | 3 | CR |
| 17_CN16250 |  | Zone K - Backfill to 0.5m below S3 Struts , remove S3 struts | 7d | 2025-06-19 | 2025-06-25 | 17_CN16240 | 89d | 0d | CR117_Cost Loading [40616]; Excavation Team [128 h]; CR117 WEIGHTAGE [2178.48 h] | 40,616 | 49500 | 49590 | UDF_G3 | CN | CRBRH | ENA | ZK | GENL | GEN | ZK | BF | GEN | 3 | CR |
| 17_CN16260 |  | Zone K - Backfill to 0.5m below S2 Struts, remove S2 struts | 16d | 2025-11-05 | 2025-11-20 | 17_CN16250, 17_CN16170 | 110d | 0d | CR117_Cost Loading [64986]; Excavation Team [128 h]; CR117 WEIGHTAGE [2178.48 h] | 64,986 | 49500 | 49590 | UDF_G3 | CN | CRBRH | ENA | ZK | GENL | GEN | ZK | BF | GEN | 3 | CR |
| 17_CN16270 |  | Zone K - Backfill to 0.5m below S2, Cast 1.5m wide 150mm thick mass concrete at 3m spacing | 16d | 2025-11-21 | 2025-12-06 | 17_CN16260 | 110d | 0d | CR117_Cost Loading [64986]; Excavation Team [240 h]; CR117 WEIGHTAGE [4118.64 h] | 64,986 | 49500 | 49590 | UDF_G3 | CN | CRBRH | ENA | ZK | GENL | GEN | ZK | BF | GEN | 3 | CR |
| 17_CN16280 |  | Zone K - Remove S1 Struts and Construction Decking | 16d | 2025-12-07 | 2025-12-22 | 17_CN16270 | 110d | 0d | CR117_Cost Loading [259880]; Strutting Team [240 h]; Excavation Team [240 h]; CR117 WEIGHTAGE [4118.64 h] | 259,880 | 49500 | 49590 | UDF_G3 | CN | CRBRH | ENA | ZK | GENL | GEN | ZK | BF | GEN | 2 | CR |
| 17_CN16290 |  | Zone K - Backfill to Ground Level | 16d | 2025-12-23 | 2026-01-07 | 17_CN16270, 17_CN16280 | 110d | 0d | CR117_Cost Loading [64986]; Excavation Team [128 h]; CR117 WEIGHTAGE [2178.48 h] | 64,986 | 49500 | 49590 | UDF_G3 | CN | CRBRH | GDW | ZK | GENL | GEN | ZK | BF | GEN | 3 | CR |
|  | 7 | **ARCHITECTURAL AND M&E WORKS** |  | 2026-04-12 | 2029-01-05 |  |  |  |  |  |  |  |  |  |  |  |  |  |  |  |  |  |  |  |
|  | 2 | **CATEGORY ROOMS DEGREE FINISH** |  | 2026-07-31 | 2028-04-26 |  |  |  |  |  |  |  |  |  |  |  |  |  |  |  |  |  |  |  |
|  | 1 | **CATEGORY A ROOMS (22KV SUBSTATION, Designated SWC - CR153 or CR175B)** |  | 2026-07-31 | 2028-03-01 |  |  |  |  |  |  |  |  |  |  |  |  |  |  |  |  |  |  |  |
|  | 1 | **CATEGORY A ROOM DEGREE 1** |  | 2026-07-31 | 2027-02-25 |  |  |  |  |  |  |  |  |  |  |  |  |  |  |  |  |  |  |  |
| 17_CN16420 |  | Category A Room Deg 1: Floor Finishes | 70d | 2026-07-31 | 2026-10-08 | 17_CN13270, 17_CN13370, 17_CN13530, 17_CN13980 | 155d | 0d | CR117_Cost Loading; GW (Archi) [560 h]; CR117 WEIGHTAGE [7478.16 h] |  |  |  | UDF_G3 | CN | CRBRH | ARH |  | GENL | GEN | RA | FS | GEN | N/A | CR |
| 17_CN16430 |  | Category A Room Deg 1: Permanent Doors with Lock | 70d | 2026-10-09 | 2026-12-17 | 17_CN16420 | 155d | 0d | CR117_Cost Loading; GW (Archi) [560 h]; CR117 WEIGHTAGE [7478.16 h] |  |  |  | UDF_G3 | CN | CRBRH | ARH |  | GENL | GEN | RA | DO | GEN | N/A | CR |
| 17_CN16440 |  | Category A Room Deg 1: 1st Coat of Paint | 70d | 2026-12-18 | 2027-02-25 | 17_CN16430 | 155d | 0d | CR117_Cost Loading; GW (Archi) [560 h]; CR117 WEIGHTAGE [7479.12 h] |  |  |  | UDF_G3 | CN | CRBRH | ARH |  | GENL | GEN | RA | PA | GEN | N/A | CR |
|  | 2 | **CATEGORY A ROOM DEGREE 2** |  | 2027-02-26 | 2027-07-15 |  |  |  |  |  |  |  |  |  |  |  |  |  |  |  |  |  |  |  |
| 17_CN16450 |  | Category A Room Deg 2: First and Second Fix Items (by SWC) | 70d | 2027-02-26 | 2027-05-06 | 17_CN16440 | 168d | 0d | CR117_Cost Loading; CR117 WEIGHTAGE [4050.96 h] |  |  |  | UDF_G3 | CN | CRBRH | ARH |  | GENL | GEN | RA |  | GEN | N/A | CR |
| 17_CN16460 |  | Category A Room Deg 2: 2nd Coat of Paint | 70d | 2027-05-07 | 2027-07-15 | 17_CN16450 | 168d | 0d | CR117_Cost Loading; GW (Archi) [560 h]; CR117 WEIGHTAGE [4050.96 h] |  |  |  | UDF_G3 | CN | CRBRH | ARH |  | GENL | GEN | RA | PA | GEN | N/A | CR |
|  | 3 | **CATEGORY A ROOM DEGREE 3** |  | 2027-07-16 | 2028-03-01 |  |  |  |  |  |  |  |  |  |  |  |  |  |  |  |  |  |  |  |
| 17_CN16470 |  | Category A Room Deg 3: All works including Site Testing (by SWC and designated SWC CR153 or CR175B) | 90d | 2027-07-16 | 2027-10-13 | 17_CN16460 | 182d | 0d | CR117_Cost Loading; CR117 WEIGHTAGE [6095.76 h] |  |  |  | UDF_G3 | CN | CRBRH | ARH |  | GENL | GEN | RA |  | GEN | N/A | CR |
| 17_CN16480 |  | Category A Room Deg 3: Final Coat of Paint | 70d | 2027-10-14 | 2027-12-22 | 17_CN16470 | 182d | 0d | CR117_Cost Loading; GW (Archi) [560 h]; CR117 WEIGHTAGE [4050.96 h] |  |  |  | UDF_G3 | CN | CRBRH | ARH |  | GENL | GEN | RA | PA | GEN | N/A | CR |
| 17_CN16490 |  | Category A Room Deg 3: Final Cleaning and Sealing of All Openings (by ALL) | 70d | 2027-12-23 | 2028-03-01 | 17_CN16480 | 182d |  | CR117_Cost Loading; GW (Archi) [560 h]; CR117 WEIGHTAGE [4050.96 h] |  |  |  | UDF_G3 | CN | CRBRH | ARH |  | GENL | GEN | RA |  | GEN | N/A | CR |

| ID | WBS | Activity | Duration | Start | Finish | Predecessors | Total float | Free float | Resources | Check | PHASE | AREA | SUB-PHASE | SUB AREA | LOCATION | LOCATION DETAILS | MAJOR WORKS | SUB-LOCATION DETAILS | CR-117 - FOT | LINE |
| --- | --- | --- | --- | --- | --- | --- | --- | --- | --- | --- | --- | --- | --- | --- | --- | --- | --- | --- | --- | --- |
|  | 2 | **CATEGORY B ROOMS (Designated SWC - CR152, CR160, CR173B or CR175B)** |  | 2026-07-31 | 2028-04-26 |  |  |  |  |  |  |  |  |  |  |  |  |  |  |  |
|  | 1 | **CATEGORY B ROOM DEGREE 1** |  | 2026-07-31 | 2027-02-25 |  |  |  |  |  |  |  |  |  |  |  |  |  |  |  |
| 17_CN16500 |  | Category B Room Deg 1: Floor Finishes except raised floor | 70d | 2026-07-31 | 2026-10-08 | 17_CN13270, 17_CN13370, 17_CN13980 | 98d | 0d | CR117_Cost Loading; GW (Archi) [560 h]; CR117 WEIGHTAGE [4050.96 h] | UDF_G3 | CN | CRBRH | ARH | GENL | GEN | RB | FS | GEN | N/A | CR |
| 17_CN16510 |  | Category B Room Deg 1: Temporary Doors with Lock | 70d | 2026-10-09 | 2026-12-17 | 17_CN16500 | 98d | 0d | CR117_Cost Loading; GW (Archi) [560 h]; CR117 WEIGHTAGE [4050.96 h] | UDF_G3 | CN | CRBRH | ARH | GENL | GEN | RB | DO | GEN | N/A | CR |
| 17_CN16520 |  | Category B Room Deg 1: 1st Coat of Paint | 70d | 2026-12-18 | 2027-02-25 | 17_CN16510 | 98d | 0d | CR117_Cost Loading; GW (Archi) [560 h]; CR117 WEIGHTAGE [4050.96 h] | UDF_G3 | CN | CRBRH | ARH | GENL | GEN | RB | PA | GEN | N/A | CR |
|  | 2 | **CATEGORY B ROOM DEGREE 2** |  | 2027-02-26 | 2027-09-23 |  |  |  |  |  |  |  |  |  |  |  |  |  |  |  |
| 17_CN16530 |  | Category B Room Deg 2: 2nd Coat of Paint | 70d | 2027-02-26 | 2027-05-06 | 17_CN16520 | 98d | 0d | CR117_Cost Loading; GW (Archi) [560 h]; CR117 WEIGHTAGE [4050.96 h] | UDF_G3 | CN | CRBRH | ARH | GENL | GEN | RB | PA | GEN | N/A | CR |
| 17_CN16540 |  | Category B Room Deg 2: Raised floor | 70d | 2027-05-07 | 2027-07-15 | 17_CN16530 | 98d | 0d | CR117_Cost Loading; GW (Archi) [560 h]; CR117 WEIGHTAGE [4050.96 h] | UDF_G3 | CN | CRBRH | ARH | GENL | GEN | RB | FS | GEN | N/A | CR |
| 17_CN16550 |  | Category B Room Deg 2: Installation of all First Fix Items (by Non-designated SWC) | 70d | 2027-07-16 | 2027-09-23 | 17_CN16540 | 98d | 0d | CR117_Cost Loading; CR117 WEIGHTAGE [4050.96 h] | UDF_G3 | CN | CRBRH | ARH | GENL | GEN | RB |  | GEN | N/A | CR |
|  | 3 | **CATEGORY B ROOM DEGREE 3** |  | 2027-09-24 | 2028-04-26 |  |  |  |  |  |  |  |  |  |  |  |  |  |  |  |
| 17_CN16560 |  | Category B Room Deg 3: Permanent Doors with Lock | 35d | 2027-09-24 | 2027-10-28 | 17_CN16550 | 157d | 0d | CR117_Cost Loading; GW (Archi) [280 h]; CR117 WEIGHTAGE [2006 h] | UDF_G3 | CN | CRBRH | ARH | GENL | GEN | RB | DO | GEN | N/A | CR |
| 17_CN16570 |  | Category B Room Deg 3: Final Coat of Paint | 35d | 2027-10-29 | 2027-12-02 | 17_CN16560 | 157d | 0d | CR117_Cost Loading; GW (Archi) [280 h]; CR117 WEIGHTAGE [2006 h] | UDF_G3 | CN | CRBRH | ARH | GENL | GEN | RB | PA | GEN | N/A | CR |
| 17_CN16580 |  | Category B Room Deg 3: All works including Site Testing (by SWC and designated SWC CR152, CR160, CR173B or CR175B) | 90d | 2027-12-03 | 2028-03-01 | 17_CN16570 | 157d | 0d | CR117_Cost Loading; CR117 WEIGHTAGE [8140.72 h] | UDF_G3 | CN | CRBRH | ARH | GENL | GEN | RB |  | GEN | N/A | CR |
| 17_CN16590 |  | Category B Room Deg 3: Final Cleaning and Sealing of All Openings (By All) (8 Weeks) | 56d | 2028-03-02 | 2028-04-26 | 17_CN16580 | 157d |  | CR117_Cost Loading; GW (Archi) [448 h]; CR117 WEIGHTAGE [3232.88 h] | UDF_G3 | CN | CRBRH | ARH | GENL | GEN | RB |  | GEN | N/A | CR |
|  | 3 | **CATEGORY C ROOMS** |  | 2026-10-09 | 2028-04-20 |  |  |  |  |  |  |  |  |  |  |  |  |  |  |  |
|  | 1 | **CATEGORY C ROOM DEGREE 1** |  | 2026-10-09 | 2027-01-21 |  |  |  |  |  |  |  |  |  |  |  |  |  |  |  |
| 17_CN16600 |  | Category C Room Deg 1: Floor Finishes | 35d | 2026-10-09 | 2026-11-12 | 17_CN16500, 17_CN13270, 17_CN13370, 17_CN13980 | 193d | 0d | CR117_Cost Loading; GW (Archi) [280 h]; CR117 WEIGHTAGE [2006 h] | UDF_G3 | CN | CRBRH | ARH | GENL | GEN | RC | FS | GEN | N/A | CR |
| 17_CN16610 |  | Category C Room Deg 1: Temporary Doors with Lock | 35d | 2026-11-13 | 2026-12-17 | 17_CN16600 | 209d | 0d | CR117_Cost Loading; GW (Archi) [280 h]; CR117 WEIGHTAGE [2006 h] | UDF_G3 | CN | CRBRH | ARH | GENL | GEN | RC | DO | GEN | N/A | CR |
| 17_CN16630 |  | Category C Room Deg 1: Steel & Concrete Structure | 70d | 2026-11-13 | 2027-01-21 | 17_CN16600 | 209d | 0d | CR117_Cost Loading; RC Team [560 h]; GW (Archi) [560 h]; CR117 WEIGHTAGE [4050.96 h] | UDF_G3 | CN | CRBRH | ARH | GENL | GEN | RC | SS | GEN | N/A | CR |
| 17_CN16620 |  | Category C Room Deg 1: 1st Coat of Paint | 35d | 2026-12-18 | 2027-01-21 | 17_CN16610 | 209d | 0d | CR117_Cost Loading; GW (Archi) [280 h]; CR117 WEIGHTAGE [2006 h] | UDF_G3 | CN | CRBRH | ARH | GENL | GEN | RC | PA | GEN | N/A | CR |
|  | 2 | **CATEGORY C ROOM DEGREE 2** |  | 2027-01-22 | 2027-07-15 |  |  |  |  |  |  |  |  |  |  |  |  |  |  |  |
| 17_CN16640 |  | Category C Room Deg 2: 2nd Coat of Paint | 35d | 2027-01-22 | 2027-02-25 | 17_CN16620, 17_CN16630 | 209d | 0d | CR117_Cost Loading; GW (Archi) [280 h]; CR117 WEIGHTAGE [2006 h] | UDF_G3 | CN | CRBRH | ARH | GENL | GEN | RC | PA | GEN | N/A | CR |
| 17_CN16650 |  | Category C Room Deg 2: Glass Panels for Glass Shaft Lift | 70d | 2027-02-26 | 2027-05-06 | 17_CN16640 | 209d | 0d | CR117_Cost Loading; GW (Archi) [560 h]; CR117 WEIGHTAGE [4050.96 h] | UDF_G3 | CN | CRBRH | ARH | GENL | GEN | RC | GL | GEN | N/A | CR |
| 17_CN16660 |  | Category C Room Deg 2: Installation of all First Fix Items (by SWC) | 70d | 2027-05-07 | 2027-07-15 | 17_CN16650 | 209d | 0d | CR117_Cost Loading; CR117 WEIGHTAGE [4050.96 h] | UDF_G3 | CN | CRBRH | ARH | GENL | GEN | RC |  | GEN | N/A | CR |

| ID | WBS | Activity | Duration | Start | Finish | Predecessors | Total float | Free float | Resources | Cost | Check | PHASE | AREA | SUB-PHASE | SUB AREA | LOCATION | LOCATION DETAILS | MAJOR WORKS | SUB-LOCATION DETAILS | CR-117 - FOT | LINE |
| --- | --- | --- | --- | --- | --- | --- | --- | --- | --- | --- | --- | --- | --- | --- | --- | --- | --- | --- | --- | --- | --- |
|  | 3 | **CATEGORY C ROOM DEGREE 3** |  | 2027-07-16 | 2028-04-20 |  |  |  |  |  |  |  |  |  |  |  |  |  |  |  |  |
| 17_CN16670 |  | Category C Room Deg 3: Permanent Door with Lock | 35d | 2027-07-16 | 2027-08-19 | 17_CN16660 | 209d | 0d | CR117_Cost Loading; GW (Archi) [280 h]; CR117 WEIGHTAGE [2006 h] |  | UDF_G3 | CN | CRBRH | ARH | GENL | GEN | RC | DO | GEN | N/A | CR |
| 17_CN16680 |  | Category C Room Deg 3: Final Coat of Paint | 35d | 2027-08-20 | 2027-09-23 | 17_CN16670 | 209d | 0d | CR117_Cost Loading; GW (Archi) [280 h]; CR117 WEIGHTAGE [2006 h] |  | UDF_G3 | CN | CRBRH | ARH | GENL | GEN | RC | PA | GEN | N/A | CR |
| 17_CN16690 |  | Category C Room Deg 3: All works including Site Testing (by SWC) | 140d | 2027-09-24 | 2028-02-10 | 17_CN16680 | 209d | 0d | CR117_Cost Loading; CR117 WEIGHTAGE [8140.72 h] |  | UDF_G3 | CN | CRBRH | ARH | GENL | GEN | RC |  | GEN | N/A | CR |
| 17_CN16700 |  | Category C Room Deg 3: Final Cleaning and Sealing of All Openings (By All) | 70d | 2028-02-11 | 2028-04-20 | 17_CN16690 | 209d |  | CR117_Cost Loading; GW (Archi) [560 h]; CR117 WEIGHTAGE [4050.96 h] |  | UDF_G3 | CN | CRBRH | ARH | GENL | GEN | RC |  | GEN | N/A | CR |
|  | 4 | **CATEGORY D ROOMS** |  | 2026-11-13 | 2028-03-21 |  |  |  |  |  |  |  |  |  |  |  |  |  |  |  |  |
|  | 1 | **CATEGORY D ROOM DEGREE 1** |  | 2026-11-13 | 2026-12-17 |  |  |  |  |  |  |  |  |  |  |  |  |  |  |  |  |
| 17_CN16710 |  | Category D Room Deg 1: Structure | 35d | 2026-11-13 | 2026-12-17 | 17_CN16600 | 193d | 0d | CR117_Cost Loading; RC Team [8 h]; CR117 WEIGHTAGE [19.52 h] |  | UDF_G3 | CN | CRBRH | ARH | GENL | GEN | RD | RW | GEN | N/A | CR |
|  | 2 | **CATEGORY D ROOM DEGREE 2** |  | 2026-12-18 | 2027-07-15 |  |  |  |  |  |  |  |  |  |  |  |  |  |  |  |  |
| 17_CN16720 |  | Category D Room Deg 1: Installation of all First Fix Items except table top equipment | 35d | 2026-12-18 | 2027-01-21 | 17_CN16710 | 193d | 0d | CR117_Cost Loading; GW (Archi) [280 h]; CR117 WEIGHTAGE [2006 h] |  | UDF_G3 | CN | CRBRH | ARH | GENL | GEN | RD |  | GEN | N/A | CR |
| 17_CN16730 |  | Category D Room Deg 1: Floor Finishes | 35d | 2027-01-22 | 2027-02-25 | 17_CN16720 | 193d | 0d | CR117_Cost Loading; GW (Archi) [280 h]; CR117 WEIGHTAGE [2006 h] |  | UDF_G3 | CN | CRBRH | ARH | GENL | GEN | RD | FS | GEN | N/A | CR |
| 17_CN16740 |  | Category D Room Deg 1: Wall Finishes | 35d | 2027-02-26 | 2027-04-01 | 17_CN16730 | 193d | 0d | CR117_Cost Loading; GW (Archi) [280 h]; CR117 WEIGHTAGE [2006 h] |  | UDF_G3 | CN | CRBRH | ARH | GENL | GEN | RD | PL | GEN | N/A | CR |
| 17_CN16750 |  | Category D Room Deg 1: Installation of Glass Panels | 35d | 2027-04-02 | 2027-05-06 | 17_CN16740 | 193d | 0d | CR117_Cost Loading; GW (Archi) [280 h]; CR117 WEIGHTAGE [2006 h] |  | UDF_G3 | CN | CRBRH | ARH | GENL | GEN | RD | GL | GEN | N/A | CR |
| 17_CN16760 |  | Category D Room Deg 2: Permanent Door with Lock | 35d | 2027-05-07 | 2027-06-10 | 17_CN16750 | 193d | 0d | CR117_Cost Loading; GW (Archi) [280 h]; CR117 WEIGHTAGE [2006 h] |  | UDF_G3 | CN | CRBRH | ARH | GENL | GEN | RD | DO | GEN | N/A | CR |
| 17_CN16770 |  | Category D Room Deg 2: Installation of furniture | 35d | 2027-06-11 | 2027-07-15 | 17_CN16760 | 193d | 0d | CR117_Cost Loading; GW (Archi) [280 h]; CR117 WEIGHTAGE [2006 h] |  | UDF_G3 | CN | CRBRH | ARH | GENL | GEN | RD |  | GEN | N/A | CR |
|  | 3 | **CATEGORY D ROOM DEGREE 3** |  | 2027-07-16 | 2028-03-21 |  |  |  |  |  |  |  |  |  |  |  |  |  |  |  |  |
| 17_CN16780 |  | Category D Room Deg 3: Ceiling Finishes | 90d | 2027-07-16 | 2027-10-13 | 17_CN16770 | 193d | 0d | CR117_Cost Loading; GW (Archi) [840 h]; CR117 WEIGHTAGE [6095.76 h] |  | UDF_G3 | CN | CRBRH | ARH | GENL | GEN | RD | CE | GEN | N/A | CR |
| 17_CN16790 |  | Category D Room Deg 3: Installation of all Second Fix Items including table top equipment | 90d | 2027-10-14 | 2028-01-11 | 17_CN16780 | 193d | 0d | CR117_Cost Loading; GW (Archi) [840 h]; CR117 WEIGHTAGE [6095.76 h] |  | UDF_G3 | CN | CRBRH | ARH | GENL | GEN | RD |  | GEN | N/A | CR |
| 17_CN16800 |  | Category D Room Deg 3: Final Cleaning | 70d | 2028-01-12 | 2028-03-21 | 17_CN16790 | 193d |  | CR117_Cost Loading; GW (Archi) [560 h]; CR117 WEIGHTAGE [4050.96 h] |  | UDF_G3 | CN | CRBRH | ARH | GENL | GEN | RD |  | GEN | N/A | CR |
|  | 3 | **WATERPROOFING** |  | 2026-04-12 | 2027-05-07 |  |  |  |  |  |  |  |  |  |  |  |  |  |  |  |  |
| 17_CN16840 |  | Waterproofing at Level - B1 | 16d | 2026-04-12 | 2026-04-27 | 17_CN13530, 17_CN13850, 17_CN13980 | 439d | 126d | CR117_Cost Loading [52457]; CR117 WEIGHTAGE [6375.6 h] | 52,457 | UDF_G3 | CN | CRBRH | ARH | GENL | GEN | PA | WP | GEN | 4 | CR |
| 17_CN16810 |  | Waterproofing at Underplatform Level - B4 | 16d | 2026-05-24 | 2026-06-08 | 17_CN13800, 17_CN13220, 17_CN13490, 17_CN13900 | 53d | 0d | CR117_Cost Loading [52457]; CR117 WEIGHTAGE [6375.6 h] | 52,457 | UDF_G3 | CN | CRBRH | ARH | GENL | UPV | NP | WP | GEN | 4 | CR |
| 17_CN16820 |  | Waterproofing at Transfer Level - B3 | 16d | 2026-06-09 | 2026-06-24 | 17_CN16810 | 231d | 0d | CR117_Cost Loading [52457]; CR117 WEIGHTAGE [6375.6 h] | 52,457 | UDF_G3 | CN | CRBRH | ARH | GENL | GEN | PA | WP | GEN | 4 | CR |
| 17_CN16830 |  | Waterproofing at Platform Level - B2 | 16d | 2026-07-31 | 2026-08-15 | 17_CN13270 | 239d | 0d | CR117_Cost Loading [52457]; CR117 WEIGHTAGE [6375.6 h] | 52,457 | UDF_G3 | CN | CRBRH | ARH | GENL | PLF | PA | WP | GEN | 4 | CR |
| 17_CN16850 |  | Waterproofing at Entrance 8 | 14d | 2026-10-28 | 2026-11-10 | 17_CN14200 | 202d | 0d | CR117_Cost Loading [45900]; CR117 WEIGHTAGE [5573.84 h] | 45,900 | UDF_G3 | CN | CRBRH | ARH | GENL | GEN | E8 | WP | GEN | 4 | CR |
| 17_CN16870 |  | Waterproofing at Entrance 6 | 14d | 2026-12-24 | 2027-01-06 | 17_CN14300 | 161d | 0d | CR117_Cost Loading [45900]; CR117 WEIGHTAGE [5573.84 h] | 45,900 | UDF_G3 | CN | CRBRH | ARH | GENL | GEN | E6 | WP | GEN | 4 | CR |
| 17_CN16880 |  | Waterproofing at Entrance 7 | 14d | 2027-01-10 | 2027-01-23 | 17_CN14380 | 144d | 0d | CR117_Cost Loading [45900]; CR117 WEIGHTAGE [5573.84 h] | 45,900 | UDF_G3 | CN | CRBRH | ARH | GENL | GEN | E7 | WP | GEN | 4 | CR |
| 17_CN16860 |  | Waterproofing at Entrance 5 (2 Weeks) | 14d | 2027-04-24 | 2027-05-07 | 17_CN14240 | 40d | 0d | CR117_Cost Loading [45900]; CR117 WEIGHTAGE [5573.84 h] | 45,900 | UDF_G3 | CN | CRBRH | ARH | GENL | GEN | E5 | WP | GEN | 4 | CR |

| ID | WBS | Activity | Duration | Start | Finish | Predecessors | Total float | Free float | Resources | Cost | Check | PHASE | AREA | SUB-PHASE | SUB AREA | LOCATION | LOCATION DETAILS | MAJOR WORKS | SUB-LOCATION DETAILS | CR-117 - FOT | LINE | user_text1 |
| --- | --- | --- | --- | --- | --- | --- | --- | --- | --- | --- | --- | --- | --- | --- | --- | --- | --- | --- | --- | --- | --- | --- |
|  | 4 | **FLOORING SCREEDING** |  | 2026-06-09 | 2027-05-21 |  |  |  |  |  |  |  |  |  |  |  |  |  |  |  |  |  |
| 17_CN16890 |  | Floor Screeding at Underplatform Level - B4 | 16d | 2026-06-09 | 2026-06-24 | 17_CN16810 | 53d | 0d | CR117_Cost Loading; GW (Archi) [128 h]; CR117 WEIGHTAGE [895.92 h] |  | UDF_G3 | CN | CRBRH | ARH | GENL | UPV | NP | FS | GEN | N/A | CR |  |
| 17_CN16900 |  | Floor Screeding at Transfer Level - B3 | 16d | 2026-06-25 | 2026-07-10 | 17_CN16820, 17_CN16890 | 231d | 36d | CR117_Cost Loading; GW (Archi) [128 h]; CR117 WEIGHTAGE [895.92 h] |  | UDF_G3 | CN | CRBRH | ARH | GENL | GEN | PA | FS | GEN | N/A | CR |  |
| 17_CN16910 |  | Floor Screeding at Platform Level - B2 | 16d | 2026-08-16 | 2026-08-31 | 17_CN16830, 17_CN16900 | 239d | 0d | CR117_Cost Loading; GW (Archi) [128 h]; CR117 WEIGHTAGE [895.92 h] |  | UDF_G3 | CN | CRBRH | ARH | GENL | PLF | PA | FS | GEN | N/A | CR |  |
| 17_CN16920 |  | Floor Screeding at Level - B1 | 16d | 2026-09-01 | 2026-09-16 | 17_CN16840, 17_CN16910 | 313d | 96d | CR117_Cost Loading; GW (Archi) [128 h]; CR117 WEIGHTAGE [895.92 h] |  | UDF_G3 | CN | CRBRH | ARH | GENL | GEN | PA | FS | GEN | N/A | CR |  |
| 17_CN16930 |  | Floor Screeding at Entrance 8 | 14d | 2026-11-11 | 2026-11-24 | 17_CN16850 | 202d | 0d | CR117_Cost Loading; GW (Archi) [112 h]; CR117 WEIGHTAGE [779.04 h] |  | UDF_G3 | CN | CRBRH | ARH | GENL | GEN | E8 | FS | GEN | N/A | CR |  |
| 17_CN16950 |  | Floor Screeding at Entrance 6 | 14d | 2027-01-07 | 2027-01-20 | 17_CN16870 | 161d | 155d | CR117_Cost Loading; GW (Archi) [112 h]; CR117 WEIGHTAGE [779.04 h] |  | UDF_G3 | CN | CRBRH | ARH | GENL | GEN | E6 | FS | GEN | N/A | CR |  |
| 17_CN16960 |  | Floor Screeding at Entrance 7 | 14d | 2027-01-24 | 2027-02-06 | 17_CN16880 | 144d |  | CR117_Cost Loading; GW (Archi) [112 h]; CR117 WEIGHTAGE [779.04 h] |  | UDF_G3 | CN | CRBRH | ARH | GENL | GEN | E7 | FS | GEN | N/A | CR |  |
| 17_CN16940 |  | Floor Screeding at Entrance 5 (2 Weeks) | 14d | 2027-05-08 | 2027-05-21 | 17_CN16860 | 40d | 0d | CR117_Cost Loading; GW (Archi) [112 h]; CR117 WEIGHTAGE [779.04 h] |  | UDF_G3 | CN | CRBRH | ARH | GENL | GEN | E5 | FS | GEN | N/A | CR |  |
|  | 16 | **METAL & GLAZING WORKS** |  | 2026-06-25 | 2027-06-19 |  |  |  |  |  |  |  |  |  |  |  |  |  |  |  |  |  |
| 17_CN18790 |  | Metal work, Cat ladders, Railing and Lift Glass Panel work at Underplatform Level - B4 | 90d | 2026-06-25 | 2026-09-22 | 17_CN16890 | 217d | 0d | CR117_Cost Loading [898609]; GW (Archi) [720 h]; CR117 WEIGHTAGE [12110.1 h] | 898,609 | UDF_G3 | IN | CRBRH | ARH | GENL | UPV | NP | GL | GEN | 17 | CR | Ironmongery |
| 17_CN18800 |  | Metal work, Cat ladders, Railing and Lift Glass Panel work at Transfer Level - B3 | 90d | 2026-09-23 | 2026-12-21 | 17_CN18790, 17_CN16900 | 217d | 0d | CR117_Cost Loading [898608]; GW (Archi) [720 h]; CR117 WEIGHTAGE [12110.1 h] | 898,608 | UDF_G3 |  | CRBRH | ARH | GENL | GEN | PA | GL | GEN | 17 | CR | Ironmongery |
| 17_CN18810 |  | Metal work, Cat ladders, Railing and Lift Glass Panel work at Platform Level - B2 | 90d | 2026-12-22 | 2027-03-21 | 17_CN18800, 17_CN16910 | 239d | 0d | CR117_Cost Loading [898608]; GW (Archi) [720 h]; CR117 WEIGHTAGE [12110.1 h] | 898,608 | UDF_G3 |  | CRBRH | ARH | GENL | PLF | PA | GL | GEN | 17 | CR | Ironmongery |
| 17_CN18820 |  | Metal work, Cat ladders, Railing and Lift Glass Panel work at Level - B1 | 90d | 2027-03-22 | 2027-06-19 | 17_CN18810, 17_CN16920 | 273d | 186d | CR117_Cost Loading [898608]; GW (Archi) [720 h]; CR117 WEIGHTAGE [12110.1 h] | 898,608 | UDF_G3 |  | CRBRH | ARH | GENL | GEN | PA | GL | GEN | 17 | CR | Ironmongery |
|  | 9 | **EXTERNAL WINDOWS & LOUVERS** |  | 2027-02-13 | 2028-01-09 |  |  |  |  |  |  |  |  |  |  |  |  |  |  |  |  |  |
| 17_CN17860 |  | External WIndows / Louvers at Entrance 8 | 70d | 2027-02-13 | 2027-04-23 | 17_CN16930, 17_CN17140 | 202d | 0d | CR117_Cost Loading; GW (Archi) [560 h]; CR117 WEIGHTAGE [4050.96 h] |  | UDF_G3 |  | CRBRH | ARH | GENL | GEN | E8 | GL | GEN | N/A | CR |  |
| 17_CN17870 |  | External WIndows / Louvers at Entrance 5 (6 Weeks) | 42d | 2027-07-29 | 2027-09-08 | 17_CN16940, 17_CN17150, 17_CN17860 | 106d | 0d | CR117_Cost Loading; GW (Archi) [336 h]; CR117 WEIGHTAGE [2414.96 h] |  | UDF_G3 |  | CRBRH | ARH | GENL | GEN | E5 | GL | GEN | N/A | CR |  |
| 17_CN17880 |  | External WIndows / Louvers at Entrance 6 | 42d | 2027-09-01 | 2027-10-12 | 17_CN16950, 17_CN17160 | 75d | 4d | CR117_Cost Loading; GW (Archi) [400 h]; CR117 WEIGHTAGE [2882.4 h] |  | UDF_G3 |  | CRBRH | ARH | GENL | GEN | E6 | GL | GEN | N/A | CR |  |
| 17_CN17890 |  | External WIndows / Louvers at Entrance 7 | 85d | 2027-10-17 | 2028-01-09 | 17_CN16960, 17_CN17170, 17_CN17880 | 71d | 0d | CR117_Cost Loading; GW (Archi) [560 h]; CR117 WEIGHTAGE [5219.36 h] |  | UDF_G3 |  | CRBRH | ARH | GENL | GEN | E7 | GL | GEN | N/A | CR |  |
|  | 10 | **FLOOR FINISHES** |  | 2026-08-24 | 2028-02-18 |  |  |  |  |  |  |  |  |  |  |  |  |  |  |  |  |  |
| 17_CN17900 |  | Floor Finishes / Tiling at Underplatform Level - B4 | 60d | 2026-08-24 | 2026-10-22 | 17_CN16890, 17_CN16970 | 161d | 0d | CR117_Cost Loading; GW (Archi) [480 h]; CR117 WEIGHTAGE [3466.64 h] |  | UDF_G3 |  | CRBRH | ARH | GENL | UPV | NP | FF | GEN | N/A | CR |  |
| 17_CN17910 |  | Floor Finishes / Tiling at Transfer Level - B3 | 60d | 2026-10-23 | 2026-12-21 | 17_CN16900, 17_CN16980, 17_CN17900 | 187d | 0d | CR117_Cost Loading; GW (Archi) [480 h]; CR117 WEIGHTAGE [3466.64 h] |  | UDF_G3 |  | CRBRH | ARH | GENL | GEN | PA | FF | GEN | N/A | CR |  |
| 17_CN17920 |  | Floor Finishes / Tiling at Platform Level - B2 | 90d | 2026-12-22 | 2027-03-21 | 17_CN16910, 17_CN16990, 17_CN17910 | 187d | 0d | CR117_Cost Loading; GW (Archi) [840 h]; CR117 WEIGHTAGE [6095.76 h] |  | UDF_G3 |  | CRBRH | ARH | GENL | PLF | PA | FF | GEN | N/A | CR |  |
| 17_CN17930 |  | Floor Finishes / Tiling at Level - B1 | 60d | 2027-03-22 | 2027-05-20 | 17_CN16920, 17_CN17000, 17_CN17920 | 187d | 0d | CR117_Cost Loading; GW (Archi) [480 h]; CR117 WEIGHTAGE [3466.64 h] |  | UDF_G3 |  | CRBRH | ARH | GENL | GEN | PA | FF | GEN | N/A | CR |  |
| 17_CN17940 |  | Floor Finishes / Tiling at Entrance 8 | 40d | 2027-04-24 | 2027-06-02 | 17_CN17860 | 204d | 0d | CR117_Cost Loading; GW (Archi) [320 h]; CR117 WEIGHTAGE [2298.16 h] |  | UDF_G3 |  | CRBRH | ARH | GENL | GEN | E8 | FF | GEN | N/A | CR |  |
| 17_CN17950 |  | Floor Finishes / Tiling at Entrance 5 (6 Weeks) | 42d | 2027-09-09 | 2027-10-20 | 17_CN17870, 17_CN17940 | 106d | 0d | CR117_Cost Loading; GW (Archi) [336 h]; CR117 WEIGHTAGE [2414.96 h] |  | UDF_G3 |  | CRBRH | ARH | GENL | GEN | E5 | FF | GEN | N/A | CR |  |
| 17_CN17960 |  | Floor Finishes / Tiling at Entrance 6 | 39d | 2027-10-21 | 2027-11-28 | 17_CN17880, 17_CN17950 | 109d | 0d | CR117_Cost Loading; GW (Archi) [336 h]; CR117 WEIGHTAGE [2239.68 h] |  | UDF_G3 |  | CRBRH | ARH | GENL | GEN | E6 | FF | GEN | N/A | CR |  |
| 17_CN17970 |  | Floor Finishes / Tiling at Entrance 7 | 40d | 2028-01-10 | 2028-02-18 | 17_CN17890, 17_CN17960 | 71d | 0d | CR117_Cost Loading; GW (Archi) [320 h]; CR117 WEIGHTAGE [2298.16 h] |  | UDF_G3 |  | CRBRH | ARH | GENL | GEN | E7 | FF | GEN | N/A | CR |  |

| ID | WBS | Activity | Duration | Start | Finish | Predecessors | Total float | Free float | Resources | Cost | Check | AREA | SUB-PHASE | SUB AREA | LOCATION | LOCATION DETAILS | MAJOR WORKS | SUB-LOCATION DETAILS | CR-117 - FOT | LINE |
| --- | --- | --- | --- | --- | --- | --- | --- | --- | --- | --- | --- | --- | --- | --- | --- | --- | --- | --- | --- | --- |
|  | 11 | **DOORS & IRONMONGERY** |  | 2026-10-23 | 2028-03-29 |  |  |  |  |  |  |  |  |  |  |  |  |  |  |  |
| 17_CN17980 |  | Internal Door & Ironmongery at Underplatform Level - B4 | 60d | 2026-10-23 | 2026-12-21 | 17_CN17900 | 161d | 0d | CR117_Cost Loading [16035]; GW (Archi) [480 h]; CR117 WEIGHTAGE [3466.64 h] | 16,035 | UDF_G3 | CRBRH | ARH | GENL | UPV | NP | IR | GEN | 16 | CR |
| 17_CN17990 |  | Internal Door & Ironmongery at Transfer Level - B3 | 60d | 2026-12-22 | 2027-02-19 | 17_CN17980 | 187d | 0d | CR117_Cost Loading [16035]; GW (Archi) [480 h]; CR117 WEIGHTAGE [3466.64 h] | 16,035 | UDF_G3 | CRBRH | ARH | GENL | GEN | PA | IR | GEN | 16 | CR |
| 17_CN18000 |  | Internal Door & Ironmongery at Platform Level - B2 | 90d | 2027-02-20 | 2027-05-20 | 17_CN17990 | 187d | 0d | CR117_Cost Loading [28063]; GW (Archi) [840 h]; CR117 WEIGHTAGE [6095.76 h] | 28,063 | UDF_G3 | CRBRH | ARH | GENL | PLF | PA | IR | GEN | 16 | CR |
| 17_CN18010 |  | Internal Door & Ironmongery at Level - B1 | 60d | 2027-05-21 | 2027-07-19 | 17_CN17930, 17_CN18000 | 187d | 100d | CR117_Cost Loading [16035]; GW (Archi) [480 h]; CR117 WEIGHTAGE [3466.64 h] | 16,035 | UDF_G3 | CRBRH | ARH | GENL | GEN | PA | IR | GEN | 16 | CR |
| 17_CN18020 |  | Internal Door & Ironmongery at Entrance 8 | 40d | 2027-06-03 | 2027-07-12 | 17_CN17940 | 208d | 0d | CR117_Cost Loading [10690]; GW (Archi) [320 h]; CR117 WEIGHTAGE [2298.16 h] | 10,690 | UDF_G3 | CRBRH | ARH | GENL | GEN | E8 | IR | GEN | 16 | CR |
| 17_CN18030 |  | Internal Door & Ironmongery at Entrance 5 (6 Weeks) | 42d | 2027-10-21 | 2027-12-01 | 17_CN17950 | 106d | 0d | CR117_Cost Loading [11225]; GW (Archi) [320 h]; CR117 WEIGHTAGE [2414.96 h] | 11,225 | UDF_G3 | CRBRH | ARH | GENL | GEN | E5 | IR | GEN | 16 | CR |
| 17_CN18040 |  | Internal Door & Ironmongery at Entrance 6 | 42d | 2027-11-29 | 2028-01-09 | 17_CN17960 | 109d | 3d | CR117_Cost Loading [11225]; GW (Archi) [310 h]; CR117 WEIGHTAGE [2414.96 h] | 11,225 | UDF_G3 | CRBRH | ARH | GENL | GEN | E6 | IR | GEN | 16 | CR |
| 17_CN18050 |  | Internal Door & Ironmongery at Entrance 7 | 40d | 2028-02-19 | 2028-03-29 | 17_CN17970 | 71d | 0d | CR117_Cost Loading [10690]; GW (Archi) [320 h]; CR117 WEIGHTAGE [2298.16 h] | 10,690 | UDF_G3 | CRBRH | ARH | GENL | GEN | E7 | IR | GEN | 16 | CR |
|  | 12 | **WALL FINISHES** |  | 2027-04-09 | 2028-05-08 |  |  |  |  |  |  |  |  |  |  |  |  |  |  |  |
| 17_CN18060 |  | Wall Finishes / Cladding & Painting at Underplatform Level - B4 (8 Weeks) | 56d | 2027-04-09 | 2027-06-03 | 17_CN17180, 17_CN17350, 17_CN17520, 17_CN17980, 17_CN18790 | 53d | 0d | CR117_Cost Loading; GW (Archi) [448 h]; CR117 WEIGHTAGE [3232.88 h] |  | UDF_G3 | CRBRH | ARH | GENL | UPV | NP | CL | GEN | N/A | CR |
| 17_CN18070 |  | Wall Finishes / Cladding & Painting at Transfer Level - B3 (8 Weeks) | 56d | 2027-06-04 | 2027-07-29 | 17_CN17180, 17_CN17360, 17_CN17530, 17_CN18060, 17_CN18800 | 53d | 0d | CR117_Cost Loading; GW (Archi) [448 h]; CR117 WEIGHTAGE [3232.88 h] |  | UDF_G3 | CRBRH | ARH | GENL | GEN | PA | CL | GEN | N/A | CR |
| 17_CN18120 |  | Wall Finishes / Cladding & Painting at Entrance 8 | 40d | 2027-07-13 | 2027-08-21 | 17_CN18020 | 208d | 0d | CR117_Cost Loading; GW (Archi) [320 h]; CR117 WEIGHTAGE [2298.16 h] |  | UDF_G3 | CRBRH | ARH | GENL | GEN | E8 | CL | GEN | N/A | CR |
| 17_CN18080 |  | Wall Finishes / Cladding & Painting at Platform Level - B2 (Cladding Frames) (8 Weeks) | 56d | 2027-07-30 | 2027-09-23 | 17_CN18070 | 53d | 0d | CR117_Cost Loading; GW (Archi) [448 h]; CR117 WEIGHTAGE [3232.88 h] |  | UDF_G3 | CRBRH | ARH | GENL | PLF | PA | CL | GEN | N/A | CR |
| 17_CN18090 |  | Wall Finishes / Cladding & Painting at Platform Level - B2 (Cladding Panels) | 90d | 2027-09-24 | 2027-12-22 | 17_CN17190, 17_CN17370, 17_CN17540, 17_CN18080, 17_CN18810 | 53d | 0d | CR117_Cost Loading; GW (Archi) [380 h]; CR117 WEIGHTAGE [5219.36 h] |  | UDF_G3 | CRBRH | ARH | GENL | PLF | PA | CL | GEN | N/A | CR |
| 17_CN18100 |  | Wall Finishes / Cladding & Painting at Level - B1 (Cladding Frames) (8 Weeks) | 56d | 2027-10-28 | 2027-12-22 | 17_CN18010, 17_CN18080, 17_CN17550 | 87d | 0d | CR117_Cost Loading; GW (Archi) [280 h]; CR117 WEIGHTAGE [3232.88 h] |  | UDF_G3 | CRBRH | ARH | GENL | GEN | PA | CL | GEN | N/A | CR |
| 17_CN18130 |  | Wall Finishes / Cladding & Painting at Entrance 5 (6 Weeks) | 42d | 2027-12-02 | 2028-01-12 | 17_CN18030, 17_CN18120 | 106d | 0d | CR117_Cost Loading; GW (Archi) [320 h]; CR117 WEIGHTAGE [2414.96 h] |  | UDF_G3 | CRBRH | ARH | GENL | GEN | E5 | CL | GEN | N/A | CR |
| 17_CN18110 |  | Wall Finishes / Cladding & Painting at Level - B1 (Cladding Panels) | 90d | 2027-12-23 | 2028-03-21 | 17_CN17200, 17_CN17380, 17_CN17550, 17_CN18010, 17_CN18090, 17_CN18820, 17_CN18100 | 87d | 0d | CR117_Cost Loading; GW (Archi) [690 h]; CR117 WEIGHTAGE [5219.36 h] |  | UDF_G3 | CRBRH | ARH | GENL | GEN | PA | CL | GEN | N/A | CR |
| 17_CN18140 |  | Wall Finishes / Cladding & Painting at Entrance 6 | 42d | 2028-01-13 | 2028-02-23 | 17_CN18040, 17_CN18130 | 106d | 0d | CR117_Cost Loading; GW (Archi) [336 h]; CR117 WEIGHTAGE [2414.96 h] |  | UDF_G3 | CRBRH | ARH | GENL | GEN | E6 | CL | GEN | N/A | CR |
| 17_CN18150 |  | Wall Finishes / Cladding & Painting at Entrance 7 | 40d | 2028-03-30 | 2028-05-08 | 17_CN18050, 17_CN18140 | 71d | 0d | CR117_Cost Loading; GW (Archi) [320 h]; CR117 WEIGHTAGE [2298.16 h] |  | UDF_G3 | CRBRH | ARH | GENL | GEN | E7 | CL | GEN | N/A | CR |
|  | 13 | **CEILING** |  | 2027-06-08 | 2028-06-17 |  |  |  |  |  |  |  |  |  |  |  |  |  |  |  |
| 17_CN18160 |  | Ceiling Finishes / Panels at Underplatform Level - B4 | 60d | 2027-06-08 | 2027-08-06 | 17_CN17180, 17_CN17350, 17_CN17520, 17_CN17690, 17_CN18060, 17_CN18790 | 131d | 0d | CR117_Cost Loading; GW (Archi) [480 h]; CR117 WEIGHTAGE [3466.64 h] |  | UDF_G3 | CRBRH | ARH | GENL | UPV | NP | CE | GEN | N/A | CR |
| 17_CN18170 |  | Ceiling Finishes / Panels at Transfer Level - B3 | 60d | 2027-08-07 | 2027-10-05 | 17_CN17190, 17_CN17360, 17_CN17530, 17_CN17700, 17_CN18160, 17_CN18800, 17_CN18070 | 131d | 0d | CR117_Cost Loading; GW (Archi) [480 h]; CR117 WEIGHTAGE [3466.64 h] |  | UDF_G3 | CRBRH | ARH | GENL | GEN | PA | CE | GEN | N/A | CR |
| 17_CN18200 |  | Ceiling Finishes / Panels at Entrance 8 | 40d | 2027-08-22 | 2027-09-30 | 17_CN17730, 17_CN18120 | 212d | 0d | CR117_Cost Loading; GW (Archi) [320 h]; CR117 WEIGHTAGE [2298.16 h] |  | UDF_G3 | CRBRH | ARH | GENL | GEN | E8 | CE | GEN | N/A | CR |
| 17_CN18180 |  | Ceiling Finishes / Panels at Platform Level - B2 | 90d | 2027-12-23 | 2028-03-21 | 17_CN17200, 17_CN17370, 17_CN17540, 17_CN17710, 17_CN18170, 17_CN18810, 17_CN18080, 17_CN18090 | 53d | 0d | CR117_Cost Loading; GW (Archi) [720 h]; CR117 WEIGHTAGE [5219.36 h] |  | UDF_G3 | CRBRH | ARH | GENL | PLF | PA | CE | GEN | N/A | CR |
| 17_CN18210 |  | Ceiling Finishes / Panels at Entrance 5 | 40d | 2028-01-13 | 2028-02-21 | 17_CN17740, 17_CN18130 | 108d | 0d | CR117_Cost Loading; GW (Archi) [320 h]; CR117 WEIGHTAGE [2298.16 h] |  | UDF_G3 | CRBRH | ARH | GENL | GEN | E5 | CE | GEN | N/A | CR |
| 17_CN18220 |  | Ceiling Finishes / Panels at Entrance 6 | 40d | 2028-02-24 | 2028-04-03 | 17_CN17750, 17_CN18140 | 106d | 0d | CR117_Cost Loading; GW (Archi) [320 h]; CR117 WEIGHTAGE [2298.16 h] |  | UDF_G3 | CRBRH | ARH | GENL | GEN | E6 | CE | GEN | N/A | CR |
| 17_CN18190 |  | Ceiling Finishes / Panels at Level - B1 (8 Weeks) | 56d | 2028-03-22 | 2028-05-16 | 17_CN17210, 17_CN17380, 17_CN17550, 17_CN17720, 17_CN18110, 17_CN18180, 17_CN18100, 17_CN18820 | 87d | 4d | CR117_Cost Loading; GW (Archi) [448 h]; CR117 WEIGHTAGE [3232.88 h] |  | UDF_G3 | CRBRH | ARH | GENL | GEN | PA | CE | GEN | N/A | CR |
| 17_CN18230 |  | Ceiling Finishes / Panels at Entrance 7 | 40d | 2028-05-09 | 2028-06-17 | 17_CN17760, 17_CN18150 | 71d | 0d | CR117_Cost Loading; GW (Archi) [320 h]; CR117 WEIGHTAGE [2298.16 h] |  | UDF_G3 | CRBRH | ARH | GENL | GEN | E7 | CE | GEN | N/A | CR |

| ID | WBS | Activity | Duration | Start | Finish | Predecessors | Total float | Free float | Resources | Cost | Check | AREA | SUB-PHASE | SUB AREA | LOCATION | LOCATION DETAILS | MAJOR WORKS | SUB-LOCATION DETAILS | CR-117 - FOT | LINE |
| --- | --- | --- | --- | --- | --- | --- | --- | --- | --- | --- | --- | --- | --- | --- | --- | --- | --- | --- | --- | --- |
|  | 14 | **SIGNAGE** |  | 2027-08-07 | 2029-01-05 |  |  |  |  |  |  |  |  |  |  |  |  |  |  |  |
| 17_CN18240 |  | Signage at Underplatform Level - B4 | 60d | 2027-08-07 | 2027-10-05 | 17_CN18160 | 269d | 0d | CR117_Cost Loading [36585]; GW (Archi) [480 h]; CR117 WEIGHTAGE [3466.64 h] | 36,585 | UDF_G3 | CRBRH | ARH | GENL | UPV | NP | IR | GEN | 13 | CR |
| 17_CN18250 |  | Signage at Transfer Level - B3 | 60d | 2027-10-06 | 2027-12-04 | 17_CN18170, 17_CN18240 | 269d | 108d | CR117_Cost Loading [36585]; GW (Archi) [480 h]; CR117 WEIGHTAGE [3466.64 h] | 36,585 | UDF_G3 | CRBRH | ARH | GENL | GEN | PA | IR | GEN | 13 | CR |
| 17_CN18260 |  | Signage at Platform Level - B2 | 90d | 2028-03-22 | 2028-06-19 | 17_CN18180, 17_CN18250 | 161d | 0d | CR117_Cost Loading [54878]; GW (Archi) [720 h]; CR117 WEIGHTAGE [5219.36 h] | 54,878 | UDF_G3 | CRBRH | ARH | GENL | PLF | PA | IR | GEN | 13 | CR |
| 17_CN18270 |  | Signage at Level - B1 | 60d | 2028-06-20 | 2028-08-18 | 17_CN18190, 17_CN18260 | 161d | 0d | CR117_Cost Loading [36585]; GW (Archi) [480 h]; CR117 WEIGHTAGE [3466.64 h] | 36,585 | UDF_G3 | CRBRH | ARH | GENL | GEN | PA | IR | GEN | 13 | CR |
| 17_CN18280 |  | Signage at Entrance 8 (5 Weeks) | 35d | 2028-08-19 | 2028-09-22 | 17_CN18200, 17_CN18270 | 161d | 0d | CR117_Cost Loading [21341]; GW (Archi) [280 h]; CR117 WEIGHTAGE [2006 h] | 21,341 | UDF_G3 | CRBRH | ARH | GENL | GEN | E8 | IR | GEN | 13 | CR |
| 17_CN18290 |  | Signage at Entrance 5 (5 Weeks) | 35d | 2028-09-23 | 2028-10-27 | 17_CN18210, 17_CN18280 | 161d | 0d | CR117_Cost Loading [21341]; GW (Archi) [280 h]; CR117 WEIGHTAGE [2006 h] | 21,341 | UDF_G3 | CRBRH | ARH | GENL | GEN | E5 | IR | GEN | 13 | CR |
| 17_CN18300 |  | Signage at Entrance 6 (5 Weeks) | 35d | 2028-10-28 | 2028-12-01 | 17_CN18220, 17_CN18290 | 161d | 0d | CR117_Cost Loading [21341]; GW (Archi) [280 h]; CR117 WEIGHTAGE [2006 h] | 21,341 | UDF_G3 | CRBRH | ARH | GENL | GEN | E6 | IR | GEN | 13 | CR |
| 17_CN18310 |  | Signage at Entrance 7 (5 Weeks) | 35d | 2028-12-02 | 2029-01-05 | 17_CN18230, 17_CN18300 | 161d |  | CR117_Cost Loading [21341]; GW (Archi) [280 h]; CR117 WEIGHTAGE [2006 h] | 21,341 | UDF_G3 | CRBRH | ARH | GENL | GEN | E7 | IR | GEN | 13 | CR |
|  | 17 | **M&E WORKS** |  | 2026-06-25 | 2028-11-16 |  |  |  |  |  |  |  |  |  |  |  |  |  |  |  |
|  | 1 | **PLUMBING AND SANITARY SYSTEMS** |  | 2026-06-25 | 2028-07-22 |  |  |  |  |  |  |  |  |  |  |  |  |  |  |  |
| 17_CN16970 |  | Plumbing for Drainage & Water Services & Sanitary System at Underplatform Level - B4 | 60d | 2026-06-25 | 2026-08-23 | 17_CN16890 | 53d | 0d | CR117_Cost Loading [444537]; GW (P&S) [480 h]; CR117 WEIGHTAGE [7098.16 h] | 444,537.36 | UDF_G3 | CRBRH | ARH | GENL | UPV | NP | SA | GEN | 18 | CR |
| 17_CN16980 |  | Plumbing for Drainage & Water Services & Sanitary System at Transfer Level - B3 | 60d | 2026-08-24 | 2026-10-22 | 17_CN16900, 17_CN16970 | 187d | 0d | CR117_Cost Loading [444537]; GW (P&S) [480 h]; CR117 WEIGHTAGE [7098.16 h] | 444,537.36 | UDF_G3 | CRBRH | ARH | GENL | GEN | PA | SA | GEN | 18 | CR |
| 17_CN16990 |  | Plumbing for Drainage & Water Services & Sanitary System at Platform Level - B2 | 60d | 2026-10-23 | 2026-12-21 | 17_CN16910, 17_CN16980 | 187d | 0d | CR117_Cost Loading [444537]; GW (P&S) [480 h]; CR117 WEIGHTAGE [7098.16 h] | 444,537.36 | UDF_G3 | CRBRH | ARH | GENL | PLF | PA | SA | GEN | 18 | CR |
| 17_CN17010 |  | Plumbing for Drainage & Water Services & Sanitary System at Entrance 8 | 40d | 2026-11-25 | 2027-01-03 | 17_CN16930 | 202d | 0d | CR117_Cost Loading [296358]; GW (P&S) [320 h]; CR117 WEIGHTAGE [4719.04 h] | 296,358.24 | UDF_G3 | CRBRH | ARH | GENL | GEN | E8 | SA | GEN | 18 | CR |
| 17_CN17000 |  | Plumbing for Drainage & Water Services & Sanitary System at Level - B1 | 60d | 2026-12-22 | 2027-02-19 | 17_CN16920, 17_CN16990 | 217d | 0d | CR117_Cost Loading [444537]; GW (P&S) [480 h]; CR117 WEIGHTAGE [7098.16 h] | 444,537.36 | UDF_G3 | CRBRH | ARH | GENL | GEN | PA | SA | GEN | 18 | CR |
| 17_CN17020 |  | Plumbing for Drainage & Water Services & Sanitary System at Entrance 5 | 34d | 2027-05-22 | 2027-06-24 | 17_CN16940, 17_CN17010 | 71d | 0d | CR117_Cost Loading [251904]; GW (P&S) [320 h]; CR117 WEIGHTAGE [4719.04 h] | 251,904.5 | UDF_G3 | CRBRH | ARH | GENL | GEN | E5 | SA | GEN | 18 | CR |
| 17_CN17030 |  | Plumbing for Drainage & Water Services & Sanitary System at Entrance 6 | 34d | 2027-06-25 | 2027-07-28 | 17_CN16950, 17_CN17020 | 71d | 0d | CR117_Cost Loading [251904]; GW (P&S) [320 h]; CR117 WEIGHTAGE [4719.04 h] | 251,904.5 | UDF_G3 | CRBRH | ARH | GENL | GEN | E6 | SA | GEN | 18 | CR |
| 17_CN17040 |  | Plumbing for Drainage & Water Services & Sanitary System at Entrance 7 | 40d | 2027-07-29 | 2027-09-06 | 17_CN16960, 17_CN17030 | 71d | 0d | CR117_Cost Loading [296358]; GW (P&S) [320 h]; CR117 WEIGHTAGE [4719.04 h] | 296,358.24 | UDF_G3 | CRBRH | ARH | GENL | GEN | E7 | SA | GEN | 18 | CR |
| 17_CN17050 |  | Sanitary Fittings - Final Fix at Underplatform Level - B4 | 40d | 2027-08-07 | 2027-09-15 | 17_CN16970, 17_CN18160 | 279d | 20d | CR117_Cost Loading [296358]; GW (P&S) [320 h]; CR117 WEIGHTAGE [4719.04 h] | 296,358.24 | UDF_G3 | CRBRH | ARH | GENL | GEN | NP | SA | GEN | 18 | CR |
| 17_CN17060 |  | Sanitary Fittings - Final Fix at Transfer Level - B3 | 40d | 2027-10-06 | 2027-11-14 | 17_CN17050, 17_CN18070, 17_CN18170 | 259d | 128d | CR117_Cost Loading [296358]; GW (P&S) [320 h]; CR117 WEIGHTAGE [4719.04 h] | 296,358.24 | UDF_G3 | CRBRH | ARH | GENL | GEN | PA | SA | GEN | 18 | CR |
| 17_CN17070 |  | Sanitary Fittings - Final Fix at Platform Level - B2 | 60d | 2028-03-22 | 2028-05-20 | 17_CN17060, 17_CN18090, 17_CN18180, 17_CN18080 | 131d | 0d | CR117_Cost Loading [444537]; GW (P&S) [480 h]; CR117 WEIGHTAGE [7098.16 h] | 444,537.36 | UDF_G3 | CRBRH | ARH | GENL | GEN | PA | SA | GEN | 18 | CR |
| 17_CN17080 |  | Sanitary Fittings - Final Fix at Level - B1 (5 Weeks) | 35d | 2028-05-21 | 2028-06-24 | 17_CN17070, 17_CN18190, 17_CN18100 | 131d | 0d | CR117_Cost Loading [259313]; GW (P&S) [280 h]; CR117 WEIGHTAGE [4124.4 h] | 259,313.46 | UDF_G3 | CRBRH | ARH | GENL | GEN | PA | SA | GEN | 18 | CR |
| 17_CN17090 |  | Plumbing and Sanitary systems - Testing and Commissioning (4 Weeks) | 28d | 2028-06-25 | 2028-07-22 | 17_CN17040, 17_CN17050, 17_CN17060, 17_CN17070, 17_CN17080 | 131d |  | CR117_Cost Loading [207451]; GW (P&S) [224 h]; CR117 WEIGHTAGE [3291.68 h] | 207,450.78 | UDF_G3 | CRBRH | ARH | GENL | GEN | GN | SA | GEN | 18 | CR |

| ID | WBS | Activity | Duration | Start | Finish | Predecessors | Total float | Free float | Resources | Check | AREA | SUB-PHASE | SUB AREA | LOCATION | LOCATION DETAILS | SUB-LOCATION DETAILS | CR-117 - FOT | LINE |
| --- | --- | --- | --- | --- | --- | --- | --- | --- | --- | --- | --- | --- | --- | --- | --- | --- | --- | --- |
|  | 12 | **COMMUNICATIONS & ELECTRICAL SYSTEM** |  | 2026-08-24 | 2028-09-23 |  |  |  |  |  |  |  |  |  |  |  |  |  |
|  | 1 | **EARTHING AND LIGHTNING PROTECTION SYSTEM** |  | 2026-08-24 | 2027-10-16 |  |  |  |  |  |  |  |  |  |  |  |  |  |
| 17_CN17100 |  | Lightning Protection - Conduit/Wiring at Underplatform Level - B4 | 60d | 2026-08-24 | 2026-10-22 | 17_CN16970 | 53d | 0d | CR117_Cost Loading; GW (M&E) [480 h]; CR117 WEIGHTAGE [5791.92 h] | UDF_G3 | CRBRH | ARH | GENL | UPV | NP | GEN | N/A | CR |
| 17_CN17110 |  | Lightning Protection - Conduit/Wiring at Transfer Level - B3 | 60d | 2026-10-23 | 2026-12-21 | 17_CN17100 | 269d | 0d | CR117_Cost Loading; GW (M&E) [480 h]; CR117 WEIGHTAGE [5791.92 h] | UDF_G3 | CRBRH | ARH | GENL | GEN | PA | GEN | N/A | CR |
| 17_CN17120 |  | Lightning Protection - Conduit/Wiring at Platform Level - B2 | 60d | 2026-12-22 | 2027-02-19 | 17_CN17110 | 269d | 0d | CR117_Cost Loading; GW (M&E) [480 h]; CR117 WEIGHTAGE [5791.92 h] | UDF_G3 | CRBRH | ARH | GENL | PLF | PA | GEN | N/A | CR |
| 17_CN17140 |  | Lightning Protection - Conduit/Wiring at Entrance 8 | 40d | 2027-01-04 | 2027-02-12 | 17_CN17010 | 202d | 0d | CR117_Cost Loading; GW (M&E) [320 h]; CR117 WEIGHTAGE [3848.32 h] | UDF_G3 | CRBRH | ARH | GENL | GEN | E8 | GEN | N/A | CR |
| 17_CN17130 |  | Lightning Protection - Conduit/Wiring at Level - B1 | 60d | 2027-02-20 | 2027-04-20 | 17_CN17000, 17_CN17120 | 363d | 30d | CR117_Cost Loading; GW (M&E) [480 h]; CR117 WEIGHTAGE [5791.92 h] | UDF_G3 | CRBRH | ARH | GENL | GEN | PA | GEN | N/A | CR |
| 17_CN17150 |  | Lightning Protection - Conduit/Wiring at Entrance 5 | 34d | 2027-06-25 | 2027-07-28 | 17_CN17020, 17_CN17140 | 75d | 0d | CR117_Cost Loading; GW (M&E) [320 h]; CR117 WEIGHTAGE [3848.32 h] | UDF_G3 | CRBRH | ARH | GENL | GEN | E5 | GEN | N/A | CR |
| 17_CN17160 |  | Lightning Protection - Conduit/Wiring at Entrance 6 | 34d | 2027-07-29 | 2027-08-31 | 17_CN17030, 17_CN17150 | 75d | 0d | CR117_Cost Loading; GW (M&E) [320 h]; CR117 WEIGHTAGE [3848.32 h] | UDF_G3 | CRBRH | ARH | GENL | GEN | E6 | GEN | N/A | CR |
| 17_CN17170 |  | Lightning Protection - Conduit/Wiring at Entrance 7 | 40d | 2027-09-07 | 2027-10-16 | 17_CN17040, 17_CN17160 | 71d | 0d | CR117_Cost Loading; GW (M&E) [320 h]; CR117 WEIGHTAGE [3848.32 h] | UDF_G3 | CRBRH | ARH | GENL | GEN | E7 | GEN | N/A | CR |
|  | 2 | **POWER DISTRIBUTION AND LIGHTING/ILUMINATION SYSTEM** |  | 2026-10-23 | 2028-09-23 |  |  |  |  |  |  |  |  |  |  |  |  |  |
| 17_CN17180 |  | Power and Lighting - Cable Tray / Conduit / Wiring at Underplatform Level - B4 (8 Weeks) | 56d | 2026-10-23 | 2026-12-17 | 17_CN17100 | 53d | 0d | CR117_Cost Loading; GW (M&E) [448 h]; CR117 WEIGHTAGE [3232.88 h] | UDF_G3 | CRBRH | ARH | GENL | UPV | NP | GEN | N/A | CR |
| 17_CN17190 |  | Power and Lighting - Cable Tray / Conduit / Wiring at Transfer Level - B3 | 60d | 2026-12-22 | 2027-02-19 | 17_CN17110, 17_CN17180 | 269d | 0d | CR117_Cost Loading; GW (M&E) [480 h]; CR117 WEIGHTAGE [3466.64 h] | UDF_G3 | CRBRH | ARH | GENL | GEN | PA | GEN | N/A | CR |
| 17_CN17220 |  | Power and Lighting - Cable Tray / Conduit / Wiring at Entrance 8 | 40d | 2027-02-13 | 2027-03-24 | 17_CN17140 | 258d | 0d | CR117_Cost Loading; GW (M&E) [320 h]; CR117 WEIGHTAGE [2298.16 h] | UDF_G3 | CRBRH | ARH | GENL | GEN | E8 | GEN | N/A | CR |
| 17_CN17200 |  | Power and Lighting - Cable Tray / Conduit / Wiring at Platform Level - B2 | 90d | 2027-02-20 | 2027-05-20 | 17_CN17120, 17_CN17190 | 269d | 0d | CR117_Cost Loading; GW (M&E) [720 h]; CR117 WEIGHTAGE [5219.36 h] | UDF_G3 | CRBRH | ARH | GENL | PLF | PA | GEN | N/A | CR |
| 17_CN17210 |  | Power and Lighting - Cable Tray / Conduit / Wiring at Level - B1 | 60d | 2027-05-21 | 2027-07-19 | 17_CN17130, 17_CN17200 | 333d | 246d | CR117_Cost Loading; GW (M&E) [480 h]; CR117 WEIGHTAGE [3466.64 h] | UDF_G3 | CRBRH | ARH | GENL | GEN | PA | GEN | N/A | CR |
| 17_CN17230 |  | Power and Lighting - Cable Tray / Conduit / Wiring at Entrance 5 | 40d | 2027-07-29 | 2027-09-06 | 17_CN17150 | 132d | 0d | CR117_Cost Loading; GW (M&E) [320 h]; CR117 WEIGHTAGE [2298.16 h] | UDF_G3 | CRBRH | ARH | GENL | GEN | E5 | GEN | N/A | CR |
| 17_CN17260 |  | Power and Lighting - Final Fix at Underplatform Level - B4 | 60d | 2027-08-07 | 2027-10-05 | 17_CN17180, 17_CN18160 | 161d | 0d | CR117_Cost Loading; GW (M&E) [480 h]; CR117 WEIGHTAGE [3466.64 h] | UDF_G3 | CRBRH | ARH | GENL | UPV | NP | GEN | N/A | CR |
| 17_CN17240 |  | Power and Lighting - Cable Tray / Conduit / Wiring at Entrance 6 | 40d | 2027-09-01 | 2027-10-10 | 17_CN17160 | 138d | 0d | CR117_Cost Loading; GW (M&E) [320 h]; CR117 WEIGHTAGE [2298.16 h] | UDF_G3 | CRBRH | ARH | GENL | GEN | E6 | GEN | N/A | CR |
| 17_CN17300 |  | Power and Lighting - Final Fix at Entrance 8 | 40d | 2027-10-01 | 2027-11-09 | 17_CN17220, 17_CN18200 | 212d | 104d | CR117_Cost Loading; GW (M&E) [320 h]; CR117 WEIGHTAGE [2298.16 h] | UDF_G3 | CRBRH | ARH | GENL | GEN | E8 | GEN | N/A | CR |
| 17_CN17270 |  | Power and Lighting - Final Fix at Transfer Level - B3 | 60d | 2027-10-06 | 2027-12-04 | 17_CN17260, 17_CN18170 | 161d | 108d | CR117_Cost Loading; GW (M&E) [480 h]; CR117 WEIGHTAGE [3466.64 h] | UDF_G3 | CRBRH | ARH | GENL | GEN | PA | GEN | N/A | CR |
| 17_CN17250 |  | Power and Lighting - Cable Tray / Conduit / Wiring at Entrance 7 | 40d | 2027-10-17 | 2027-11-25 | 17_CN17170 | 132d | 0d | CR117_Cost Loading; GW (M&E) [320 h]; CR117 WEIGHTAGE [2298.16 h] | UDF_G3 | CRBRH | ARH | GENL | GEN | E7 | GEN | N/A | CR |
| 17_CN17310 |  | Power and Lighting - Final Fix at Entrance 5 | 40d | 2028-02-22 | 2028-04-01 | 17_CN17230, 17_CN17300, 17_CN18210 | 108d | 2d | CR117_Cost Loading; GW (M&E) [320 h]; CR117 WEIGHTAGE [2298.16 h] | UDF_G3 | CRBRH | ARH | GENL | GEN | E5 | GEN | N/A | CR |
| 17_CN17280 |  | Power and Lighting - Final Fix at Platform Level - B2 | 90d | 2028-03-22 | 2028-06-19 | 17_CN17270, 17_CN18180 | 53d | 0d | CR117_Cost Loading; GW (M&E) [840 h]; CR117 WEIGHTAGE [6095.76 h] | UDF_G3 | CRBRH | ARH | GENL | PLF | PA | GEN | N/A | CR |
| 17_CN17320 |  | Power and Lighting - Final Fix at Entrance 6 | 40d | 2028-04-04 | 2028-05-13 | 17_CN17240, 17_CN17310, 17_CN18220 | 106d | 35d | CR117_Cost Loading; GW (M&E) [320 h]; CR117 WEIGHTAGE [2298.16 h] | UDF_G3 | CRBRH | ARH | GENL | GEN | E6 | GEN | N/A | CR |
| 17_CN17330 |  | Power and Lighting - Final Fix at Entrance 7 | 40d | 2028-06-18 | 2028-07-27 | 17_CN17250, 17_CN17320, 17_CN18230 | 71d | 18d | CR117_Cost Loading; GW (M&E) [320 h]; CR117 WEIGHTAGE [2298.16 h] | UDF_G3 | CRBRH | ARH | GENL | GEN | E7 | GEN | N/A | CR |
| 17_CN17290 |  | Power and Lighting - Final Fix at Level - B1 (8 Weeks) | 56d | 2028-06-20 | 2028-08-14 | 17_CN17210, 17_CN17280, 17_CN18190 | 53d | 0d | CR117_Cost Loading; GW (M&E) [448 h]; CR117 WEIGHTAGE [3232.88 h] | UDF_G3 | CRBRH | ARH | GENL | GEN | PA | GEN | N/A | CR |
| 17_CN17340 |  | Power and Lighting - Testing and Commissioning | 40d | 2028-08-15 | 2028-09-23 | 17_CN17260, 17_CN17270, 17_CN17280, 17_CN17290, 17_CN17300, 17_CN17310, 17_CN17320, 17_CN17330 | 53d |  | CR117_Cost Loading; GW (M&E) [320 h]; CR117 WEIGHTAGE [2298.16 h] | UDF_G3 | CRBRH | ARH | GENL | GEN | GN | GEN | N/A | CR |

| ID | WBS | Activity | Duration | Start | Finish | Predecessors | Total float | Free float | Resources | Check | AREA | SUB-PHASE | SUB AREA | LOCATION | LOCATION DETAILS | SUB-LOCATION DETAILS | CR-117 - FOT | LINE | PHASE |
| --- | --- | --- | --- | --- | --- | --- | --- | --- | --- | --- | --- | --- | --- | --- | --- | --- | --- | --- | --- |
|  | 3 | **COMMUNICATION, RADIO, SECURITY & CCTV SYSTEM** |  | 2026-12-18 | 2028-09-22 |  |  |  |  |  |  |  |  |  |  |  |  |  |  |
| 17_CN17350 |  | Comm. & Security - Cable Tray / Conduit / Wiring at Underplatform Level - B4 (8 Weeks) | 56d | 2026-12-18 | 2027-02-11 | 17_CN17180 | 53d | 0d | CR117_Cost Loading; GW (M&E) [448 h]; CR117 WEIGHTAGE [3232.88 h] | UDF_G3 | CRBRH | ARH | GENL | UPV | NP | GEN | N/A | CR |  |
| 17_CN17360 |  | Comm. & Security - Cable Tray / Conduit / Wiring at Transfer Level - B3 | 60d | 2027-02-12 | 2027-04-12 | 17_CN17350 | 105d | 0d | CR117_Cost Loading; GW (M&E) [480 h]; CR117 WEIGHTAGE [3466.64 h] | UDF_G3 | CRBRH | ARH | GENL | GEN | PA | GEN | N/A | CR |  |
| 17_CN17390 |  | Comm. & Security - Cable Tray / Conduit / Wiring at Entrance 8 | 40d | 2027-03-25 | 2027-05-03 | 17_CN17220 | 258d | 0d | CR117_Cost Loading; GW (M&E) [320 h]; CR117 WEIGHTAGE [2298.16 h] | UDF_G3 | CRBRH | ARH | GENL | GEN | E8 | GEN | N/A | CR |  |
| 17_CN17370 |  | Comm. & Security - Cable Tray / Conduit / Wiring at Platform Level - B2 | 90d | 2027-04-13 | 2027-07-11 | 17_CN17360 | 127d | 0d | CR117_Cost Loading; GW (M&E) [720 h]; CR117 WEIGHTAGE [5219.36 h] | UDF_G3 | CRBRH | ARH | GENL | PLF | PA | GEN | N/A | CR |  |
| 17_CN17380 |  | Comm. & Security - Cable Tray / Conduit / Wiring at Level - B1 | 60d | 2027-07-12 | 2027-09-09 | 17_CN17370 | 191d | 104d | CR117_Cost Loading; GW (M&E) [480 h]; CR117 WEIGHTAGE [3466.64 h] | UDF_G3 | CRBRH | ARH | GENL | GEN | PA | GEN | N/A | CR |  |
| 17_CN17430 |  | Comm. & Security - Final Fix at Underplatform Level - B4 | 60d | 2027-08-07 | 2027-10-05 | 17_CN17350, 17_CN18160 | 207d | 0d | CR117_Cost Loading; GW (M&E) [480 h]; CR117 WEIGHTAGE [3466.64 h] | UDF_G3 | CRBRH | ARH | GENL | GEN | NP | GEN | N/A | CR |  |
| 17_CN17400 |  | Comm. & Security - Cable Tray / Conduit / Wiring at Entrance 5 | 40d | 2027-09-07 | 2027-10-16 | 17_CN17230 | 132d | 0d | CR117_Cost Loading; GW (M&E) [320 h]; CR117 WEIGHTAGE [2298.16 h] | UDF_G3 | CRBRH | ARH | GENL | GEN | E5 | GEN | N/A | CR |  |
| 17_CN17470 |  | Comm. & Security - Final Fix at Entrance 8 | 40d | 2027-10-01 | 2027-11-09 | 17_CN17390, 17_CN18200 | 252d | 104d | CR117_Cost Loading; GW (M&E) [320 h]; CR117 WEIGHTAGE [2298.16 h] | UDF_G3 | CRBRH | ARH | GENL | GEN | E8 | GEN | N/A | CR |  |
| 17_CN17440 |  | Comm. & Security - Final Fix at Transfer Level - B3 | 60d | 2027-10-06 | 2027-12-04 | 17_CN17360, 17_CN17430, 17_CN18170 | 207d | 108d | CR117_Cost Loading; GW (M&E) [480 h]; CR117 WEIGHTAGE [3466.64 h] | UDF_G3 | CRBRH | ARH | GENL | GEN | PA | GEN | N/A | CR |  |
| 17_CN17410 |  | Comm. & Security - Cable Tray / Conduit / Wiring at Entrance 6 | 40d | 2027-10-11 | 2027-11-19 | 17_CN17240 | 138d | 0d | CR117_Cost Loading; GW (M&E) [320 h]; CR117 WEIGHTAGE [2298.16 h] | UDF_G3 | CRBRH | ARH | GENL | GEN | E6 | GEN | N/A | CR |  |
| 17_CN17420 |  | Comm. & Security - Cable Tray / Conduit / Wiring at Entrance 7 | 40d | 2027-11-26 | 2028-01-04 | 17_CN17250 | 132d | 0d | CR117_Cost Loading; GW (M&E) [320 h]; CR117 WEIGHTAGE [2298.16 h] | UDF_G3 | CRBRH | ARH | GENL | GEN | E7 | GEN | N/A | CR |  |
| 17_CN17480 |  | Comm. & Security - Final Fix at Entrance 5 | 40d | 2028-02-22 | 2028-04-01 | 17_CN17400, 17_CN17470, 17_CN18210 | 148d | 2d | CR117_Cost Loading; GW (M&E) [320 h]; CR117 WEIGHTAGE [2298.16 h] | UDF_G3 | CRBRH | ARH | GENL | GEN | E5 | GEN | N/A | CR |  |
| 17_CN17450 |  | Comm. & Security - Final Fix at Platform Level - B2 | 90d | 2028-03-22 | 2028-06-19 | 17_CN17370, 17_CN17440, 17_CN18180 | 99d | 0d | CR117_Cost Loading; GW (M&E) [840 h]; CR117 WEIGHTAGE [6095.76 h] | UDF_G3 | CRBRH | ARH | GENL | PLF | PA | GEN | N/A | CR |  |
| 17_CN17490 |  | Comm. & Security - Final Fix at Entrance 6 | 40d | 2028-04-04 | 2028-05-13 | 17_CN17410, 17_CN17480, 17_CN18220 | 146d | 35d | CR117_Cost Loading; GW (M&E) [320 h]; CR117 WEIGHTAGE [2298.16 h] | UDF_G3 | CRBRH | ARH | GENL | GEN | E6 | GEN | N/A | CR |  |
| 17_CN17500 |  | Comm. & Security - Final Fix at Entrance 7 | 40d | 2028-06-18 | 2028-07-27 | 17_CN17420, 17_CN17490, 17_CN18230 | 111d | 12d | CR117_Cost Loading; GW (M&E) [320 h]; CR117 WEIGHTAGE [2298.16 h] | UDF_G3 | CRBRH | ARH | GENL | GEN | E7 | GEN | N/A | CR |  |
| 17_CN17460 |  | Comm. & Security - Final Fix at Level - B1 (8 Weeks) | 50d | 2028-06-20 | 2028-08-08 | 17_CN17380, 17_CN17450, 17_CN18190 | 99d | 0d | CR117_Cost Loading; GW (M&E) [448 h]; CR117 WEIGHTAGE [3232.88 h] | UDF_G3 | CRBRH | ARH | GENL | GEN | PA | GEN | N/A | CR |  |
| 17_CN17510 |  | Comm. & Security - Testing and Commissioning (5 Weeks) | 45d | 2028-08-09 | 2028-09-22 | 17_CN17460, 17_CN17470, 17_CN17480, 17_CN17490, 17_CN17500 | 99d | 95d | CR117_Cost Loading; GW (M&E) [280 h]; CR117 WEIGHTAGE [2006 h] | UDF_G3 | CRBRH | ARH | GENL | GEN | GN | GEN | N/A | CR |  |
|  | 15 | **LIFT AND ESCALATORS INSTALLATION** |  |  |  |  |  |  |  |  |  |  |  |  |  |  |  |  |  |
|  | 1 | **ESCALATORS** |  |  |  |  |  |  |  |  |  |  |  |  |  |  |  |  |  |
|  | 2 | **LIFTS** |  |  |  |  |  |  |  |  |  |  |  |  |  |  |  |  |  |
|  | 2 | **AC & MV SYSTEM** |  | 2027-04-09 | 2028-11-16 |  |  |  |  |  |  |  |  |  |  |  |  |  |  |
| 17_CN17690 |  | AC & MV - Vent Ducting / Piping at Underplatform Level - B4 | 60d | 2027-04-09 | 2027-06-07 | 17_CN17520 | 101d | 0d | CR117_Cost Loading; GW (M&E) [480 h]; CR117 WEIGHTAGE [3466.64 h] | UDF_G3 | CRBRH | ARH | GENL | UPV | NP | GEN | N/A | CR | IN |
| 17_CN17730 |  | AC & MV - Vent Ducting / Piping at Entrance 8 | 40d | 2027-05-28 | 2027-07-06 | 17_CN17560 | 258d | 46d | CR117_Cost Loading; GW (M&E) [320 h]; CR117 WEIGHTAGE [2298.16 h] | UDF_G3 | CRBRH | ARH | GENL | GEN | E8 | GEN | N/A | CR | IN |
| 17_CN17700 |  | AC & MV - Vent Ducting / Piping at Transfer Level - B3 | 60d | 2027-06-08 | 2027-08-06 | 17_CN17690 | 101d | 0d | CR117_Cost Loading; GW (M&E) [480 h]; CR117 WEIGHTAGE [3466.64 h] | UDF_G3 | CRBRH | ARH | GENL | GEN | PA | GEN | N/A | CR | IN |
| 17_CN17710 |  | AC & MV - Vent Ducting / Piping at Platform Level - B2 | 90d | 2027-08-07 | 2027-11-04 | 17_CN17700 | 101d | 0d | CR117_Cost Loading; GW (M&E) [720 h]; CR117 WEIGHTAGE [5219.36 h] | UDF_G3 | CRBRH | ARH | GENL | PLF | PA | GEN | N/A | CR | IN |
| 17_CN17810 |  | AC & MV - Final Fix at Entrance 8 | 40d | 2027-10-01 | 2027-11-09 | 17_CN17730, 17_CN18200 | 429d | 283d | CR117_Cost Loading; GW (M&E) [320 h]; CR117 WEIGHTAGE [2298.16 h] | UDF_G3 | CRBRH | ARH | GENL | GEN | E8 | GEN | N/A | CR | IN |
| 17_CN17770 |  | AC & MV - Final Fix at Underplatform Level - B4 | 60d | 2027-10-06 | 2027-12-04 | 17_CN17600, 17_CN18160 | 194d | 0d | CR117_Cost Loading; GW (M&E) [480 h]; CR117 WEIGHTAGE [3466.64 h] | UDF_G3 | CRBRH | ARH | GENL | UPV | NP | GEN | N/A | CR | IN |
| 17_CN17720 |  | AC & MV - Vent Ducting / Piping at Level - B1 | 60d | 2027-11-05 | 2028-01-03 | 17_CN17550, 17_CN17710 | 165d | 78d | CR117_Cost Loading; GW (M&E) [480 h]; CR117 WEIGHTAGE [3466.64 h] | UDF_G3 | CRBRH | ARH | GENL | GEN | PA | GEN | N/A | CR | IN |
| 17_CN17740 |  | AC & MV - Vent Ducting / Piping at Entrance 5 | 40d | 2027-11-10 | 2027-12-19 | 17_CN17570 | 132d | 24d | CR117_Cost Loading; GW (M&E) [320 h]; CR117 WEIGHTAGE [2298.16 h] | UDF_G3 | CRBRH | ARH | GENL | GEN | E5 | GEN | N/A | CR | IN |
| 17_CN17780 |  | AC & MV - Final Fix at Transfer Level - B3 | 60d | 2027-12-05 | 2028-02-02 | 17_CN17770, 17_CN18170 | 194d | 48d | CR117_Cost Loading; GW (M&E) [480 h]; CR117 WEIGHTAGE [3466.64 h] | UDF_G3 | CRBRH | ARH | GENL | GEN | PA | GEN | N/A | CR | IN |
| 17_CN17750 |  | AC & MV - Vent Ducting / Piping at Entrance 6 | 40d | 2027-12-14 | 2028-01-22 | 17_CN17580 | 138d | 32d | CR117_Cost Loading; GW (M&E) [320 h]; CR117 WEIGHTAGE [2298.16 h] | UDF_G3 | CRBRH | ARH | GENL | GEN | E6 | GEN | N/A | CR | IN |
| 17_CN17760 |  | AC & MV - VEnt Ducting / Piping at Entrance 7 | 40d | 2028-01-29 | 2028-03-08 | 17_CN17590 | 132d | 61d | CR117_Cost Loading; GW (M&E) [320 h]; CR117 WEIGHTAGE [2298.16 h] | UDF_G3 | CRBRH | ARH | GENL | GEN | E7 | GEN | N/A | CR | IN |
| 17_CN17820 |  | AC & MV - Final Fix at Entrance 5 | 40d | 2028-02-22 | 2028-04-01 | 17_CN17740, 17_CN18210 | 285d | 139d | CR117_Cost Loading; GW (M&E) [320 h]; CR117 WEIGHTAGE [2298.16 h] | UDF_G3 | CRBRH | ARH | GENL | GEN | E5 | GEN | N/A | CR | IN |
| 17_CN17790 |  | AC & MV - Final Fix at Platform Level - B2 | 90d | 2028-03-22 | 2028-06-19 | 17_CN17780, 17_CN18180 | 146d | 0d | CR117_Cost Loading; GW (M&E) [840 h]; CR117 WEIGHTAGE [6095.76 h] | UDF_G3 | CRBRH | ARH | GENL | PLF | PA | GEN | N/A | CR | IN |
| 17_CN17830 |  | AC & MV - Final Fix at Entrance 6 | 40d | 2028-04-04 | 2028-05-13 | 17_CN17750, 17_CN18220 | 243d | 97d | CR117_Cost Loading; GW (M&E) [320 h]; CR117 WEIGHTAGE [2298.16 h] | UDF_G3 | CRBRH | ARH | GENL | GEN | E6 | GEN | N/A | CR | IN |
| 17_CN17840 |  | AC & MV - Final Fix at Entrance 7 | 40d | 2028-06-18 | 2028-07-27 | 17_CN17760, 17_CN18230 | 168d | 22d | CR117_Cost Loading; GW (M&E) [320 h]; CR117 WEIGHTAGE [2298.16 h] | UDF_G3 | CRBRH | ARH | GENL | GEN | E7 | GEN | N/A | CR | IN |
| 17_CN17800 |  | AC & MV - Final Fix at Level - B1 | 60d | 2028-06-20 | 2028-08-18 | 17_CN17790, 17_CN18190 | 146d | 0d | CR117_Cost Loading; GW (M&E) [480 h]; CR117 WEIGHTAGE [3466.64 h] | UDF_G3 | CRBRH | ARH | GENL | GEN | PA | GEN | N/A | CR | IN |
| 17_CN17850 |  | AC & MV - Testing and Commissioning | 90d | 2028-08-19 | 2028-11-16 | 17_CN17770, 17_CN17780, 17_CN17790, 17_CN17800, 17_CN17810, 17_CN17820, 17_CN17830, 17_CN17840 | 146d | 40d | CR117_Cost Loading; GW (M&E) [320 h]; CR117 WEIGHTAGE [2298.16 h] | UDF_G3 | CRBRH | ARH | GENL | GEN | GN | GEN | N/A | CR | IN |

| ID | WBS | Activity | Duration | Start | Finish | Predecessors | Total float | Free float | Resources | Cost | Check | PHASE | AREA | SUB-PHASE | SUB AREA | LOCATION | LOCATION DETAILS | SUB-LOCATION DETAILS | CR-117 - FOT | LINE | Text 3 | Text 2 | Cr117 BSC Stn | MAJOR WORKS | BOQ Item |
| --- | --- | --- | --- | --- | --- | --- | --- | --- | --- | --- | --- | --- | --- | --- | --- | --- | --- | --- | --- | --- | --- | --- | --- | --- | --- |
|  | 3 | **FIRE SAFETY SYSTEM** |  | 2027-02-12 | 2028-09-27 |  |  |  |  |  |  |  |  |  |  |  |  |  |  |  |  |  |  |  |  |
| 17_CN17520 |  | Fire Safety - Cable Tray / Conduit / Wiring at Underplatform Level - B4 (8 Weeks) | 56d | 2027-02-12 | 2027-04-08 | 17_CN17350 | 53d | 0d | CR117_Cost Loading; GW (M&E) [448 h]; CR117 WEIGHTAGE [3232.88 h] |  | UDF_G3 | IN | CRBRH | ARH | GENL | UPV | NP | GEN | N/A | CR |  |  |  |  |  |
| 17_CN17530 |  | Fire Safety - Cable Tray / Conduit / Wiring at Transfer Level - B3 (8 Weeks) | 56d | 2027-04-09 | 2027-06-03 | 17_CN17520 | 53d | 0d | CR117_Cost Loading; GW (M&E) [448 h]; CR117 WEIGHTAGE [3232.88 h] |  | UDF_G3 | IN | CRBRH | ARH | GENL | GEN | PA | GEN | N/A | CR |  |  |  |  |  |
| 17_CN17560 |  | Fire Safety - Cable Tray / Conduit / Wiring at Entrance 8 | 24d | 2027-05-04 | 2027-05-27 | 17_CN17390 | 258d | 0d | CR117_Cost Loading; GW (M&E) [192 h]; CR117 WEIGHTAGE [1363.28 h] |  | UDF_G3 | IN | CRBRH | ARH | GENL | GEN | E8 | GEN | N/A | CR |  |  |  |  |  |
| 17_CN17540 |  | Fire Safety - Cable Tray / Conduit / Wiring at Platform Level - B2 | 90d | 2027-06-04 | 2027-09-01 | 17_CN17530 | 75d | 0d | CR117_Cost Loading; GW (M&E) [720 h]; CR117 WEIGHTAGE [5219.36 h] |  | UDF_G3 | IN | CRBRH | ARH | GENL | PLF | PA | GEN | N/A | CR |  |  |  |  |  |
| 17_CN17600 |  | Fire Safety - Final Fix at Underplatform Level - B4 | 60d | 2027-08-07 | 2027-10-05 | 17_CN17520, 17_CN18160 | 172d | 0d | CR117_Cost Loading; GW (M&E) [480 h]; CR117 WEIGHTAGE [3466.64 h] |  | UDF_G3 | IN | CRBRH | ARH | GENL | UPV | NP | GEN | N/A | CR |  |  |  |  |  |
| 17_CN17550 |  | Fire Safety - Cable Tray / Conduit / Wiring at Level - B1 (8 Weeks) | 56d | 2027-09-02 | 2027-10-27 | 17_CN17540 | 87d | 0d | CR117_Cost Loading; GW (M&E) [448 h]; CR117 WEIGHTAGE [3232.88 h] |  | UDF_G3 | IN | CRBRH | ARH | GENL | GEN | PA | GEN | N/A | CR |  |  |  |  |  |
| 17_CN17640 |  | Fire Safety - Final Fix at Entrance 8 | 40d | 2027-10-01 | 2027-11-09 | 17_CN17560, 17_CN18200 | 237d | 104d | CR117_Cost Loading; GW (M&E) [320 h]; CR117 WEIGHTAGE [2298.16 h] |  | UDF_G3 | IN | CRBRH | ARH | GENL | GEN | E8 | GEN | N/A | CR |  |  |  |  |  |
| 17_CN17610 |  | Fire Safety - Final Fix at Transfer Level - B3 | 60d | 2027-10-06 | 2027-12-04 | 17_CN17600, 17_CN18170 | 172d | 108d | CR117_Cost Loading; GW (M&E) [480 h]; CR117 WEIGHTAGE [3466.64 h] |  | UDF_G3 | IN | CRBRH | ARH | GENL | GEN | PA | GEN | N/A | CR |  |  |  |  |  |
| 17_CN17570 |  | Fire Safety - Cable Tray / Conduit / Wiring at Entrance 5 | 24d | 2027-10-17 | 2027-11-09 | 17_CN17400 | 132d | 0d | CR117_Cost Loading; GW (M&E) [192 h]; CR117 WEIGHTAGE [1363.28 h] |  | UDF_G3 | IN | CRBRH | ARH | GENL | GEN | E5 | GEN | N/A | CR |  |  |  |  |  |
| 17_CN17580 |  | Fire Safety - Cable Tray / Conduit / Wiring at Entrance 6 | 24d | 2027-11-20 | 2027-12-13 | 17_CN17410 | 138d | 0d | CR117_Cost Loading; GW (M&E) [192 h]; CR117 WEIGHTAGE [1363.28 h] |  | UDF_G3 | IN | CRBRH | ARH | GENL | GEN | E6 | GEN | N/A | CR |  |  |  |  |  |
| 17_CN17590 |  | Fire Safety - Cable Tray / Conduit / Wiring at Entrance 7 | 24d | 2028-01-05 | 2028-01-28 | 17_CN17420 | 132d | 0d | CR117_Cost Loading; GW (M&E) [192 h]; CR117 WEIGHTAGE [1363.28 h] |  | UDF_G3 | IN | CRBRH | ARH | GENL | GEN | E7 | GEN | N/A | CR |  |  |  |  |  |
| 17_CN17650 |  | Fire Safety - Final Fix at Entrance 5 (5 Weeks) | 35d | 2028-02-22 | 2028-03-27 | 17_CN17570, 17_CN17640, 17_CN18210 | 133d | 7d | CR117_Cost Loading; GW (M&E) [280 h]; CR117 WEIGHTAGE [2006 h] |  | UDF_G3 | IN | CRBRH | ARH | GENL | GEN | E5 | GEN | N/A | CR |  |  |  |  |  |
| 17_CN17620 |  | Fire Safety - Final Fix at Platform Level - B2 | 90d | 2028-03-22 | 2028-06-19 | 17_CN17610, 17_CN18180 | 64d | 0d | CR117_Cost Loading; GW (M&E) [840 h]; CR117 WEIGHTAGE [6095.76 h] |  | UDF_G3 | IN | CRBRH | ARH | GENL | PLF | PA | GEN | N/A | CR |  |  |  |  |  |
| 17_CN17660 |  | Fire Safety - Final Fix at Entrance 6 (5 Weeks) | 35d | 2028-04-04 | 2028-05-08 | 17_CN17580, 17_CN17650, 17_CN18220 | 126d | 40d | CR117_Cost Loading; GW (M&E) [280 h]; CR117 WEIGHTAGE [2006 h] |  | UDF_G3 | IN | CRBRH | ARH | GENL | GEN | E6 | GEN | N/A | CR |  |  |  |  |  |
| 17_CN17670 |  | Fire Safety - Final Fix at Entrance 7 | 40d | 2028-06-18 | 2028-07-27 | 17_CN17590, 17_CN17660, 17_CN18230 | 86d | 22d | CR117_Cost Loading; GW (M&E) [320 h]; CR117 WEIGHTAGE [2298.16 h] |  | UDF_G3 | IN | CRBRH | ARH | GENL | GEN | E7 | GEN | N/A | CR |  |  |  |  |  |
| 17_CN17630 |  | Fire Safety - Final Fix at Level - B1 | 60d | 2028-06-20 | 2028-08-18 | 17_CN17550, 17_CN17620, 17_CN18190 | 64d | 0d | CR117_Cost Loading; GW (M&E) [480 h]; CR117 WEIGHTAGE [3466.64 h] |  | UDF_G3 | IN | CRBRH | ARH | GENL | GEN | PA | GEN | N/A | CR |  |  |  |  |  |
| 17_CN17680 |  | Fire Safety - Testing and Commissioning | 40d | 2028-08-19 | 2028-09-27 | 17_CN17600, 17_CN17610, 17_CN17620, 17_CN17630, 17_CN17640, 17_CN17650, 17_CN17660, 17_CN17670 | 64d |  | CR117_Cost Loading; GW (M&E) [320 h]; CR117 WEIGHTAGE [2298.16 h] |  | UDF_G3 | IN | CRBRH | ARH | GENL | GEN | GN | GEN | N/A | CR |  |  |  |  |  |
|  | 8 | **ADDITION & ALTERATION (A&A) WORKS TO THE TEL BRH STATION (T211)** |  | 2025-07-23 | 2028-12-26 |  |  |  |  |  |  |  |  |  |  |  |  |  |  |  |  |  |  |  |  |
|  | 1 | **Existing C&C Tunnel above TEL-Bright Hill Station (Zone L & Zone J)** |  | 2026-03-20 | 2027-02-23 |  |  |  |  |  |  |  |  |  |  |  |  |  |  |  |  |  |  |  |  |
| 17_CN18460 |  | C&C Tunnel above T211 - Hack and remove the exisitng SBP wall after excavation (4 locations) | 60d | 2026-03-20 | 2026-05-18 | 17_CN16200, 17_CN15010 | 97d | 0d | CR117_Cost Loading [41001]; Excavation Team [560 h]; GW (C&S) [560 h]; CR117 WEIGHTAGE [4050.96 h] | 41,001 | UDF_G3 | CN | CRBRH | ARH | GENL | GEN | ZL | GEN | 01 | CR | 1 | 1 | 1 | SI |  |
| 17_CN18470 |  | C&C Tunnel above T211 - Complete the Connection between CR117 and T211 by Drill-in Bars an Casting (4 locations) | 60d | 2026-05-19 | 2026-07-17 | 17_CN18460, 17_CN16200, 17_CN15010 | 97d | 0d | CR117_Cost Loading [41001]; GW (C&S) [560 h]; RC Team [560 h]; CR117 WEIGHTAGE [4050.96 h] | 41,001 | UDF_G3 | CN | CRBRH | ARH | GENL | GEN | ZL | GEN | 01 | CR | 1 | 1 | 0 | SI |  |
| 17_CN18480 |  | C&C Tunnel above T211 - Treatment of the interface with appropriate waterproofing (4 locations) | 70d | 2026-07-18 | 2026-09-25 | 17_CN18470 | 97d | 0d | CR117_Cost Loading [41001]; GW (C&S) [560 h]; CR117 WEIGHTAGE [4050.96 h] | 41,001 | UDF_G3 | CN | CRBRH | ARH | GENL | GEN | ZL | GEN | 01 | CR | 1 | 1 | 0 | SI | A.17-A.18 |
| 17_CN18490 |  | C&C Tunnel above T211 - Installation of bund wall with a pumping system (4 locations) | 51d | 2026-09-26 | 2026-11-15 | 17_CN18480 | 97d | 0d | CR117_Cost Loading [29872]; GW (C&S) [448 h]; RC Team [448 h]; CR117 WEIGHTAGE [3232.88 h] | 29,872 | UDF_G3 | IN | CRBRH | ARH | GENL | GEN | ZL | GEN | 01 | CR | 1 | 1 | 0 | SI |  |
| 17_CN18500 |  | C&C Tunnel above T211 - Link - Breakthrough the existing end wall via low vibration method (during engineering hours) | 70d | 2026-11-16 | 2027-01-24 | 17_CN18490 | 97d | 0d | CR117_Cost Loading [41001]; GW (C&S) [560 h]; Excavation Team [560 h]; CR117 WEIGHTAGE [4050.96 h] | 41,001 | UDF_G3 | CN | CRBRH | ARH | GENL | GEN | ZL | GEN | 01 | CR | 1 | 1 | 0 | SI |  |
| 17_CN18510 |  | C&C Tunnel above T211 - Making good the Breakthrough KOP interface (4 locations) | 30d | 2027-01-25 | 2027-02-23 | 17_CN18500 | 97d |  | CR117_Cost Loading [17572]; GW (C&S) [448 h]; CR117 WEIGHTAGE [3232.88 h] | 17,572 | UDF_G3 | CN | CRBRH | ARH | GENL | GEN | ZL | GEN | 01 | CR | 1 | 1 | 0 | SI | A.17-A.18 |

| ID | WBS | Activity | Duration | Start | Finish | Predecessors | Total float | Free float | Resources | Cost | Check | PHASE | AREA | SUB-PHASE | SUB AREA | LOCATION | LOCATION DETAILS | MAJOR WORKS | SUB-LOCATION DETAILS | CR-117 - FOT | LINE | BOQ Item | Text 3 | Text 2 |
| --- | --- | --- | --- | --- | --- | --- | --- | --- | --- | --- | --- | --- | --- | --- | --- | --- | --- | --- | --- | --- | --- | --- | --- | --- |
|  | 2 | **Engineering Link at Zone K** |  | 2026-01-08 | 2027-02-10 |  |  |  |  |  |  |  |  |  |  |  |  |  |  |  |  |  |  |  |
| 17_CN18520 |  | Engineering Link - Hack and remove the exisitng SBP wall after excavation | 70d | 2026-01-08 | 2026-03-18 | 17_CN16290 | 110d | 0d | CR117_Cost Loading [20501]; Excavation Team [560 h]; GW (C&S) [560 h]; CR117 WEIGHTAGE [2025.28 h] | 20,501 | UDF_G3 | CN | CRBRH | ARH | GENL | GEN | ZK | SI | GEN | 01 | CR |  |  |  |
| 17_CN18530 |  | Engineering Link - Complete the Connection between CR117 and T211 by Drill-in Bars an Casting | 56d | 2026-03-19 | 2026-05-13 | 17_CN18520, 17_CN16290 | 110d | 0d | CR117_Cost Loading [32801]; GW (C&S) [448 h]; RC Team [448 h]; CR117 WEIGHTAGE [3232.88 h] | 32,801 | UDF_G3 | CN | CRBRH | ARH | GENL | GEN | ZK | SI | GEN | 01 | CR |  |  |  |
| 17_CN18540 |  | Engineering Link - Treatment of the interface with appropriate waterproofing | 56d | 2026-05-14 | 2026-07-08 | 17_CN18530 | 110d | 0d | CR117_Cost Loading [32801]; CR117 WEIGHTAGE [3232.88 h] | 32,801 | UDF_G3 | CN | CRBRH | ARH | GENL | GEN | ZK | SI | GEN | 01 | CR | A.17-A.18 |  |  |
| 17_CN18550 |  | Engineering Link - Installation of bund wall with a pumping system | 56d | 2026-07-09 | 2026-09-02 | 17_CN18540 | 110d | 0d | CR117_Cost Loading [24601]; GW (C&S) [336 h]; RC Team [336 h]; CR117 WEIGHTAGE [2414.96 h] | 24,601 | UDF_G3 | IN | CRBRH | ARH | GENL | GEN | ZK | SI | GEN | 01 | CR |  |  |  |
| 17_CN18560 |  | Engineering Link - Barricade the work site from the operational TEL C&C tunnel with a full-height fire-rated barrier | 21d | 2026-09-03 | 2026-09-23 | 17_CN18550 | 110d | 0d | CR117_Cost Loading [12300]; RC Team [168 h]; GW (C&S) [168 h]; CR117 WEIGHTAGE [1188 h] | 12,300 | UDF_G3 | CN | CRBRH | ARH | GENL | GEN | ZK | SI | GEN | 01 | CR |  |  |  |
| 17_CN18570 |  | Engineering Link - Breakthrough the existing end wall via low vibration method (during engineering hours) and disposal | 60d | 2026-09-24 | 2026-11-22 | 17_CN18560 | 110d | 0d | CR117_Cost Loading [20501]; GW (C&S) [280 h]; RC Team [280 h]; CR117 WEIGHTAGE [2006 h] | 20,501 | UDF_G3 | CN | CRBRH | ARH | GENL | GEN | ZK | SI | GEN | 01 | CR |  |  |  |
| 17_CN18580 |  | Engineering Link - Making good the Breakthrough KOP interface | 45d | 2026-11-23 | 2027-01-06 | 17_CN18570 | 110d | 0d | CR117_Cost Loading [20501]; GW (C&S) [280 h]; RC Team [280 h]; CR117 WEIGHTAGE [2006 h] | 20,501 | UDF_G3 | CN | CRBRH | ARH | GENL | GEN | ZK | SI | GEN | 01 | CR | A.17-A.18 |  |  |
| 17_CN19660 |  | Engineering Link - Installation of Roller Shutters | 35d | 2027-01-07 | 2027-02-10 | 17_CN18580 | 110d |  | CR117 WEIGHTAGE [2021.04 h]; CR117_Cost Loading [20500] | 20,500 |  |  |  |  |  |  |  |  |  |  |  |  |  |  |
|  | 3 | **Paid subway link at Zone L** |  | 2025-07-23 | 2028-12-26 |  |  |  |  |  |  |  |  |  |  |  |  |  |  |  |  |  |  |  |
|  | 1 | **Paid subway link - Breakthrough the KOP** |  | 2026-03-20 | 2026-12-19 |  |  |  |  |  |  |  |  |  |  |  |  |  |  |  |  |  |  |  |
| 17_CN18590 |  | Paid Subway Link - Hack and remove the exisitng SBP wall after excavation | 65d | 2026-03-20 | 2026-05-23 | 17_CN15010 | 109d | 0d | CR117_Cost Loading [38073]; GW (C&S) [520 h]; RC Team [520 h]; CR117 WEIGHTAGE [3758.8 h] | 38,073 | UDF_G3 | CN | CRBRH | ARH | GENL | GEN | ZL |  | GEN | 01 | CR |  |  |  |
| 17_CN18600 |  | Paid Subway Link - Complete the Connection between CR117 and T211 by Drill-in Bars an Casting | 49d | 2026-05-24 | 2026-07-11 | 17_CN18590, 17_CN15010 | 109d | 0d | CR117_Cost Loading [28701]; GW (C&S) [392 h]; RC Team [392 h]; CR117 WEIGHTAGE [2823.92 h] | 28,701 | UDF_G3 | CN | CRBRH | ARH | GENL | GEN | ZL |  | GEN | 01 | CR |  |  |  |
| 17_CN18610 |  | Paid Subway Link - Treatment of the interface with appropriate waterproofing | 49d | 2026-07-12 | 2026-08-29 | 17_CN18600 | 109d | 0d | CR117_Cost Loading [28701]; GW (C&S) [392 h]; RC Team [392 h]; CR117 WEIGHTAGE [2823.92 h] | 28,701 | UDF_G3 | CN | CRBRH | ARH | GENL | GEN | ZL |  | GEN | 01 | CR | A.17-A.18 |  |  |
| 17_CN18620 |  | Paid Subway Link - Installation of bund wall with a pumping system | 32d | 2026-08-30 | 2026-09-30 | 17_CN18610 | 109d | 0d | CR117_Cost Loading [18743]; RC Team [256 h]; GW (C&S) [256 h]; CR117 WEIGHTAGE [1830.64 h] | 18,743 | UDF_G3 | IN | CRBRH | ARH | GENL | GEN | ZL |  | GEN | 01 | CR |  |  |  |
| 17_CN18630 |  | Paid Subway Link - Barricade the work site from the operational TEL C&C tunnel with a full-height fire-rated barrier and | 16d | 2026-10-01 | 2026-10-16 | 17_CN18620 | 109d | 0d | CR117_Cost Loading [9372]; GW (C&S) [128 h]; RC Team [128 h]; CR117 WEIGHTAGE [895.92 h] | 9,372 | UDF_G3 | CN | CRBRH | ARH | GENL | GEN | ZL |  | GEN | 01 | CR |  |  |  |
| 17_CN18640 |  | Paid Subway Link - Breakthrough the existing end wall via low vibration method (during Paid Subway hours) and disposal | 32d | 2026-10-17 | 2026-11-17 | 17_CN18630 | 109d | 0d | CR117_Cost Loading [18743]; GW (C&S) [256 h]; RC Team [256 h]; CR117 WEIGHTAGE [1830.64 h] | 18,743 | UDF_G3 | CN | CRBRH | ARH | GENL | GEN | ZL |  | GEN | 01 | CR |  |  |  |
| 17_CN18650 |  | Paid Subway Link - Making good the Breakthrough KOP interface | 32d | 2026-11-18 | 2026-12-19 | 17_CN18640 | 109d | 0d | CR117_Cost Loading [18743]; GW (C&S) [256 h]; RC Team [256 h]; CR117 WEIGHTAGE [1830.64 h] | 18,743 | UDF_G3 | CN | CRBRH | ARH | GENL | GEN | ZL |  | GEN | 01 | CR | A.17-A.18 |  |  |
|  | 2 | **Paid subway link - Installation of CD doors** |  | 2025-07-23 | 2027-03-19 |  |  |  |  |  |  |  |  |  |  |  |  |  |  |  |  |  |  |  |
| 17_CN18660 |  | Paid Subway Link - Delivery and Lifting down the CD doors to the B2 platform level slab prior to construction of roof | 16d | 2025-07-23 | 2025-08-07 | 17_MF10120, 17_CN14930 | 97d | 0d | CR117_Cost Loading [9372]; Lifting Team [128 h]; GW (C&S) [128 h]; CR117 WEIGHTAGE [895.92 h] | 9,372 | UDF_G3 | CN | CRBRH | ARH | GENL | PLF | ZL | DO | GEN | 01 | CR |  | 1 | 1 |
| 17_CN18670 |  | Paid Subway Link - Installation of new CD door near the interface and associated civil works | 90d | 2026-12-20 | 2027-03-19 | 17_CN18650, 17_CN18660 | 109d | 0d | CR117_Cost Loading [61502]; GW (C&S) [840 h]; GW (M&E) [256 h]; CR117 WEIGHTAGE [6095.76 h] | 61,502 | UDF_G3 | CN | CRBRH | ARH | GENL | PLF | ZL | DO | GEN | 01 | CR | A.17-A.18 |  |  |
|  | 3 | **Paid subway link - Installation of traverlators, Architectural Finishes and MEP Services** |  | 2027-03-20 | 2028-12-26 |  |  |  |  |  |  |  |  |  |  |  |  |  |  |  |  |  |  |  |
| 17_CN18680 |  | Paid Subway Link - Trenches and plinths | 90d | 2027-03-20 | 2027-06-17 | 17_CN18670 | 109d | 3d | CR117_Cost Loading [38073]; RC Team [520 h]; GW (C&S) [520 h]; CR117 WEIGHTAGE [3758.8 h] | 38,073 | UDF_G3 | CN | CRBRH | ARH | GENL | GEN | ZL |  | GEN | 01 | CR |  |  |  |
| 17_CN19600 |  | Paid Subway Link - MEP Services Power Point Works | 90d | 2027-03-20 | 2027-06-17 | 17_CN16990, 17_CN18670 | 324d | 0d | CR117_Cost Loading [61501]; CR117 WEIGHTAGE [6124.24 h]; GW (M&E) [720 h] | 61,501 |  | CN | CRBRH | ARH | GENL |  | ZL |  | GEN |  | CR |  |  |  |
| 17_CN19610 |  | Paid Subway Link - MEP Services Air Conditioning | 90d | 2027-06-18 | 2027-09-15 | 17_CN19600 | 324d | 0d | GW (M&E) [720 h]; CR117_Cost Loading [61501]; CR117 WEIGHTAGE [6124.24 h] | 61,501 |  | CN | CRBRH | ARH | GENL |  | ZL |  | GEN |  | CR |  |  |  |
| 17_CN18690 |  | Paid Subway Link - Modification to the travellator pits at the concourse level of existing TEL-Bright Hill station | 90d | 2027-06-21 | 2027-09-18 | 17_CN18650, 17_CN18670, 17_CN18680, 17_CN14820 | 106d | 0d | CR117_Cost Loading [38073]; GW (C&S) [520 h]; RC Team [520 h]; CR117 WEIGHTAGE [3758.8 h] | 38,073 | UDF_G3 | CN | CRBRH | ARH | GENL | GEN | ZL |  | GEN | 01 | CR |  |  |  |
| 17_CN19620 |  | Paid Subway Link - Fire Protection Related Works | 90d | 2027-09-16 | 2027-12-14 | 17_CN19610 | 324d | 0d | CR117 WEIGHTAGE [6124.24 h]; CR117_Cost Loading [61501]; GW (M&E) [720 h] | 61,501 |  | CN | CRBRH | ARH | GENL |  | ZL |  | GEN |  | CR |  |  |  |
| 17_CN18700 |  | Paid Subway Link - Coordination with the relevant SWC on the installation of travellators | 90d | 2027-09-19 | 2027-12-17 | 17_CN18690 | 476d | 0d | CR117_Cost Loading [175720]; GW (M&E) [572 h]; CR117 WEIGHTAGE [24500.1 h] | 175,720 | UDF_G3 | CN | CRBRH | ARH | GENL | GEN | ZL |  | GEN | 01 | CR |  |  |  |
| 17_CN19630 |  | Paid Subway Link - Archi Finishes Floor Tiling Works | 90d | 2027-09-19 | 2027-12-17 | 17_CN16910, 17_CN18670, 17_CN18690 | 106d | 0d | CR117 WEIGHTAGE [6125.28 h]; CR117_Cost Loading [43930]; GW (Archi) [720 h] | 43,930 |  | CN | CRBRH | ARH | GENL |  | ZL | FF | GEN |  | CR |  |  |  |
| 17_CN18720 |  | Paid Subway Link - MEP Combined Services | 90d | 2027-12-15 | 2028-03-13 | 17_CN19620 | 324d | 218d | CR117_Cost Loading [61502]; GW (M&E) [3360 h]; CR117 WEIGHTAGE [6124.24 h] | 61,502 | UDF_G3 | CN | CRBRH | ARH | GENL | GEN | ZL |  | GEN | 01 | CR |  |  |  |
| 17_CN18710 |  | Paid Subway Link - Travellators testing and Commissioning | 70d | 2027-12-18 | 2028-02-25 | 17_CN18700 | 476d |  | CR117_Cost Loading [41001]; GW (M&E) [560 h]; CR117 WEIGHTAGE [4050.96 h] | 41,001 | UDF_G3 | CN | CRBRH | ARH | GENL | GEN | ZL |  | GEN | 01 | CR |  |  |  |
| 17_CN19640 |  | Paid Subway Link - Archi Finishes Wall Tiles and Wall Works | 90d | 2027-12-18 | 2028-03-16 | 17_CN19630 | 106d | 0d | GW (Archi) [720 h]; CR117_Cost Loading [43930]; CR117 WEIGHTAGE [6125.28 h] | 43,930 |  | CN | CRBRH | ARH | GENL |  | ZL | CL | GEN |  | CR |  |  |  |
| 17_CN19650 |  | Paid Subway Link - Architecture Ceiling Works | 90d | 2028-03-17 | 2028-06-14 | 17_CN19640 | 106d | 0d | CR117 WEIGHTAGE [6125.28 h]; CR117_Cost Loading [43930]; GW (Archi) [720 h] | 43,930 |  | CN | CRBRH | ARH | GENL |  | ZL | CE | GEN |  | CR |  |  |  |
| 17_CN18730 |  | Paid Subway Link - Archi finishes Final Finishes including Ironmongory Works | 90d | 2028-06-15 | 2028-09-12 | 17_CN19650 | 106d | 0d | CR117_Cost Loading [43930]; GW (Archi) [3360 h]; CR117 WEIGHTAGE [6125.28 h] | 43,930 | UDF_G3 | CN | CRBRH | ARH | GENL | GEN | ZL | IR | GEN | 01 | CR |  |  |  |
| 17_CN18740 |  | Paid Subway Link - architectural finishes interfacing works at the concourse level including replace/make good all floor | 35d | 2028-09-13 | 2028-10-17 | 17_CN18730 | 106d | 0d | CR117_Cost Loading [20501]; GW (Archi) [280 h]; CR117 WEIGHTAGE [2006 h] | 20,501 | UDF_G3 | CN | CRBRH | ARH | GENL | GEN | ZL |  | GEN | 01 | CR | A.17-A.18 |  |  |
| 17_CN18750 |  | Paid Subway Link - Installation of screens/roller shutter grilles and bypass doors | 70d | 2028-10-18 | 2028-12-26 | 17_CN18720, 17_CN18740 | 106d | 0d | CR117_Cost Loading [41001]; GW (M&E) [560 h]; CR117 WEIGHTAGE [4050.96 h] | 41,001 | UDF_G3 | CN | CRBRH | ARH | GENL | GEN | ZL | DO | GEN | 01 | CR |  |  |  |

| ID | WBS | Activity | Duration | Start | Finish | Predecessors | Total float | Free float | Resources | Cost | Check | PHASE | AREA | SUB-PHASE | SUB AREA | LOCATION | LOCATION DETAILS | MAJOR WORKS | SUB-LOCATION DETAILS | CR-117 - FOT | LINE | user_text1 | Check 2 (Original Duration) |
| --- | --- | --- | --- | --- | --- | --- | --- | --- | --- | --- | --- | --- | --- | --- | --- | --- | --- | --- | --- | --- | --- | --- | --- |
|  | 9 | **TESTING AND COMMISSIONING** |  | 2028-12-27 | 2029-03-01 |  |  |  |  |  |  |  |  |  |  |  |  |  |  |  |  |  |  |
| 17_ST10000 |  | Combined Testing & commissioning (for commencement of TFP & TOP) | 65d | 2028-12-27 | 2029-03-01 | 17_CN17090, 17_CN17340, 17_CN17510, 17_CN17680, 17_CN17850, 17_CN18750 | 106d | 0d | CR117_Cost Loading; CR117 WEIGHTAGE [3758.8 h] |  | UDF_G3 | ST | CRBRH | GEN | GENL | GEN | GN | GN | GEN | N/A | CR |  |  |
|  | 10 | **EXTERNAL AND REINSTATEMENT WORKS** |  | 2029-07-01 | 2029-11-27 |  |  |  |  |  |  |  |  |  |  |  |  |  |  |  |  |  |  |
| 17_CN10820 |  | East C&C Tunnel: Final road alignment of SMA for areas occupied by TSA and SWC area prepare to open | 90d | 2029-07-01 | 2029-09-28 | 17_GN10240, 17_GN10250 | 34d | 0d | CR117_Cost Loading [1152567]; CR117 WEIGHTAGE [7604.96 h] | 1,152,567 | UDF_G3 | CN | CRBRH | ARH | GENL | GEN | GN | RD | GEN | 13 | CR | 1 |  |
| 17_CN18760 |  | External - Entrance 5 - Removal & Reinstatement of existing access, facilities, etc. | 90d | 2029-07-01 | 2029-09-28 | 17_GN10240, 17_PC10120 | 48d | 0d | CR117_Cost Loading [149908]; GW (C&S) [1120 h]; CR117 WEIGHTAGE [13125 h] | 149,908 | UDF_G3 | CN | CRBRH | ARH | GENL | GEN | E5 | RD | GEN | 11 | CR | 1 |  |
| 17_CN18770 |  | External - Planting & Landscaping works at Entrances | 80d | 2029-07-01 | 2029-09-18 | 17_GN10240 | 34d | 0d | CR117_Cost Loading [87446]; GW (C&S) [1120 h]; CR117 WEIGHTAGE [5079.36 h] | 87,446 | UDF_G3 | CN | CRBRH | ARH | GENL | GEN | GN | RD | GEN | 11 | CR | 1 |  |
| 17_CN18950 |  | External - Planting & Landscaping works around Station Area | 70d | 2029-09-19 | 2029-11-27 | 17_CN18770 | 34d |  | CR117 WEIGHTAGE [5079.36 h]; CR117_Cost Loading [87446]; GW (C&S) [560 h] | 87,446 |  | CN | CRBRH | ARH | GENL | GEN | GN | RD | GEN |  | CR |  |  |
| 17_CN12970 |  | East C&C Tunnel Final Road Alignment Open to Traffic | 60d | 2029-09-29 | 2029-11-27 | 17_CN10820 | 34d | 0d | CR117 WEIGHTAGE [5070.48 h]; CR117_Cost Loading [768378]; GW (C&S) [480 h] | 768,378 |  | CN | CRBRH | ARH | GENL | GEN | GN | RD | GEN |  | CR |  |  |
|  | 11 | **PROVISIONAL SUM ITEMS** |  | 2027-07-01 | 2029-12-16 |  |  |  |  |  |  |  |  |  |  |  |  |  |  |  |  |  |  |
| 17_CN18830 |  | Provisional Sum (PS) for Architectural Works for Station | 900d | 2027-07-01 | 2029-12-16 | 17_GN10120, 17_GN10130, 17_GN10140, 17_GN10150, 17_GN10160 | 15d |  | CR117_Cost Loading [32000000]; GW (Archi) [7200 h]; CR117 WEIGHTAGE [297925 h] | 32,000,000 | UDF_G3 | CN | CRBRH | ARH | GENL | GEN | GN | GN | GEN | 01 | CR | General | UDF_G3 |
| 17_CN18840 |  | Provisional Sum (PS) for Art-In-Transit Programme | 900d | 2027-07-01 | 2029-12-16 | 17_GN10120, 17_GN10130, 17_GN10140, 17_GN10150, 17_GN10160 | 15d |  | CR117_Cost Loading [230000]; CR117 WEIGHTAGE [54308.3 h] | 230,000 | UDF_G3 | CN | CRBRH | ARH | GENL | GEN | GN | GN | GEN | 02 | CR | General | UDF_G3 |

## Activity codes

| Code | Value | Meaning |
| --- | --- | --- |
| AREA | CRBRH | CRL Bright Hill Station |
| AREA | CRT12 | Tunnel : CRTGE - CRBRH |
| AREA | GENRL | General |
| CR-117 - FOT | 01 | DEMOLITION, SITE CLEARANCE AND PROTECTION WORKS |
| CR-117 - FOT | 02 | SUPPLY / ERECTION / LAUNCHING .. OF TBM |
| CR-117 - FOT | 03 | DESIGN, SUPPLY & ERECT OFFICES |
| CR-117 - FOT | 04 | FULL NOISE ENCLOSURE AT LAUNCHING SHAFT |
| CR-117 - FOT | 05 | DISMANTLING SITE OFFICES |
| CR-117 - FOT | 06 | INSTALLATION/ REMOVAL OF HOARDINGS |
| CR-117 - FOT | 07 | ROAD WORKS - TEMPORARY DIVERSION |
| CR-117 - FOT | 08 | PERMANENT DRAINAGE |
| CR-117 - FOT | 09 | MAINTENANCE / DIVERSION UTILITY SERVICES |
| CR-117 - FOT | 1 | EXCAVATION |
| CR-117 - FOT | 10 | NOISE / VECTOR CONTROL / ../ SAFETY PLANS & SECURITY PLANS |
| CR-117 - FOT | 11 | TOL FOR WORK SITES |
| CR-117 - FOT | 12 | PHYSICAL SURVEY OF STRUCTURES |
| CR-117 - FOT | 13 | ROAD WORKS |
| CR-117 - FOT | 14 | PROJECT MANAGEMENT |
| CR-117 - FOT | 15 | SCHEDULING / PROGRAMME |
| CR-117 - FOT | 16 | PROGRESS PHOTOGRAPHS |
| CR-117 - FOT | 17 | METALWORK |
| CR-117 - FOT | 18 | PLUMBING |
| CR-117 - FOT | 2 | SBP |
| CR-117 - FOT | 20 | CONTRACTOR - OWN DESIGN RESPONSIBILITY |
| CR-117 - FOT | 24 | AS BUILT INFORMATION / DRAWINGS |
| CR-117 - FOT | 25 | INSURANCE |
| CR-117 - FOT | 26 | BONDS AND GUARANTEE |
| CR-117 - FOT | 27 | PROJECT QUALITY PLAN |
| CR-117 - FOT | 29 | PRESS AND PUBLIC RELATIONS MATTERS |
| CR-117 - FOT | 3 | FISSURE GROUTING |
| CR-117 - FOT | 30 | BUILDING INFORMATION MODELLING (BIM) |
| CR-117 - FOT | 4 | WALLS / COLUMNS / VERTICAL ELEMENTS |
| CR-117 - FOT | 5 | DELIVERY OF CONTRACT DRAWINGS & SPECIFICATIONS |
| CR-117 - FOT | 6 | APPROVAL OF BUILDING PLAN |
| CR-117 - FOT | 7 | ACCEPTANCE OF PRE-FINAL DESIGN CCSM |
| CR-117 - FOT | 8 | ACCEPTANCE OF FINAL DESIGN SEM & CCSM |
| CR-117 - FOT | 9 | ACCEPTANCE OF UPDATED FINAL DESIGN SEM & CCSM |
| CR-117 - FOT | N/A | NON PAYABLE ITEMS |
| KEY DATES / MILESTONES | KD | Key Dates |
| KEY DATES / MILESTONES | MS | Milestones |
| LINE | CR | Cross Island Line |
| LOCATION | BAL | Base Level |
| LOCATION | EAB | East Bound |
| LOCATION | GEN | General |
| LOCATION | GRD | Ground Level |
| LOCATION | PLF | Platform Level |
| LOCATION | ROF | Roof Level |
| LOCATION | TRK | Track Level |
| LOCATION | UPV | Underplatform Level |
| LOCATION | WEB | West Bound |
| LOCATION DETAILS | E5 | Entrance 5 (Zone A) |
| LOCATION DETAILS | E6 | Entrance 6 (Zone E) |
| LOCATION DETAILS | E7 | Entrance 7 (Zone E) |
| LOCATION DETAILS | E8 | Entrance 8 (Zone B) |
| LOCATION DETAILS | ES | Escape Shaft |
| LOCATION DETAILS | GN | General |
| LOCATION DETAILS | NP | Non Public Area |
| LOCATION DETAILS | PA | Public Area |
| LOCATION DETAILS | RA | Category A Rooms |
| LOCATION DETAILS | RB | Category B Rooms |
| LOCATION DETAILS | RC | Category C Rooms |
| LOCATION DETAILS | RD | Category D Rooms |
| LOCATION DETAILS | RS | Receiving Shaft |
| LOCATION DETAILS | ZA | Zone A |
| LOCATION DETAILS | ZB | Zone B |
| LOCATION DETAILS | ZC1 | Zone C1 |
| LOCATION DETAILS | ZC2 | Zone C2 |
| LOCATION DETAILS | ZD | Zone D |
| LOCATION DETAILS | ZE | Zone E |
| LOCATION DETAILS | ZF1&2 | Zone F1 & F2 |
| LOCATION DETAILS | ZF3 | Zone F3 |
| LOCATION DETAILS | ZG | Zone G |
| LOCATION DETAILS | ZH | Zone H |
| LOCATION DETAILS | ZJ | Zone J |
| LOCATION DETAILS | ZK | Zone K |
| LOCATION DETAILS | ZL | Zone L |
| LOCATION DETAILS | ZP | Zone P |
| MAJOR WORKS | BF | Backfilling |
| MAJOR WORKS | BO | Bore Piles |
| MAJOR WORKS | CE | False Ceiling |
| MAJOR WORKS | CL | Wall Cladding |
| MAJOR WORKS | DK | Temporary Decking |
| MAJOR WORKS | DO | Door |
| MAJOR WORKS | DS | Design |
| MAJOR WORKS | DW | Diaphragm Walls |
| MAJOR WORKS | EA | Earthmat |
| MAJOR WORKS | EC | Excavation |
| MAJOR WORKS | FF | Floor Tiling |
| MAJOR WORKS | FS | Floor Screeding |
| MAJOR WORKS | GI | Ground Improvement Work |
| MAJOR WORKS | GL | Glazing |
| MAJOR WORKS | GN | General |
| MAJOR WORKS | IR | Ironmongery |
| MAJOR WORKS | KP | King Posts |
| MAJOR WORKS | PA | Painting |
| MAJOR WORKS | PI | Micropiles |
| MAJOR WORKS | PL | Wall Plastering |
| MAJOR WORKS | PR | Preliminaries / Time Based Items |
| MAJOR WORKS | PT | Pile Load Test |
| MAJOR WORKS | PW | Internal Partition Wall/Blockwall/ Dry Wall |
| MAJOR WORKS | RD | Road Diversion / Road Works |
| MAJOR WORKS | RW | RC Walls / Columns |
| MAJOR WORKS | SA | Sanitary/Plumbing |
| MAJOR WORKS | SE | Secant Piles |
| MAJOR WORKS | SI | Site Preparation |
| MAJOR WORKS | SR | Struts + Splays + Waler Removal |
| MAJOR WORKS | SS | Structural Steelwork |
| MAJOR WORKS | ST | Struts + Splays + Waler Installation |
| MAJOR WORKS | TD | Tunnelling - Boring |
| MAJOR WORKS | TS | Tunnel Lining |
| MAJOR WORKS | UD | Utility Diversions |
| MAJOR WORKS | WP | Waterproofing |
| PHASE | CN | Construction |
| PHASE | DS | Design |
| PHASE | GN | General |
| PHASE | IN | Installation |
| PHASE | MF | Procurement/Manufacturing/Fabrication |
| PHASE | ST | Site Testing and Commissioning |
| STAGE | ZA | Zone A |
| STAGE | ZB | Zone B |
| STAGE | ZC1 | Zone C1 |
| STAGE | ZC2 | Zone C2 |
| STAGE | ZD | Zone D |
| STAGE | ZE | Zone E |
| STAGE | ZF1-2 | Zone F1 & F2 |
| STAGE | ZF3 | Zone F3 |
| STAGE | ZG | Zone G |
| STAGE | ZH | Zone H |
| STAGE | ZJ | Zone J |
| STAGE | ZK | Zone K |
| STAGE | ZL | Zone L |
| STAGE | ZP | Zone P |
| SUB AREA | GENL | General |
| SUB-LOCATION DETAILS | GEN | GENERAL |
| SUB-LOCATION DETAILS | TD0 | Traffic Diversion Stage 0 |
| SUB-LOCATION DETAILS | TD1 | Traffic Diversion Stage 1 |
| SUB-LOCATION DETAILS | TD2 | Traffic Diversion Stage 2 |
| SUB-LOCATION DETAILS | TD3A | Traffic Diversion Stage 3A |
| SUB-LOCATION DETAILS | TD3B | Traffic Diversion Stage 3B |
| SUB-LOCATION DETAILS | TD4 | Traffic DIversion Stage 4 |
| SUB-LOCATION DETAILS | TD5 | Traffic Diversion Stage 5 |
| SUB-LOCATION DETAILS | TD6 | Traffic Diversion Stage 6 |
| SUB-LOCATION DETAILS | TD7 | Traffic DIversion Stage 7 |
| SUB-LOCATION DETAILS | TD8 | Traffic Diversion Stage 8 |
| SUB-PHASE | ARH | Building and Architectural Works |
| SUB-PHASE | ASM | Assembly |
| SUB-PHASE | ENA | Enabling include Traffic and Utilities Diversion & Preparation |
| SUB-PHASE | ERS | Earth Retaining System |
| SUB-PHASE | EXC | Excavation |
| SUB-PHASE | FAB | Fabrication |
| SUB-PHASE | FND | Final Design |
| SUB-PHASE | GDW | Ground Level Works |
| SUB-PHASE | GEN | General |
| SUB-PHASE | MFG | Manufacturing |
| SUB-PHASE | PCM | Procurement |
| SUB-PHASE | PFD | Pre-Final Design |
| SUB-PHASE | PLD | Preliminary Design |
| SUB-PHASE | RCW | Concreting Works |
